# Dynaslope2018

How a schedule from ProjectLibre changed from version to version. A marks actual dates.

## Version 1 (saved 2018-01-05)

Note of the change: upload project plan document (*.pod)

| ID | WBS | Task | Duration | Start | Finish | Predecessors | Total float | Constraint |
| --- | --- | --- | --- | --- | --- | --- | --- | --- |
| 1 | 1 | **Landslide risk information** | 112d? | 2018-03-15 | 2018-08-28 |  |  |  |
| 2 | 1.1 | **methods report (Hazards)** | 49d? | 2018-06-19 | 2018-08-28 |  |  |  |
| 3 |  | MoMs | 1d? | 2018-08-28 | 2018-08-28 |  | 13500d | as late as possible |
| 4 |  | study surficial displacement behaviour | 1d? | 2018-08-28 | 2018-08-28 |  | 13500d | as late as possible |
| 5 | 1.1.3 | **slope stability models (FEM)** | 49d | 2018-06-19 | 2018-08-28 |  |  |  |
| 6 |  | review related literature | 10d | 2018-06-19 | 2018-07-02 |  | 8700d | as late as possible |
| 7 |  | develop prototype | 5d | 2018-07-03 | 2018-07-09 | 6 |  | as late as possible |
| 8 |  | test model with monitoring data | 20d | 2018-07-10 | 2018-08-06 | 7 |  | as late as possible |
| 9 |  | field data gathering | 15d | 2018-07-17 | 2018-08-06 | 7 | 500d | as late as possible |
| 10 |  | evaluate model (report as PI of slope stab model) | 4d | 2018-08-07 | 2018-08-10 | 8, 9 |  | as late as possible |
| 11 |  | write report | 5d | 2018-08-13 | 2018-08-17 | 10 |  | as late as possible |
| 12 |  | develop training materials | 3d | 2018-08-20 | 2018-08-23 | 11 |  | as late as possible |
| 13 |  | conduct training | 2d | 2018-08-24 | 2018-08-28 | 12 |  | as late as possible |
| 14 | 1.1.4 | **slope stability models (LEM1)** | 28d | 2018-07-18 | 2018-08-28 |  |  |  |
| 15 |  | review related literature | 5d | 2018-07-18 | 2018-07-24 |  | 10800d | as late as possible |
| 16 |  | develop prototype | 5d | 2018-07-25 | 2018-07-31 | 15 |  | as late as possible |
| 17 |  | test model with monitoring data | 5d | 2018-08-01 | 2018-08-07 | 16, 208 |  | as late as possible |
| 18 |  | field data gathering | 15d | 2018-08-06 | 2018-08-28 | 16 | 300d | as late as possible |
| 19 |  | evaluate model (report as PI of slope stab model) | 3d | 2018-08-08 | 2018-08-10 | 17 |  | as late as possible |
| 20 |  | write report | 5d | 2018-08-13 | 2018-08-17 | 19 |  | as late as possible |
| 21 |  | develop training materials | 3d | 2018-08-20 | 2018-08-23 | 20 |  | as late as possible |
| 22 |  | conduct training | 2d | 2018-08-24 | 2018-08-28 | 21 |  | as late as possible |
| 23 | 1.1.5 | **slope stability models (LEM2)** | 28d | 2018-07-18 | 2018-08-28 |  |  |  |
| 24 |  | review related literature | 5d | 2018-07-18 | 2018-07-24 |  | 10800d | as late as possible |
| 25 |  | develop prototype | 5d | 2018-07-25 | 2018-07-31 | 24 |  | as late as possible |
| 26 |  | test model with monitoring data | 5d | 2018-08-01 | 2018-08-07 | 25, 208 |  | as late as possible |
| 27 |  | field data gathering | 15d | 2018-08-06 | 2018-08-28 | 25 | 300d | as late as possible |
| 28 |  | evaluate model (report as PI of slope stab model) | 3d | 2018-08-08 | 2018-08-10 | 26 |  | as late as possible |
| 29 |  | write report | 5d | 2018-08-13 | 2018-08-17 | 28 |  | as late as possible |
| 30 |  | develop training materials | 3d | 2018-08-20 | 2018-08-23 | 29 |  | as late as possible |
| 31 |  | conduct training | 2d | 2018-08-24 | 2018-08-28 | 30 |  | as late as possible |
| 32 | 1.1.6 | **runout model 1** | 38d | 2018-07-04 | 2018-08-28 |  |  |  |
| 33 |  | review related literature | 10d | 2018-07-04 | 2018-07-17 |  | 9800d | as late as possible |
| 34 |  | develop prototype | 10d | 2018-07-18 | 2018-07-31 | 33 |  | as late as possible |
| 35 |  | test model with monitoring data | 5d | 2018-08-01 | 2018-08-07 | 34, 208 |  | as late as possible |
| 36 |  | evaluate model (report as PI of runout model) | 3d | 2018-08-08 | 2018-08-10 | 35 |  | as late as possible |
| 37 |  | write report | 5d | 2018-08-13 | 2018-08-17 | 36 |  | as late as possible |
| 38 |  | develop training materials | 3d | 2018-08-20 | 2018-08-23 | 37 |  | as late as possible |
| 39 |  | conduct training | 2d | 2018-08-24 | 2018-08-28 | 38 |  | as late as possible |
| 40 | 1.1.7 | **runout model 2** | 33d | 2018-07-11 | 2018-08-28 |  |  |  |
| 41 |  | review related literature | 5d | 2018-07-11 | 2018-07-17 |  | 10300d | as late as possible |
| 42 |  | develop prototype | 10d | 2018-07-18 | 2018-07-31 | 41 |  | as late as possible |
| 43 |  | test model with monitoring data | 5d | 2018-08-01 | 2018-08-07 | 42, 208 |  | as late as possible |
| 44 |  | evaluate model (report as PI of runout model) | 3d | 2018-08-08 | 2018-08-10 | 43 |  | as late as possible |
| 45 |  | write report | 5d | 2018-08-13 | 2018-08-17 | 44 |  | as late as possible |
| 46 |  | develop training materials | 3d | 2018-08-20 | 2018-08-23 | 45 |  | as late as possible |
| 47 |  | conduct training | 2d | 2018-08-24 | 2018-08-28 | 46 |  | as late as possible |
| 48 | 1.1.8 | **threshold model 1** | 42d | 2018-06-28 | 2018-08-28 |  |  |  |
| 49 |  | review related literature | 5d | 2018-06-28 | 2018-07-04 |  | 9400d | as late as possible |
| 50 |  | develop prototype | 20d | 2018-07-05 | 2018-08-01 | 49 |  | as late as possible |
| 51 |  | implement model alongside operations | 10d | 2018-08-02 | 2018-08-15 | 50, 208 |  | as late as possible |
| 52 |  | evaluate model (report as PI of threshold model) | 1d | 2018-08-16 | 2018-08-16 | 51, 96 |  | as late as possible |
| 53 |  | write report | 4d | 2018-08-17 | 2018-08-23 | 52 |  | as late as possible |
| 54 |  | develop training materials | 1d | 2018-08-24 | 2018-08-24 | 53 |  | as late as possible |
| 55 |  | conduct training | 1d | 2018-08-28 | 2018-08-28 | 54 |  | as late as possible |
| 56 | 1.1.9 | **threshold model 2** | 42d | 2018-06-28 | 2018-08-28 |  |  |  |
| 57 |  | review related literature | 5d | 2018-06-28 | 2018-07-04 |  | 9400d | as late as possible |
| 58 |  | develop prototype | 20d | 2018-07-05 | 2018-08-01 | 57 |  | as late as possible |
| 59 |  | implement model alongside operations | 10d | 2018-08-02 | 2018-08-15 | 58, 208 |  | as late as possible |
| 60 |  | evaluate model (report as PI of threshold model) | 1d | 2018-08-16 | 2018-08-16 | 59, 96 |  | as late as possible |
| 61 |  | write report | 4d | 2018-08-17 | 2018-08-23 | 60 |  | as late as possible |
| 62 |  | develop training materials | 1d | 2018-08-24 | 2018-08-24 | 61 |  | as late as possible |
| 63 |  | conduct training | 1d | 2018-08-28 | 2018-08-28 | 62 |  | as late as possible |
| 64 | 1.1.10 | **threshold model 3** | 42d | 2018-06-28 | 2018-08-28 |  |  |  |
| 65 |  | review related literature | 5d | 2018-06-28 | 2018-07-04 |  | 9400d | as late as possible |
| 66 |  | develop prototype | 20d | 2018-07-05 | 2018-08-01 | 65 |  | as late as possible |
| 67 |  | implement model alongside operations | 10d | 2018-08-02 | 2018-08-15 | 66, 208 |  | as late as possible |
| 68 |  | evaluate model (report as PI of threshold model) | 1d | 2018-08-16 | 2018-08-16 | 67, 96 |  | as late as possible |
| 69 |  | write report | 4d | 2018-08-17 | 2018-08-23 | 68 |  | as late as possible |
| 70 |  | develop training materials | 1d | 2018-08-24 | 2018-08-24 | 69 |  | as late as possible |

| ID | WBS | Task | Duration | Start | Finish | Predecessors | Total float | Constraint |
| --- | --- | --- | --- | --- | --- | --- | --- | --- |
| 71 |  | conduct training | 1d | 2018-08-28 | 2018-08-28 | 70 |  | as late as possible |
| 72 | 1.1.11 | **threshold model 4** | 42d | 2018-06-28 | 2018-08-28 |  |  |  |
| 73 |  | review related literature | 5d | 2018-06-28 | 2018-07-04 |  | 9400d | as late as possible |
| 74 |  | develop prototype | 20d | 2018-07-05 | 2018-08-01 | 73 |  | as late as possible |
| 75 |  | implement model alongside operations | 10d | 2018-08-02 | 2018-08-15 | 208, 74 |  | as late as possible |
| 76 |  | evaluate model (report as PI of threshold model) | 1d | 2018-08-16 | 2018-08-16 | 96, 75 |  | as late as possible |
| 77 |  | write report | 4d | 2018-08-17 | 2018-08-23 | 76 |  | as late as possible |
| 78 |  | develop training materials | 1d | 2018-08-24 | 2018-08-24 | 77 |  | as late as possible |
| 79 |  | conduct training | 1d | 2018-08-28 | 2018-08-28 | 78 |  | as late as possible |
| 80 | 1.1.12 | **threshold model 5** | 42d | 2018-06-28 | 2018-08-28 |  |  |  |
| 81 |  | review related literature | 5d | 2018-06-28 | 2018-07-04 |  | 9400d | as late as possible |
| 82 |  | develop prototype | 20d | 2018-07-05 | 2018-08-01 | 81 |  | as late as possible |
| 83 |  | implement model alongside operations | 10d | 2018-08-02 | 2018-08-15 | 82, 208 |  | as late as possible |
| 84 |  | evaluate model (report as PI of threshold model) | 1d | 2018-08-16 | 2018-08-16 | 83, 96 |  | as late as possible |
| 85 |  | write report | 4d | 2018-08-17 | 2018-08-23 | 84 |  | as late as possible |
| 86 |  | develop training materials | 1d | 2018-08-24 | 2018-08-24 | 85 |  | as late as possible |
| 87 |  | conduct training | 1d | 2018-08-28 | 2018-08-28 | 86 |  | as late as possible |
| 88 | 1.1.13 | **threshold model 6** | 42d | 2018-06-28 | 2018-08-28 |  |  |  |
| 89 |  | review related literature | 5d | 2018-06-28 | 2018-07-04 |  | 9400d | as late as possible |
| 90 |  | develop prototype | 20d | 2018-07-05 | 2018-08-01 | 89 |  | as late as possible |
| 91 |  | implement model alongside operations | 10d | 2018-08-02 | 2018-08-15 | 90, 208 |  | as late as possible |
| 92 |  | evaluate model (report as PI of threshold model) | 1d | 2018-08-16 | 2018-08-16 | 91, 96 |  | as late as possible |
| 93 |  | write report | 4d | 2018-08-17 | 2018-08-23 | 92 |  | as late as possible |
| 94 |  | develop training materials | 1d | 2018-08-24 | 2018-08-24 | 93 |  | as late as possible |
| 95 |  | conduct training | 1d | 2018-08-28 | 2018-08-28 | 94 |  | as late as possible |
| 96 |  | develop threshold performance index | 20d | 2018-07-19 | 2018-08-15 |  | 10900d | as late as possible |
| 97 | 1.2 | **methods report (C&V)** | 65d | 2018-05-25 | 2018-08-28 |  |  |  |
| 98 | 1.2.1 | **method 1** | 65d | 2018-05-25 | 2018-08-28 |  |  |  |
| 99 |  | evaluate C&V frameworks (explore REDAS as one of the frameworks/models) | 20d | 2018-05-25 | 2018-06-22 |  | 7100d | as late as possible |
| 100 |  | development of C&V assessment modules | 20d | 2018-06-25 | 2018-07-20 | 99 |  | as late as possible |
| 101 |  | recommend C&V info system | 5d | 2018-08-20 | 2018-08-28 | 100 | 2000d | as late as possible |
| 102 |  | design database (linking to EWSL data storage and management)) | 5d | 2018-08-16 | 2018-08-23 | 99 | 3800d | as late as possible |
| 103 |  | write report | 2d | 2018-08-24 | 2018-08-28 | 102 |  | as late as possible |
| 104 |  | develop training materials | 20d | 2018-07-23 | 2018-08-17 | 100 |  | as late as possible |
| 105 |  | conduct training | 5d | 2018-08-20 | 2018-08-28 | 104 |  | as late as possible |
| 106 | 1.2.2 | **method 2** | 65d | 2018-05-25 | 2018-08-28 |  |  |  |
| 107 |  | evaluate C&V frameworks (explore REDAS as one of the frameworks/models) | 20d | 2018-05-25 | 2018-06-22 |  | 7100d | as late as possible |
| 108 |  | development of C&V assessment modules | 20d | 2018-06-25 | 2018-07-20 | 107 |  | as late as possible |
| 109 |  | recommend C&V info system | 5d | 2018-08-20 | 2018-08-28 | 108 | 2000d | as late as possible |
| 110 |  | design database (linking to EWSL data storage and management)) | 5d | 2018-08-16 | 2018-08-23 | 107 | 3800d | as late as possible |
| 111 |  | write report | 2d | 2018-08-24 | 2018-08-28 | 110 |  | as late as possible |
| 112 |  | develop training materials | 20d | 2018-07-23 | 2018-08-17 | 108 |  | as late as possible |
| 113 |  | conduct training | 5d | 2018-08-20 | 2018-08-28 | 112 |  | as late as possible |
| 114 | 1.3 | **methods report (Risk)** | 112d | 2018-03-15 | 2018-08-28 |  |  |  |
| 115 |  | evaluate frameworks for risk | 20d | 2018-03-15 | 2018-04-16 |  | 2400d | as late as possible |
| 116 |  | develop methods | 20d | 2018-04-17 | 2018-05-15 | 115 |  | as late as possible |
| 117 |  | write report | 2d | 2018-05-16 | 2018-05-17 | 116 |  | as late as possible |
| 118 |  | develop training materials | 10d | 2018-05-18 | 2018-05-31 | 117 |  | as late as possible |
| 119 |  | conduct training (NC 3) | 60d | 2018-06-01 | 2018-08-28 | 118 |  | as late as possible |
| 120 | 1.4 | **per site landslide risk reports (focus sites)** | 55d? | 2018-06-08 | 2018-08-28 |  |  |  |
| 121 |  | integration of hazard, capacity, and vulnerability information | 15d | 2018-08-06 | 2018-08-28 | 116, 130, 134 |  | as late as possible |
| 122 | 1.4.2 | **per site hazard reports (all sites)** | 34d? | 2018-06-19 | 2018-08-03 |  |  |  |
| 123 |  | conduct fieldwork (resurvey) | 30d | 2018-06-19 | 2018-07-30 |  | 8700d | as late as possible |
| 124 |  | consolidate field notes | 1d? | 2018-07-31 | 2018-07-31 | 123 |  | as late as possible |
| 125 |  | review and identify active sites | 1d? | 2018-07-30 | 2018-07-30 |  | 11600d | as late as possible |
| 126 |  | conduct quarterly survey (RTS/RTK/remap) | 1d? | 2018-07-31 | 2018-07-31 | 125 |  | as late as possible |
| 127 |  | analyze monitoring data (requires access to database) | 1d? | 2018-08-01 | 2018-08-01 | 124, 126 |  | as late as possible |
| 128 |  | update volume, depth, extent (using current models) | 1d? | 2018-08-02 | 2018-08-02 | 127 |  | as late as possible |
| 129 |  | update thresholds with monitoring data and performance index | 1d? | 2018-08-02 | 2018-08-02 |  | 11900d | as late as possible |
| 130 |  | update per site hazard reports (updated maps as PI) | 1d? | 2018-08-03 | 2018-08-03 | 129, 128 |  | as late as possible |
| 131 | 1.4.3 | **per site capacity and vulnerability reports (2 focus sites, Mindanao)** | 40d | 2018-06-08 | 2018-08-03 |  |  |  |
| 132 |  | conduct data gathering | 15d | 2018-06-08 | 2018-06-29 |  | 8100d | as late as possible |
| 133 |  | analyze data | 20d | 2018-07-02 | 2018-07-27 | 132 |  | as late as possible |
| 134 |  | update per site capacity and vulnerability reports | 5d | 2018-07-30 | 2018-08-03 | 133 |  | as late as possible |
| 135 | 1.5 | **"Alert protocol" -- essentually how risk knowledge informs early warning practice** | 42d | 2018-06-28 | 2018-08-28 |  |  |  |
| 136 |  | review of related literature | 20d | 2018-06-28 | 2018-07-25 |  | 9400d | as late as possible |
| 137 |  | review and evaluate current alert protocol | 20d | 2018-07-26 | 2018-08-23 | 136 |  | as late as possible |
| 138 |  | recomend alert protocol | 2d | 2018-08-24 | 2018-08-28 | 137 |  | as late as possible |
| 139 | 2 | **Early warning system for landslides** | 136d? | 2018-02-08 | 2018-08-28 |  |  |  |
| 140 | 2.1 | **Data gathering system** | 136d? | 2018-02-08 | 2018-08-28 |  |  |  |

| ID | WBS | Task | Duration | Start | Finish | Predecessors | Total float | Constraint |
| --- | --- | --- | --- | --- | --- | --- | --- | --- |
| 141 | 2.1.1 | **community reported data** | 1d? | 2018-08-28 | 2018-08-28 |  |  |  |
| 142 |  | improve means of gathering surficial data (including transmission) | 1d | 2018-08-28 | 2018-08-28 |  | 13500d | as late as possible |
| 143 |  | improve means of rainfall validation | 1d? | 2018-08-28 | 2018-08-28 |  | 13500d | as late as possible |
| 144 | 2.1.2 | **tilt** | 136d? | 2018-02-08 | 2018-08-28 |  |  |  |
| 145 |  | characterize tilt sensor(angle range and accuracy of v3 tilt sensor) | 10d | 2018-02-08 | 2018-02-22 |  | 12600d |  |
| 146 |  | develop tilt sensor feature 1(improve angle range, accuracy,packaging,coms) | 20d | 2018-02-08 | 2018-03-08 |  | 11600d |  |
| 147 |  | develop tilt sensor feature 2(improve angle range, accuracy,packaging,coms) | 20d | 2018-02-08 | 2018-03-08 |  | 5600d |  |
| 148 |  | prepare manufacturing documents (project to phivolcs --admin heavy task ito) | 20d | 2018-03-09 | 2018-04-10 | 147 | 5600d |  |
| 149 |  | manufacturing(posting until Notice to Proceed is awarded --admin heavy task ito) | 40d | 2018-04-11 | 2018-06-06 | 148 | 5600d |  |
| 150 | 2.1.2.6 | **batch 1 (procurement to samle boards)** | 56d | 2018-02-08 | 2018-05-03 |  | 8000d |  |
| 151 |  | manufacturing | 40d | 2018-02-08 | 2018-04-10 |  |  |  |
| 152 |  | charsense-devfilt-impfilt | 13d | 2018-04-11 | 2018-04-27 | 151 | 8000d |  |
| 153 |  | borehole drilling | 7d | 2018-02-08 | 2018-02-19 |  | 12600d |  |
| 154 |  | deployment of tilt sensors | 3d | 2018-04-30 | 2018-05-03 | 152, 153 | 8000d |  |
| 155 | 2.1.2.7 | **batch 2 (first batch of mass produced units)** | 96d | 2018-02-08 | 2018-06-29 |  | 4000d |  |
| 156 |  | manufacturing | 40d | 2018-04-11 | 2018-06-06 | 151 |  |  |
| 157 |  | charsense-devfilt-impfilt | 13d | 2018-06-07 | 2018-06-26 | 156 | 4000d |  |
| 158 |  | borehole drilling | 7d | 2018-02-08 | 2018-02-19 |  | 12600d |  |
| 159 |  | deployment of tilt sensors | 3d | 2018-06-27 | 2018-06-29 | 157, 158 | 4000d |  |
| 160 | 2.1.2.8 | **batch 3 (last batch of mass produced units + repairs)** | 136d? | 2018-02-08 | 2018-08-28 |  |  |  |
| 161 |  | manufacturing | 40d | 2018-06-07 | 2018-08-02 | 156 |  |  |
| 162 |  | charsense-devfilt-impfilt | 13d? | 2018-08-03 | 2018-08-22 | 161 |  |  |
| 163 |  | borehole drilling | 7d | 2018-02-08 | 2018-02-19 |  | 12600d |  |
| 164 |  | deployment of tilt sensors | 3d | 2018-08-23 | 2018-08-28 | 162, 163 |  |  |
| 166 | 2.1.3 | **soms** | 136d? | 2018-02-08 | 2018-08-28 |  |  |  |
| 167 |  | soms characterization 1 (gravimetric site-specific) | 20d | 2018-02-08 | 2018-03-08 |  | 11600d |  |
| 168 |  | soms characterization 2 (borehole infiltration versus non-borehole infiltration) | 10d | 2018-02-08 | 2018-02-22 |  | 12600d |  |
| 169 |  | soms characterization 3 (visual water infiltration e.g. rainfall) | 5d | 2018-02-08 | 2018-02-14 |  | 13100d |  |
| 170 |  | improve soms probe and its orientation | 20d | 2018-02-08 | 2018-03-08 |  | 11600d |  |
| 171 |  | improve soms feature (accuracy, packaging, coms) | 20d | 2018-02-08 | 2018-03-08 |  | 11600d |  |
| 172 |  | develop improve soms prototype | 10d | 2018-02-08 | 2018-02-22 |  | 12600d |  |
| 173 |  | deploy new soms | 5d | 2018-02-08 | 2018-02-14 |  | 13100d |  |
| 174 |  | develop filter | 8d | 2018-02-08 | 2018-02-20 |  | 12800d |  |
| 175 |  | implement filter | 5d | 2018-02-08 | 2018-02-14 |  | 13100d |  |
| 176 |  | char-dev-dep | 1d? | 2018-08-28 | 2018-08-28 |  | 13500d | as late as possible |
| 177 |  | develop filter | 1d? | 2018-08-28 | 2018-08-28 |  | 13500d | as late as possible |
| 178 |  | implement filter | 1d? | 2018-08-28 | 2018-08-28 |  | 13500d | as late as possible |
| 179 | 2.1.4 | **uts-ext** | 1d? | 2018-08-28 | 2018-08-28 |  |  |  |
| 180 |  | char-dev-dep | 1d? | 2018-08-28 | 2018-08-28 |  | 13500d | as late as possible |
| 181 |  | develop filter | 1d? | 2018-08-28 | 2018-08-28 |  | 13500d | as late as possible |
| 182 |  | implement filter | 1d? | 2018-08-28 | 2018-08-28 |  | 13500d | as late as possible |
| 183 | 2.1.5 | **lidar-ext** | 1d? | 2018-08-28 | 2018-08-28 |  |  |  |
| 184 |  | char-dev-dep | 1d? | 2018-08-28 | 2018-08-28 |  | 13500d | as late as possible |
| 185 |  | develop filter | 1d? | 2018-08-28 | 2018-08-28 |  | 13500d | as late as possible |
| 186 |  | implement filter | 1d? | 2018-08-28 | 2018-08-28 |  | 13500d | as late as possible |
| 187 | 2.1.6 | **rain gauge** | 1d? | 2018-08-28 | 2018-08-28 |  |  |  |
| 188 |  | char-dev-dep | 1d? | 2018-08-28 | 2018-08-28 |  | 13500d | as late as possible |
| 189 |  | develop filter | 1d? | 2018-08-28 | 2018-08-28 |  | 13500d | as late as possible |
| 190 |  | implement filter | 1d? | 2018-08-28 | 2018-08-28 |  | 13500d | as late as possible |
| 191 | 2.1.7 | **piezometer** | 1d? | 2018-08-28 | 2018-08-28 |  |  |  |
| 192 |  | char-dev-dep | 1d? | 2018-08-28 | 2018-08-28 |  | 13500d | as late as possible |
| 193 |  | develop filter | 1d? | 2018-08-28 | 2018-08-28 |  | 13500d | as late as possible |
| 194 |  | implement filter | 1d? | 2018-08-28 | 2018-08-28 |  | 13500d | as late as possible |
| 195 | 2.1.8 | **gateway datalogger** | 1d? | 2018-08-24 | 2018-08-24 |  |  |  |
| 196 |  | char-dev-dep | 1d? | 2018-08-24 | 2018-08-24 |  | 13400d | as late as possible |
| 197 | 2.1.9 | **router datalogger** | 1d? | 2018-08-28 | 2018-08-28 |  |  |  |
| 198 |  | char-dev-dep | 1d? | 2018-08-28 | 2018-08-28 |  | 13500d | as late as possible |
| 199 | 2.1.10 | **stand alone datalogger** | 1d? | 2018-08-24 | 2018-08-24 |  |  |  |
| 200 |  | char-dev-dep | 1d? | 2018-08-24 | 2018-08-24 |  | 13400d | as late as possible |
| 201 |  | recommend performance metrics | 1d? | 2018-08-28 | 2018-08-28 |  | 13500d | as late as possible |
| 202 | 2.2 | **SMS parsing system for new data structures** | 1d? | 2018-08-28 | 2018-08-28 |  |  |  |
| 203 |  | develop sms parsing system | 1d? | 2018-08-28 | 2018-08-28 | 196, 200 |  | as late as possible |
| 204 | 2.3 | **Data storage and management system** | 19d? | 2018-07-31 | 2018-08-28 |  |  |  |
| 205 |  | refactoring | 1d? | 2018-08-28 | 2018-08-28 |  | 13500d | as late as possible |
| 206 |  | develop automated backup | 1d? | 2018-08-28 | 2018-08-28 |  | 13500d | as late as possible |
| 207 |  | recommend performance metrics | 1d? | 2018-08-28 | 2018-08-28 |  | 13500d | as late as possible |
| 208 |  | develop data access for risk assessment | 1d? | 2018-07-31 | 2018-07-31 |  | 11700d | as late as possible |
| 209 | 2.4 | **Data analysis system** | 4d? | 2018-08-22 | 2018-08-28 |  |  |  |
| 210 | 2.4.1 | **threshold scripts** | 1d? | 2018-08-28 | 2018-08-28 |  |  |  |
| 211 |  | implement thresholds | 1d? | 2018-08-28 | 2018-08-28 |  | 13500d | as late as possible |

| ID | WBS | Task | Duration | Start | Finish | Predecessors | Total float | Constraint |
| --- | --- | --- | --- | --- | --- | --- | --- | --- |
| 212 | 2.4.2 | **visualization scripts** | 1d? | 2018-08-28 | 2018-08-28 |  |  |  |
| 213 |  | research data visualization concepts (inc. hazard concepts) | 1d? | 2018-08-28 | 2018-08-28 |  | 13500d | as late as possible |
| 214 |  | improvement of webcharts | 1d? | 2018-08-28 | 2018-08-28 |  | 13500d | as late as possible |
| 215 |  | improvement of webchart generation | 1d? | 2018-08-28 | 2018-08-28 |  | 13500d | as late as possible |
| 216 |  | recommend performance metrics (in relation to automation) | 1d? | 2018-08-22 | 2018-08-22 |  | 13200d | as late as possible |
| 217 |  | draft process profile (recomm to automation integration) | 1d? | 2018-08-23 | 2018-08-23 |  | 13300d | as late as possible |
| 218 | 2.5 | **Dissemination system** | 4d? | 2018-08-22 | 2018-08-28 |  |  |  |
| 219 | 2.5.1 | **alert generation module** | 4d? | 2018-08-22 | 2018-08-28 |  |  |  |
| 220 |  | create modularized infrastructure for different operational triggers | 1d? | 2018-08-28 | 2018-08-28 |  | 13500d | as late as possible |
| 221 |  | create "special cases" tables (e.g., Puguis) | 1d? | 2018-08-24 | 2018-08-24 |  | 13400d | as late as possible |
| 222 |  | implement alert protocol (trigger to alert) revisions | 1d? | 2018-08-28 | 2018-08-28 | 221 |  | as late as possible |
| 223 |  | recommend performance metrics (in relation to automation) | 1d? | 2018-08-22 | 2018-08-22 |  | 13200d | as late as possible |
| 224 |  | draft process profile (recomm to automation integration) | 1d? | 2018-08-23 | 2018-08-23 |  | 13300d | as late as possible |
| 225 | 2.5.2 | **GSM module server** | 4d? | 2018-08-22 | 2018-08-28 |  |  |  |
| 226 |  | improve GSM module server | 1d? | 2018-08-28 | 2018-08-28 |  | 13500d | as late as possible |
| 227 |  | recommend performance metrics (in relation to automation) | 1d? | 2018-08-22 | 2018-08-22 |  | 13200d | as late as possible |
| 228 |  | draft process profile (recomm to automation integration) | 1d? | 2018-08-23 | 2018-08-23 |  | 13300d | as late as possible |
| 229 | 2.5.3 | **chatterbox** | 4d? | 2018-08-22 | 2018-08-28 |  |  |  |
| 230 |  | revise scripts for SMS generation and sending (automation?) | 1d? | 2018-08-28 | 2018-08-28 |  | 13500d | as late as possible |
| 231 |  | implement feature requests | 1d? | 2018-08-28 | 2018-08-28 |  | 13500d | as late as possible |
| 232 |  | improve performance | 1d? | 2018-08-28 | 2018-08-28 |  | 13500d | as late as possible |
| 233 |  | recommend performance metrics (in relation to automation) | 1d? | 2018-08-22 | 2018-08-22 |  | 13200d | as late as possible |
| 234 |  | draft process profile (recomm to automation integration) | 1d? | 2018-08-23 | 2018-08-23 |  | 13300d | as late as possible |
| 235 | 2.5.4 | **webcall** | 4d? | 2018-08-22 | 2018-08-28 |  |  |  |
| 236 |  | acquire, implement hardware | 1d? | 2018-08-28 | 2018-08-28 |  | 13500d | as late as possible |
| 237 |  | develop/integrate software | 1d? | 2018-08-28 | 2018-08-28 |  | 13500d | as late as possible |
| 238 |  | recommend performance metrics (in relation to automation) | 1d? | 2018-08-22 | 2018-08-22 |  | 13200d | as late as possible |
| 239 |  | draft process profile (recomm to automation integration) | 1d? | 2018-08-23 | 2018-08-23 |  | 13300d | as late as possible |
| 240 | 2.5.5 | **bulletin generator** | 4d? | 2018-08-22 | 2018-08-28 |  |  |  |
| 241 |  | revise scripts for bulletin generation and sending (automation?) | 1d? | 2018-08-28 | 2018-08-28 |  | 13500d | as late as possible |
| 242 |  | improve performance | 1d? | 2018-08-28 | 2018-08-28 |  | 13500d | as late as possible |
| 243 |  | recommend performance metrics (in relation to automation) | 1d? | 2018-08-22 | 2018-08-22 |  | 13200d | as late as possible |
| 244 |  | draft process profile (recomm to automation integration) | 1d? | 2018-08-23 | 2018-08-23 |  | 13300d | as late as possible |
| 245 | 2.6 | **Local Info system (ISD)** | 1d? | 2018-08-28 | 2018-08-28 |  |  |  |
| 246 |  | consolidate recommendations into ict specifications | 1d? | 2018-08-28 | 2018-08-28 |  | 13500d | as late as possible |
| 247 |  | use case testing | 1d? | 2018-08-28 | 2018-08-28 |  | 13500d | as late as possible |
| 248 |  | develop local codes updating system | 1d? | 2018-08-28 | 2018-08-28 |  | 13500d | as late as possible |
| 249 |  | port ews-l modules | 1d? | 2018-08-28 | 2018-08-28 |  | 13500d | as late as possible |
| 250 | 2.7 | **Automation integration system** | 2d? | 2018-08-24 | 2018-08-28 |  |  |  |
| 251 |  | automate recommended processes | 1d? | 2018-08-24 | 2018-08-24 | 217, 224, 228, 234, 239, 244 |  | as late as possible |
| 252 |  | evaluate automation performance | 1d? | 2018-08-28 | 2018-08-28 | 251, 255 |  | as late as possible |
| 253 | 2.8 | **Performance monitoring system of central system** | 2d? | 2018-08-23 | 2018-08-24 |  |  |  |
| 254 |  | consolidate recommendations for performance metrics | 1d? | 2018-08-23 | 2018-08-23 | 216, 223, 227, 233, 238, 243 |  | as late as possible |
| 255 |  | develop performance monitoring system | 1d? | 2018-08-24 | 2018-08-24 | 254 |  | as late as possible |
| 256 | 2.9 | **Organized Local Early Warning Committee (LEWC)** | 1d? | 2018-08-28 | 2018-08-28 |  |  |  |
| 257 | 2.9.1 | **LEWC org structure and mission/vision (47 sites)** | 1d? | 2018-08-28 | 2018-08-28 |  |  |  |
| 258 |  | prepare modules | 1d? | 2018-08-28 | 2018-08-28 |  | 13500d | as late as possible |
| 259 |  | conduct training/ gather data | 1d? | 2018-08-28 | 2018-08-28 |  | 13500d | as late as possible |
| 260 | 2.9.2 | **Guidelines for community organizing (2 sites)** | 1d? | 2018-08-28 | 2018-08-28 |  |  |  |
| 261 |  | develop methods for community organizing | 1d? | 2018-08-28 | 2018-08-28 |  | 13500d | as late as possible |
| 262 |  | gather data (fieldwork) | 1d? | 2018-08-28 | 2018-08-28 |  | 13500d | as late as possible |
| 263 |  | recommend activities for community organizing | 1d? | 2018-08-28 | 2018-08-28 |  | 13500d | as late as possible |
| 264 | 2.9.3 | **develop guidelines for institutionalization of LEWC (2 sites)** | 1d? | 2018-08-28 | 2018-08-28 |  |  |  |
| 265 |  | develop methods for crafing guidelines | 1d? | 2018-08-28 | 2018-08-28 |  | 13500d | as late as possible |
| 266 |  | gather data (fieldwork) | 1d? | 2018-08-28 | 2018-08-28 |  | 13500d | as late as possible |
| 267 |  | develop guidelines for institutionalization of LEWC | 1d? | 2018-08-28 | 2018-08-28 |  | 13500d | as late as possible |
| 268 | 2.10 | **Guidelines for developing contingency plans for DSL (barangay level)** | 3d? | 2018-08-23 | 2018-08-28 |  |  |  |
| 269 |  | review literature on contingency plans | 1d? | 2018-08-23 | 2018-08-23 |  | 13300d | as late as possible |
| 270 |  | draft guidelines for contingency plans | 1d? | 2018-08-24 | 2018-08-24 | 269 |  | as late as possible |
| 271 |  | approve guidelines for contingency plans | 1d? | 2018-08-28 | 2018-08-28 | 270 |  | as late as possible |
| 272 | 2.11 | **Operations manual** | 1d? | 2018-08-28 | 2018-08-28 |  |  |  |
| 273 |  | update EWS operations manual based on protocol (to MEAL) | 1d? | 2018-08-28 | 2018-08-28 |  | 13500d | as late as possible |
| 275 | 3 | **Early warning information** | 2d? | 2018-08-24 | 2018-08-28 |  |  |  |
| 276 |  | generate, review, and release EWI | 1d? | 2018-08-28 | 2018-08-28 |  | 13500d | as late as possible |
| 277 | 3.2 | **EWI support** | 2d? | 2018-08-24 | 2018-08-28 |  |  |  |
| 278 | 3.2.1 | **operational systems** | 1d? | 2018-08-28 | 2018-08-28 |  |  |  |
| 279 | 3.2.1.1 | **sensors and dataloggers** | 1d? | 2018-08-28 | 2018-08-28 |  |  |  |
| 280 |  | replace defective sensors and loggers | 1d? | 2018-08-28 | 2018-08-28 |  | 13500d | as late as possible |
| 281 |  | monitor sensor and datalogger health status | 1d? | 2018-08-28 | 2018-08-28 |  | 13500d | as late as possible |
| 282 |  | track maintenance activities | 1d? | 2018-08-28 | 2018-08-28 |  | 13500d | as late as possible |

| ID | WBS | Task | Duration | Start | Finish | Predecessors | Total float | Constraint |
| --- | --- | --- | --- | --- | --- | --- | --- | --- |
| 283 |  | manage inventory | 1d? | 2018-08-28 | 2018-08-28 |  | 13500d | as late as possible |
| 284 |  | track PLAA events | 1d? | 2018-08-28 | 2018-08-28 |  | 13500d | as late as possible |
| 285 |  | track sensor events | 1d? | 2018-08-28 | 2018-08-28 |  | 13500d | as late as possible |
| 286 |  | field-based maintenance | 1d? | 2018-08-28 | 2018-08-28 |  | 13500d | as late as possible |
| 287 | 3.2.1.2 | **central server (software)** | 1d? | 2018-08-28 | 2018-08-28 |  |  |  |
| 288 |  | maintain data gathering system | 1d? | 2018-08-28 | 2018-08-28 |  | 13500d | as late as possible |
| 289 |  | maintain data storage and management system | 1d? | 2018-08-28 | 2018-08-28 |  | 13500d | as late as possible |
| 290 |  | maintain data analysis system | 1d? | 2018-08-28 | 2018-08-28 |  | 13500d | as late as possible |
| 291 |  | maintain info dissemination system | 1d? | 2018-08-28 | 2018-08-28 |  | 13500d | as late as possible |
| 292 |  | train staff for debugging | 0.5d? | 2018-08-28 | 2018-08-28 |  | 13550d | as late as possible |
| 293 |  | produce code and documentation standards | 1d? | 2018-08-28 | 2018-08-28 |  | 13500d | as late as possible |
| 294 | 3.2.2 | **updated database** | 1d? | 2018-08-28 | 2018-08-28 |  |  |  |
| 295 |  | maintain tables | 1d? | 2018-08-28 | 2018-08-28 |  | 13500d | as late as possible |
| 296 | 3.2.3 | **parsed SMS** | 1d? | 2018-08-28 | 2018-08-28 |  |  |  |
| 297 |  | maintain SMS parsing | 1d? | 2018-08-28 | 2018-08-28 |  | 13500d | as late as possible |
| 298 | 3.2.4 | **capable personnel for monitoring and early warning** | 2d? | 2018-08-24 | 2018-08-28 |  |  |  |
| 299 | 3.2.4.1 | **develop training materials** | 1d? | 2018-08-24 | 2018-08-24 |  |  |  |
| 300 |  | hazard monitoring | 1d? | 2018-08-24 | 2018-08-24 |  | 13400d | as late as possible |
| 301 |  | analysis and validation | 1d? | 2018-08-24 | 2018-08-24 |  | 13400d | as late as possible |
| 302 |  | sensor maintenance | 1d? | 2018-08-24 | 2018-08-24 |  | 13400d | as late as possible |
| 303 |  | communications protocol | 1d? | 2018-08-24 | 2018-08-24 |  | 13400d | as late as possible |
| 304 | 3.2.4.2 | **conduct EWS protocol trainings (internal)** | 1d? | 2018-08-28 | 2018-08-28 | 299 |  |  |
| 305 |  | hazard monitoring | 1d? | 2018-08-28 | 2018-08-28 |  |  | as late as possible |
| 306 |  | analysis and validation | 1d? | 2018-08-28 | 2018-08-28 |  |  | as late as possible |
| 307 |  | sensor maintenance | 1d? | 2018-08-28 | 2018-08-28 |  |  | as late as possible |
| 308 |  | communications protocol | 1d? | 2018-08-28 | 2018-08-28 |  |  | as late as possible |
| 309 | 3.2.4.3 | **conduct EWS protocol trainings (external)** | 1d? | 2018-08-28 | 2018-08-28 | 299 |  |  |
| 310 |  | hazard monitoring | 1d? | 2018-08-28 | 2018-08-28 |  |  | as late as possible |
| 311 |  | analysis and validation | 1d? | 2018-08-28 | 2018-08-28 |  |  | as late as possible |
| 312 |  | sensor maintenance | 1d? | 2018-08-28 | 2018-08-28 |  |  | as late as possible |
| 313 |  | communications protocol | 1d? | 2018-08-28 | 2018-08-28 |  |  | as late as possible |
| 314 | 4 | **Strategic communications** | 3d? | 2018-08-23 | 2018-08-28 |  |  |  |
| 315 |  | research stakeholder info needs | 1d? | 2018-08-23 | 2018-08-23 |  | 13300d | as late as possible |
| 316 |  | research policy process | 1d? | 2018-08-28 | 2018-08-28 |  | 13500d | as late as possible |
| 317 |  | develop strategic comm plan | 1d? | 2018-08-24 | 2018-08-24 | 315 |  | as late as possible |
| 318 | 4.4 | **develop communication materials** | 1d? | 2018-08-28 | 2018-08-28 | 317 |  |  |
| 319 | 4.4.1 | **website** | 1d? | 2018-08-28 | 2018-08-28 |  |  |  |
| 320 |  | develop website content | 1d? | 2018-08-28 | 2018-08-28 |  |  | as late as possible |
| 321 |  | design website | 1d? | 2018-08-28 | 2018-08-28 |  |  | as late as possible |
| 322 |  | develop content management system | 1d? | 2018-08-28 | 2018-08-28 |  |  | as late as possible |
| 323 |  | develop non-website communications | 1d? | 2018-08-28 | 2018-08-28 |  | 13500d | as late as possible |
| 324 | 5 | **MEAL system** | 136d? | 2018-02-08 | 2018-08-28 |  |  |  |
| 325 |  | develop MEAL framework | 2d | 2018-08-15 | 2018-08-16 |  | 12800d | as late as possible |
| 326 |  | develop MEAL plan | 3d | 2018-08-17 | 2018-08-22 | 325 |  | as late as possible |
| 327 | 5.3 | **monitoring mechanisms** | 136d? | 2018-02-08 | 2018-08-28 |  |  |  |
| 328 | 5.3.1 | **standard documentation and storage** | 2d? | 2018-08-24 | 2018-08-28 |  |  |  |
| 329 |  | design documentation templates | 1d? | 2018-08-24 | 2018-08-24 | 326 | 100d | as late as possible |
| 330 |  | design repository system | 1d? | 2018-08-28 | 2018-08-28 | 329 |  | as late as possible |
| 331 | 5.3.2 | **PLAA** | 1d | 2018-08-28 | 2018-08-28 |  |  |  |
| 332 |  | review current PLAA vis-a-vis MEAL plan | 0.5d | 2018-08-28 | 2018-08-28 | 326 | 200d | as late as possible |
| 333 |  | revise PLAA guidelines | 0.5d | 2018-08-28 | 2018-08-28 | 332 |  | as late as possible |
| 334 | 5.3.3 | **EWS-QA** | 136d | 2018-02-08 | 2018-08-28 |  |  |  |
| 335 |  | review current EWS-QA vis-a-vis MEAL plan | 0.5d | 2018-08-28 | 2018-08-28 | 326 | 200d | as late as possible |
| 336 |  | revise EWS-QA guidelines | 0.5d | 2018-08-28 | 2018-08-28 | 335 |  | as late as possible |
| 337 |  | revise tools for data gathering | 3d | 2018-02-08 | 2018-02-12 |  | 13300d |  |
| 338 | 5.3.4 | **outcome-impact** | 1d | 2018-08-28 | 2018-08-28 |  |  |  |
| 339 |  | review outcome-impact vis-a-vis MEAL plan | 0.5d | 2018-08-28 | 2018-08-28 | 326 | 200d | as late as possible |
| 340 |  | revise outcome-impact | 0.5d | 2018-08-28 | 2018-08-28 | 339 |  | as late as possible |
| 341 | 5.3.5 | **administrative process** | 1d | 2018-08-28 | 2018-08-28 |  |  |  |
| 342 |  | review admin process trackers vis-a-vis MEAL plan | 0.5d | 2018-08-28 | 2018-08-28 | 326 | 200d | as late as possible |
| 343 |  | revise admin process trackers | 0.5d | 2018-08-28 | 2018-08-28 | 342 |  | as late as possible |
| 344 | 5.3.6 | **project output** | 3d | 2018-08-23 | 2018-08-28 |  |  |  |
| 345 |  | develop team output tracker | 1d | 2018-08-23 | 2018-08-23 | 326 |  | as late as possible |
| 346 |  | develop individual output tracker | 1d | 2018-08-24 | 2018-08-24 | 326, 345 |  | as late as possible |
| 347 |  | develop individual capacity tracker | 1d | 2018-08-28 | 2018-08-28 | 326, 346 |  | as late as possible |
| 348 | 5.3.7 | **stakeholder concerns** | 0.5d | 2018-08-28 | 2018-08-28 |  |  |  |
| 349 |  | develop stakeholder concerns tracker | 0.5d | 2018-08-28 | 2018-08-28 | 326 | 250d | as late as possible |
| 352 | 5.4 | **data gathering** | 136d? | 2018-02-08 | 2018-08-28 |  |  |  |
| 353 |  | EWS-QA | 1d? | 2018-08-28 | 2018-08-28 |  | 13500d | as late as possible |
| 354 |  | PLAA (per site) | 35d | 2018-07-09 | 2018-08-28 |  | 10100d | as late as possible |

| ID | WBS | Task | Duration | Start | Finish | Predecessors | Total float | Constraint |
| --- | --- | --- | --- | --- | --- | --- | --- | --- |
| 355 |  | outcome-iimpact | 1d? | 2018-08-28 | 2018-08-28 |  | 13500d | as late as possible |
| 356 |  | project output | 1d? | 2018-08-28 | 2018-08-28 |  | 13500d | as late as possible |
| 357 |  | stakeholder concerns | 1d? | 2018-08-28 | 2018-08-28 |  | 13500d | as late as possible |
| 358 |  | admin process | 1d? | 2018-02-08 | 2018-02-08 |  | 13500d |  |
| 359 |  | evaluate | 1d? | 2018-08-28 | 2018-08-28 |  | 13500d | as late as possible |
| 360 |  | provide recomms | 1d? | 2018-08-28 | 2018-08-28 |  | 13500d | as late as possible |
| 363 | 5.7 | **MEAL implem** | 3d? | 2018-08-23 | 2018-08-28 |  |  |  |
| 364 | 5.7.1 | **EWS-QA** | 3d? | 2018-08-23 | 2018-08-28 | 326 |  |  |
| 365 | 5.7.1.1 | **activity series 1** | 3d? | 2018-08-23 | 2018-08-28 |  |  |  |
| 366 |  | gather data | 1d? | 2018-08-23 | 2018-08-23 |  |  |  |
| 367 |  | analyze, evaluate data | 1d? | 2018-08-24 | 2018-08-24 | 366 |  |  |
| 368 |  | provide recommendations | 1d? | 2018-08-28 | 2018-08-28 | 367 |  |  |
| 369 | 5.7.2 | **PLAA** | 1d? | 2018-08-23 | 2018-08-23 | 326 | 200d |  |
| 370 | 5.7.2.1 | **activity series 1** | 1d? | 2018-08-23 | 2018-08-23 |  | 200d |  |
| 371 |  | gather data | 1d? | 2018-08-23 | 2018-08-23 |  | 200d |  |
| 372 |  | analyze, evaluate data | 1d? | 2018-08-23 | 2018-08-23 |  | 200d |  |
| 373 |  | provide recommendations | 1d? | 2018-08-23 | 2018-08-23 |  | 200d |  |
| 374 | 5.7.3 | **outcome-impact** | 1d? | 2018-08-23 | 2018-08-23 | 326 | 200d |  |
| 375 | 5.7.3.1 | **activity series 1** | 1d? | 2018-08-23 | 2018-08-23 |  | 200d |  |
| 376 |  | gather data | 1d? | 2018-08-23 | 2018-08-23 |  | 200d |  |
| 377 |  | analyze, evaluate data | 1d? | 2018-08-23 | 2018-08-23 |  | 200d |  |
| 378 |  | provide recommendations | 1d? | 2018-08-23 | 2018-08-23 |  | 200d |  |
| 379 | 5.7.4 | **project output** | 1d? | 2018-08-23 | 2018-08-23 | 326 | 200d |  |
| 380 | 5.7.4.1 | **activity series 1** | 1d? | 2018-08-23 | 2018-08-23 |  | 200d |  |
| 381 |  | gather data | 1d? | 2018-08-23 | 2018-08-23 |  | 200d |  |
| 382 |  | analyze, evaluate data | 1d? | 2018-08-23 | 2018-08-23 |  | 200d |  |
| 383 |  | provide recommendations | 1d? | 2018-08-23 | 2018-08-23 |  | 200d |  |
| 384 | 5.7.5 | **stakeholder concerns** | 1d? | 2018-08-23 | 2018-08-23 | 326 | 200d |  |
| 385 | 5.7.5.1 | **activity series 1** | 1d? | 2018-08-23 | 2018-08-23 |  | 200d |  |
| 386 |  | gather data | 1d? | 2018-08-23 | 2018-08-23 |  | 200d |  |
| 387 |  | analyze, evaluate data | 1d? | 2018-08-23 | 2018-08-23 |  | 200d |  |
| 388 |  | provide recommendations | 1d? | 2018-08-23 | 2018-08-23 |  | 200d |  |
| 389 | 5.7.6 | **admin process** | 1d? | 2018-08-23 | 2018-08-23 | 326 | 200d |  |
| 390 | 5.7.6.1 | **activity series 1** | 1d? | 2018-08-23 | 2018-08-23 |  | 200d |  |
| 391 |  | gather data | 1d? | 2018-08-23 | 2018-08-23 |  | 200d |  |
| 392 |  | analyze, evaluate data | 1d? | 2018-08-23 | 2018-08-23 |  | 200d |  |
| 393 |  | provide recommendations | 1d? | 2018-08-23 | 2018-08-23 |  | 200d |  |

## Version 2 (saved 2018-01-05)

Note of the change: update EWSL-DataGatheringSystem

Last finish 2018-08-28 → 2018-09-03 (+6d).

Added:

| ID | Task | Duration | Start | Finish | Predecessors | Constraint | Resources |
| --- | --- | --- | --- | --- | --- | --- | --- |
| 142 | provide initial performance metrics based on 2017 experience | 1d | 2018-02-08 | 2018-02-08 |  |  |  |
| 144 | develop on the ground validation of rainfall via sensors | 40d | 2018-07-06 | 2018-09-03 |  | as late as possible |  |
| 146 | provide initial performance metrics based on 2017 experience | 1d | 2018-02-08 | 2018-02-08 |  |  |  |
| 174 | provide initial performance metrics based on 2017 experience | 1d | 2018-02-08 | 2018-02-08 |  |  |  |
| 179 | provide initial performance metrics based on 2017 experience | 1d | 2018-02-08 | 2018-02-08 |  |  |  |
| 184 | provide initial performance metrics based on 2017 experience | 1d | 2018-02-08 | 2018-02-08 |  |  |  |
| 189 | provide initial performance metrics based on 2017 experience | 1d | 2018-02-08 | 2018-02-08 |  |  |  |
| 192 | provide initial performance metrics based on 2017 experience | 1d | 2018-02-08 | 2018-02-08 |  |  |  |
| 195 | provide initial performance metrics based on 2017 experience | 1d | 2018-02-08 | 2018-02-08 |  |  |  |
| 196 | develop sensor datalogger feature 1( rtc, low-power, xbee interface, bluetooth interface) | 10d | 2018-02-08 | 2018-02-22 |  |  |  |
| 197 | develop sensor datalogger feature 2( rtc, low-power, xbee interface, bluetooth interface) | 10d | 2018-02-08 | 2018-02-22 |  |  |  |
| 198 | prepare manufacturing documents | 20d | 2018-02-08 | 2018-03-08 |  |  |  |
| 199 | **manufacturing monitoring** | 48d | 2018-02-08 | 2018-04-20 |  |  |  |
| 201 | manufacture | 40d | 2018-02-13 | 2018-04-13 | 200 |  |  |
| 202 | troubleshoot manufacturing issues | 40d | 2018-02-13 | 2018-04-13 | 200 |  |  |
| 203 | evaluate sample boards | 5d | 2018-04-16 | 2018-04-20 | 201 |  |  |
| 210 | develop new structure for storage and management | 20d | 2018-06-26 | 2018-07-23 |  | as late as possible | sys ad 1 |
| 260 | develop performance targets | 1d? | 2018-02-08 | 2018-02-08 |  |  |  |
| 262 | establish baseline | 1d? | 2018-02-08 | 2018-02-08 |  |  |  |

Removed: 143 improve means of rainfall validation; 149 manufacturing(posting until Notice to Proceed is awarded --admin heavy task ito); 150 batch 1 (procurement to samle boards); 158 borehole drilling; 160 batch 3 (last batch of mass produced units + repairs); 161 manufacturing; 163 borehole drilling; 171 improve soms feature (accuracy, packaging, coms); 172 develop improve soms prototype; 193 develop filter; 207 recommend performance metrics

Changed:

| ID | Task | Start | Finish | Total float |
| --- | --- | --- | --- | --- |
| 1 | **Landslide risk information** | 2018-03-15 → 2018-03-21 (+6d) | 2018-08-28 → 2018-09-03 (+6d) |  |
| 2 | **methods report (Hazards)** | 2018-06-19 → 2018-06-25 (+6d) | 2018-08-28 → 2018-09-03 (+6d) |  |
| 3 | MoMs | 2018-08-28 → 2018-09-03 (+6d) | 2018-08-28 → 2018-09-03 (+6d) | 13500d → 13900d |
| 4 | study surficial displacement behaviour | 2018-08-28 → 2018-09-03 (+6d) | 2018-08-28 → 2018-09-03 (+6d) | 13500d → 13900d |
| 5 | **slope stability models (FEM)** | 2018-06-19 → 2018-06-25 (+6d) | 2018-08-28 → 2018-09-03 (+6d) |  |
| 6 | review related literature | 2018-06-19 → 2018-06-25 (+6d) | 2018-07-02 → 2018-07-06 (+4d) | 8700d → 9100d |
| 7 | develop prototype | 2018-07-03 → 2018-07-09 (+6d) | 2018-07-09 → 2018-07-13 (+4d) |  |
| 8 | test model with monitoring data | 2018-07-10 → 2018-07-16 (+6d) | 2018-08-06 → 2018-08-10 (+4d) |  |
| 9 | field data gathering | 2018-07-17 → 2018-07-23 (+6d) | 2018-08-06 → 2018-08-10 (+4d) |  |
| 10 | evaluate model (report as PI of slope stab model) | 2018-08-07 → 2018-08-13 (+6d) | 2018-08-10 → 2018-08-16 (+6d) |  |
| 11 | write report | 2018-08-13 → 2018-08-17 (+4d) | 2018-08-17 → 2018-08-24 (+7d) |  |
| 12 | develop training materials | 2018-08-20 → 2018-08-28 (+8d) | 2018-08-23 → 2018-08-30 (+7d) |  |
| 13 | conduct training | 2018-08-24 → 2018-08-31 (+7d) | 2018-08-28 → 2018-09-03 (+6d) |  |
| 14 | **slope stability models (LEM1)** | 2018-07-18 → 2018-07-24 (+6d) | 2018-08-28 → 2018-09-03 (+6d) |  |
| 15 | review related literature | 2018-07-18 → 2018-07-24 (+6d) | 2018-07-24 → 2018-07-30 (+6d) | 10800d → 11200d |
| 16 | develop prototype | 2018-07-25 → 2018-07-31 (+6d) | 2018-07-31 → 2018-08-06 (+6d) |  |
| 17 | test model with monitoring data | 2018-08-01 → 2018-08-07 (+6d) | 2018-08-07 → 2018-08-13 (+6d) |  |
| 18 | field data gathering | 2018-08-06 → 2018-08-10 (+4d) | 2018-08-28 → 2018-09-03 (+6d) |  |
| 19 | evaluate model (report as PI of slope stab model) | 2018-08-08 → 2018-08-14 (+6d) | 2018-08-10 → 2018-08-16 (+6d) |  |
| 20 | write report | 2018-08-13 → 2018-08-17 (+4d) | 2018-08-17 → 2018-08-24 (+7d) |  |
| 21 | develop training materials | 2018-08-20 → 2018-08-28 (+8d) | 2018-08-23 → 2018-08-30 (+7d) |  |
| 22 | conduct training | 2018-08-24 → 2018-08-31 (+7d) | 2018-08-28 → 2018-09-03 (+6d) |  |
| 23 | **slope stability models (LEM2)** | 2018-07-18 → 2018-07-24 (+6d) | 2018-08-28 → 2018-09-03 (+6d) |  |
| 24 | review related literature | 2018-07-18 → 2018-07-24 (+6d) | 2018-07-24 → 2018-07-30 (+6d) | 10800d → 11200d |
| 25 | develop prototype | 2018-07-25 → 2018-07-31 (+6d) | 2018-07-31 → 2018-08-06 (+6d) |  |
| 26 | test model with monitoring data | 2018-08-01 → 2018-08-07 (+6d) | 2018-08-07 → 2018-08-13 (+6d) |  |
| 27 | field data gathering | 2018-08-06 → 2018-08-10 (+4d) | 2018-08-28 → 2018-09-03 (+6d) |  |
| 28 | evaluate model (report as PI of slope stab model) | 2018-08-08 → 2018-08-14 (+6d) | 2018-08-10 → 2018-08-16 (+6d) |  |
| 29 | write report | 2018-08-13 → 2018-08-17 (+4d) | 2018-08-17 → 2018-08-24 (+7d) |  |
| 30 | develop training materials | 2018-08-20 → 2018-08-28 (+8d) | 2018-08-23 → 2018-08-30 (+7d) |  |
| 31 | conduct training | 2018-08-24 → 2018-08-31 (+7d) | 2018-08-28 → 2018-09-03 (+6d) |  |
| 32 | **runout model 1** | 2018-07-04 → 2018-07-10 (+6d) | 2018-08-28 → 2018-09-03 (+6d) |  |
| 33 | review related literature | 2018-07-04 → 2018-07-10 (+6d) | 2018-07-17 → 2018-07-23 (+6d) | 9800d → 10200d |
| 34 | develop prototype | 2018-07-18 → 2018-07-24 (+6d) | 2018-07-31 → 2018-08-06 (+6d) |  |
| 35 | test model with monitoring data | 2018-08-01 → 2018-08-07 (+6d) | 2018-08-07 → 2018-08-13 (+6d) |  |
| 36 | evaluate model (report as PI of runout model) | 2018-08-08 → 2018-08-14 (+6d) | 2018-08-10 → 2018-08-16 (+6d) |  |
| 37 | write report | 2018-08-13 → 2018-08-17 (+4d) | 2018-08-17 → 2018-08-24 (+7d) |  |
| 38 | develop training materials | 2018-08-20 → 2018-08-28 (+8d) | 2018-08-23 → 2018-08-30 (+7d) |  |
| 39 | conduct training | 2018-08-24 → 2018-08-31 (+7d) | 2018-08-28 → 2018-09-03 (+6d) |  |
| 40 | **runout model 2** | 2018-07-11 → 2018-07-17 (+6d) | 2018-08-28 → 2018-09-03 (+6d) |  |
| 41 | review related literature | 2018-07-11 → 2018-07-17 (+6d) | 2018-07-17 → 2018-07-23 (+6d) | 10300d → 10700d |
| 42 | develop prototype | 2018-07-18 → 2018-07-24 (+6d) | 2018-07-31 → 2018-08-06 (+6d) |  |
| 43 | test model with monitoring data | 2018-08-01 → 2018-08-07 (+6d) | 2018-08-07 → 2018-08-13 (+6d) |  |
| 44 | evaluate model (report as PI of runout model) | 2018-08-08 → 2018-08-14 (+6d) | 2018-08-10 → 2018-08-16 (+6d) |  |
| 45 | write report | 2018-08-13 → 2018-08-17 (+4d) | 2018-08-17 → 2018-08-24 (+7d) |  |
| 46 | develop training materials | 2018-08-20 → 2018-08-28 (+8d) | 2018-08-23 → 2018-08-30 (+7d) |  |
| 47 | conduct training | 2018-08-24 → 2018-08-31 (+7d) | 2018-08-28 → 2018-09-03 (+6d) |  |
| 48 | **threshold model 1** | 2018-06-28 → 2018-07-04 (+6d) | 2018-08-28 → 2018-09-03 (+6d) |  |
| 49 | review related literature | 2018-06-28 → 2018-07-04 (+6d) | 2018-07-04 → 2018-07-10 (+6d) | 9400d → 9800d |
| 50 | develop prototype | 2018-07-05 → 2018-07-11 (+6d) | 2018-08-01 → 2018-08-07 (+6d) |  |
| 51 | implement model alongside operations | 2018-08-02 → 2018-08-08 (+6d) | 2018-08-15 → 2018-08-22 (+7d) |  |
| 52 | evaluate model (report as PI of threshold model) | 2018-08-16 → 2018-08-23 (+7d) | 2018-08-16 → 2018-08-23 (+7d) |  |
| 53 | write report | 2018-08-17 → 2018-08-24 (+7d) | 2018-08-23 → 2018-08-30 (+7d) |  |
| 54 | develop training materials | 2018-08-24 → 2018-08-31 (+7d) | 2018-08-24 → 2018-08-31 (+7d) |  |
| 55 | conduct training | 2018-08-28 → 2018-09-03 (+6d) | 2018-08-28 → 2018-09-03 (+6d) |  |
| 56 | **threshold model 2** | 2018-06-28 → 2018-07-04 (+6d) | 2018-08-28 → 2018-09-03 (+6d) |  |
| 57 | review related literature | 2018-06-28 → 2018-07-04 (+6d) | 2018-07-04 → 2018-07-10 (+6d) | 9400d → 9800d |
| 58 | develop prototype | 2018-07-05 → 2018-07-11 (+6d) | 2018-08-01 → 2018-08-07 (+6d) |  |
| 59 | implement model alongside operations | 2018-08-02 → 2018-08-08 (+6d) | 2018-08-15 → 2018-08-22 (+7d) |  |
| 60 | evaluate model (report as PI of threshold model) | 2018-08-16 → 2018-08-23 (+7d) | 2018-08-16 → 2018-08-23 (+7d) |  |
| 61 | write report | 2018-08-17 → 2018-08-24 (+7d) | 2018-08-23 → 2018-08-30 (+7d) |  |
| 62 | develop training materials | 2018-08-24 → 2018-08-31 (+7d) | 2018-08-24 → 2018-08-31 (+7d) |  |
| 63 | conduct training | 2018-08-28 → 2018-09-03 (+6d) | 2018-08-28 → 2018-09-03 (+6d) |  |
| 64 | **threshold model 3** | 2018-06-28 → 2018-07-04 (+6d) | 2018-08-28 → 2018-09-03 (+6d) |  |
| 65 | review related literature | 2018-06-28 → 2018-07-04 (+6d) | 2018-07-04 → 2018-07-10 (+6d) | 9400d → 9800d |
| 66 | develop prototype | 2018-07-05 → 2018-07-11 (+6d) | 2018-08-01 → 2018-08-07 (+6d) |  |
| 67 | implement model alongside operations | 2018-08-02 → 2018-08-08 (+6d) | 2018-08-15 → 2018-08-22 (+7d) |  |
| 68 | evaluate model (report as PI of threshold model) | 2018-08-16 → 2018-08-23 (+7d) | 2018-08-16 → 2018-08-23 (+7d) |  |
| 69 | write report | 2018-08-17 → 2018-08-24 (+7d) | 2018-08-23 → 2018-08-30 (+7d) |  |
| 70 | develop training materials | 2018-08-24 → 2018-08-31 (+7d) | 2018-08-24 → 2018-08-31 (+7d) |  |

| ID | Task | Start | Finish | Duration | Total float |
| --- | --- | --- | --- | --- | --- |
| 71 | conduct training | 2018-08-28 → 2018-09-03 (+6d) | 2018-08-28 → 2018-09-03 (+6d) |  |  |
| 72 | **threshold model 4** | 2018-06-28 → 2018-07-04 (+6d) | 2018-08-28 → 2018-09-03 (+6d) |  |  |
| 73 | review related literature | 2018-06-28 → 2018-07-04 (+6d) | 2018-07-04 → 2018-07-10 (+6d) |  | 9400d → 9800d |
| 74 | develop prototype | 2018-07-05 → 2018-07-11 (+6d) | 2018-08-01 → 2018-08-07 (+6d) |  |  |
| 75 | implement model alongside operations | 2018-08-02 → 2018-08-08 (+6d) | 2018-08-15 → 2018-08-22 (+7d) |  |  |
| 76 | evaluate model (report as PI of threshold model) | 2018-08-16 → 2018-08-23 (+7d) | 2018-08-16 → 2018-08-23 (+7d) |  |  |
| 77 | write report | 2018-08-17 → 2018-08-24 (+7d) | 2018-08-23 → 2018-08-30 (+7d) |  |  |
| 78 | develop training materials | 2018-08-24 → 2018-08-31 (+7d) | 2018-08-24 → 2018-08-31 (+7d) |  |  |
| 79 | conduct training | 2018-08-28 → 2018-09-03 (+6d) | 2018-08-28 → 2018-09-03 (+6d) |  |  |
| 80 | **threshold model 5** | 2018-06-28 → 2018-07-04 (+6d) | 2018-08-28 → 2018-09-03 (+6d) |  |  |
| 81 | review related literature | 2018-06-28 → 2018-07-04 (+6d) | 2018-07-04 → 2018-07-10 (+6d) |  | 9400d → 9800d |
| 82 | develop prototype | 2018-07-05 → 2018-07-11 (+6d) | 2018-08-01 → 2018-08-07 (+6d) |  |  |
| 83 | implement model alongside operations | 2018-08-02 → 2018-08-08 (+6d) | 2018-08-15 → 2018-08-22 (+7d) |  |  |
| 84 | evaluate model (report as PI of threshold model) | 2018-08-16 → 2018-08-23 (+7d) | 2018-08-16 → 2018-08-23 (+7d) |  |  |
| 85 | write report | 2018-08-17 → 2018-08-24 (+7d) | 2018-08-23 → 2018-08-30 (+7d) |  |  |
| 86 | develop training materials | 2018-08-24 → 2018-08-31 (+7d) | 2018-08-24 → 2018-08-31 (+7d) |  |  |
| 87 | conduct training | 2018-08-28 → 2018-09-03 (+6d) | 2018-08-28 → 2018-09-03 (+6d) |  |  |
| 88 | **threshold model 6** | 2018-06-28 → 2018-07-04 (+6d) | 2018-08-28 → 2018-09-03 (+6d) |  |  |
| 89 | review related literature | 2018-06-28 → 2018-07-04 (+6d) | 2018-07-04 → 2018-07-10 (+6d) |  | 9400d → 9800d |
| 90 | develop prototype | 2018-07-05 → 2018-07-11 (+6d) | 2018-08-01 → 2018-08-07 (+6d) |  |  |
| 91 | implement model alongside operations | 2018-08-02 → 2018-08-08 (+6d) | 2018-08-15 → 2018-08-22 (+7d) |  |  |
| 92 | evaluate model (report as PI of threshold model) | 2018-08-16 → 2018-08-23 (+7d) | 2018-08-16 → 2018-08-23 (+7d) |  |  |
| 93 | write report | 2018-08-17 → 2018-08-24 (+7d) | 2018-08-23 → 2018-08-30 (+7d) |  |  |
| 94 | develop training materials | 2018-08-24 → 2018-08-31 (+7d) | 2018-08-24 → 2018-08-31 (+7d) |  |  |
| 95 | conduct training | 2018-08-28 → 2018-09-03 (+6d) | 2018-08-28 → 2018-09-03 (+6d) |  |  |
| 96 | develop threshold performance index | 2018-07-19 → 2018-07-25 (+6d) | 2018-08-15 → 2018-08-22 (+7d) |  | 10900d → 11300d |
| 97 | **methods report (C&V)** | 2018-05-25 → 2018-05-31 (+6d) | 2018-08-28 → 2018-09-03 (+6d) |  |  |
| 98 | **method 1** | 2018-05-25 → 2018-05-31 (+6d) | 2018-08-28 → 2018-09-03 (+6d) |  |  |
| 99 | evaluate C&V frameworks (explore REDAS as one of the frameworks/models) | 2018-05-25 → 2018-05-31 (+6d) | 2018-06-22 → 2018-06-28 (+6d) |  | 7100d → 7500d |
| 100 | development of C&V assessment modules | 2018-06-25 → 2018-06-29 (+4d) | 2018-07-20 → 2018-07-26 (+6d) |  |  |
| 101 | recommend C&V info system | 2018-08-20 → 2018-08-28 (+8d) | 2018-08-28 → 2018-09-03 (+6d) |  |  |
| 102 | design database (linking to EWSL data storage and management)) | 2018-08-16 → 2018-08-23 (+7d) | 2018-08-23 → 2018-08-30 (+7d) |  |  |
| 103 | write report | 2018-08-24 → 2018-08-31 (+7d) | 2018-08-28 → 2018-09-03 (+6d) |  |  |
| 104 | develop training materials | 2018-07-23 → 2018-07-27 (+4d) | 2018-08-17 → 2018-08-24 (+7d) |  |  |
| 105 | conduct training | 2018-08-20 → 2018-08-28 (+8d) | 2018-08-28 → 2018-09-03 (+6d) |  |  |
| 106 | **method 2** | 2018-05-25 → 2018-05-31 (+6d) | 2018-08-28 → 2018-09-03 (+6d) |  |  |
| 107 | evaluate C&V frameworks (explore REDAS as one of the frameworks/models) | 2018-05-25 → 2018-05-31 (+6d) | 2018-06-22 → 2018-06-28 (+6d) |  | 7100d → 7500d |
| 108 | development of C&V assessment modules | 2018-06-25 → 2018-06-29 (+4d) | 2018-07-20 → 2018-07-26 (+6d) |  |  |
| 109 | recommend C&V info system | 2018-08-20 → 2018-08-28 (+8d) | 2018-08-28 → 2018-09-03 (+6d) |  |  |
| 110 | design database (linking to EWSL data storage and management)) | 2018-08-16 → 2018-08-23 (+7d) | 2018-08-23 → 2018-08-30 (+7d) |  |  |
| 111 | write report | 2018-08-24 → 2018-08-31 (+7d) | 2018-08-28 → 2018-09-03 (+6d) |  |  |
| 112 | develop training materials | 2018-07-23 → 2018-07-27 (+4d) | 2018-08-17 → 2018-08-24 (+7d) |  |  |
| 113 | conduct training | 2018-08-20 → 2018-08-28 (+8d) | 2018-08-28 → 2018-09-03 (+6d) |  |  |
| 114 | **methods report (Risk)** | 2018-03-15 → 2018-03-21 (+6d) | 2018-08-28 → 2018-09-03 (+6d) |  |  |
| 115 | evaluate frameworks for risk | 2018-03-15 → 2018-03-21 (+6d) | 2018-04-16 → 2018-04-20 (+4d) |  | 2400d → 2800d |
| 116 | develop methods | 2018-04-17 → 2018-04-23 (+6d) | 2018-05-15 → 2018-05-21 (+6d) |  |  |
| 117 | write report | 2018-05-16 → 2018-05-22 (+6d) | 2018-05-17 → 2018-05-23 (+6d) |  |  |
| 118 | develop training materials | 2018-05-18 → 2018-05-24 (+6d) | 2018-05-31 → 2018-06-06 (+6d) |  |  |
| 119 | conduct training (NC 3) | 2018-06-01 → 2018-06-07 (+6d) | 2018-08-28 → 2018-09-03 (+6d) |  |  |
| 120 | **per site landslide risk reports (focus sites)** | 2018-06-08 → 2018-06-15 (+7d) | 2018-08-28 → 2018-09-03 (+6d) |  |  |
| 121 | integration of hazard, capacity, and vulnerability information | 2018-08-06 → 2018-08-10 (+4d) | 2018-08-28 → 2018-09-03 (+6d) |  |  |
| 122 | **per site hazard reports (all sites)** | 2018-06-19 → 2018-06-25 (+6d) | 2018-08-03 → 2018-08-09 (+6d) |  |  |
| 123 | conduct fieldwork (resurvey) | 2018-06-19 → 2018-06-25 (+6d) | 2018-07-30 → 2018-08-03 (+4d) |  | 8700d → 9100d |
| 124 | consolidate field notes | 2018-07-31 → 2018-08-06 (+6d) | 2018-07-31 → 2018-08-06 (+6d) |  |  |
| 125 | review and identify active sites | 2018-07-30 → 2018-08-03 (+4d) | 2018-07-30 → 2018-08-03 (+4d) |  | 11600d → 12000d |
| 126 | conduct quarterly survey (RTS/RTK/remap) | 2018-07-31 → 2018-08-06 (+6d) | 2018-07-31 → 2018-08-06 (+6d) |  |  |
| 127 | analyze monitoring data (requires access to database) | 2018-08-01 → 2018-08-07 (+6d) | 2018-08-01 → 2018-08-07 (+6d) |  |  |
| 128 | update volume, depth, extent (using current models) | 2018-08-02 → 2018-08-08 (+6d) | 2018-08-02 → 2018-08-08 (+6d) |  |  |
| 129 | update thresholds with monitoring data and performance index | 2018-08-02 → 2018-08-08 (+6d) | 2018-08-02 → 2018-08-08 (+6d) |  | 11900d → 12300d |
| 130 | update per site hazard reports (updated maps as PI) | 2018-08-03 → 2018-08-09 (+6d) | 2018-08-03 → 2018-08-09 (+6d) |  |  |
| 131 | **per site capacity and vulnerability reports (2 focus sites, Mindanao)** | 2018-06-08 → 2018-06-15 (+7d) | 2018-08-03 → 2018-08-09 (+6d) |  |  |
| 132 | conduct data gathering | 2018-06-08 → 2018-06-15 (+7d) | 2018-06-29 → 2018-07-05 (+6d) |  | 8100d → 8500d |
| 133 | analyze data | 2018-07-02 → 2018-07-06 (+4d) | 2018-07-27 → 2018-08-02 (+6d) |  |  |
| 134 | update per site capacity and vulnerability reports | 2018-07-30 → 2018-08-03 (+4d) | 2018-08-03 → 2018-08-09 (+6d) |  |  |
| 135 | **"Alert protocol" -- essentually how risk knowledge informs early warning practice** | 2018-06-28 → 2018-07-04 (+6d) | 2018-08-28 → 2018-09-03 (+6d) |  |  |
| 136 | review of related literature | 2018-06-28 → 2018-07-04 (+6d) | 2018-07-25 → 2018-07-31 (+6d) |  | 9400d → 9800d |
| 137 | review and evaluate current alert protocol | 2018-07-26 → 2018-08-01 (+6d) | 2018-08-23 → 2018-08-30 (+7d) |  |  |
| 138 | recomend alert protocol | 2018-08-24 → 2018-08-31 (+7d) | 2018-08-28 → 2018-09-03 (+6d) |  |  |
| 139 | **Early warning system for landslides** |  | 2018-08-28 → 2018-09-03 (+6d) | 136d? → 140d? |  |
| 140 | **Data gathering system** |  | 2018-08-28 → 2018-09-03 (+6d) | 136d? → 140d |  |

| ID | Task | Start | Finish | Duration | Total float | Predecessors | Other |
| --- | --- | --- | --- | --- | --- | --- | --- |
| 141 | **community reported data** | 2018-08-28 → 2018-02-08 (-201d) | 2018-08-28 → 2018-09-03 (+6d) | 1d? → 140d |  |  |  |
| 143 | improve means of gathering surficial data (including transmission) | 2018-08-28 → 2018-07-06 (-53d) | 2018-08-28 → 2018-09-03 (+6d) | 1d → 40d | 13500d → none | none → 251 |  |
| 145 | **tilt** |  | 2018-08-28 → 2018-09-03 (+6d) | 136d? → 140d |  |  |  |
| 150 | prepare manufacturing documents (project to phivolcs --admin heavy task ito) | 2018-03-09 → 2018-02-08 (-29d) | 2018-04-10 → 2018-03-08 (-33d) |  | 5600d → 12000d | 149 → none |  |
| 151 | **manufacturing monitoring** |  | 2018-04-10 → 2018-09-03 (+146d) | 40d → 140d |  |  | was named manufacturing |
| 152 | develop functionality tests | 2018-04-11 → 2018-02-08 (-62d) | 2018-04-27 → 2018-02-22 (-64d) | 13d → 10d | 8000d → none | 151 → none | was named charsense-devfilt-impfilt |
| 153 | manufacture | 2018-02-08 → 2018-02-23 (+15d) | 2018-02-19 → 2018-08-16 (+178d) | 7d → 120d | 12600d → none | none → 152 | was named borehole drilling |
| 154 | troubleshoot manufacturing issues | 2018-04-30 → 2018-02-23 (-66d) | 2018-05-03 → 2018-08-16 (+105d) | 3d → 120d | 8000d → 1000d | 152, 153 → 152 | was named deployment of tilt sensors |
| 155 | evaluate sample boards | 2018-02-08 → 2018-08-17 (+190d) | 2018-06-29 → 2018-09-03 (+66d) | 96d → 10d | 4000d → none | none → 153 | was named batch 2 (first batch of mass produced units) |
| 156 | develop and implement filters | 2018-04-11 → 2018-02-08 (-62d) | 2018-06-06 → 2018-02-20 (-106d) | 40d → 8d | none → 13200d | 151 → none | was named manufacturing |
| 157 | deployment of new tilt sensors | 2018-06-07 → 2018-02-08 (-119d) | 2018-06-26 → 2018-02-14 (-132d) | 13d → 5d | 4000d → 13500d | 156 → none | was named charsense-devfilt-impfilt |
| 158 | **soms** |  | 2018-08-28 → 2018-05-07 (-113d) | 136d? → 58d | none → 8200d |  |  |
| 159 | provide initial performance metrics based on 2017 experience | 2018-06-27 → 2018-02-08 (-139d) | 2018-06-29 → 2018-02-08 (-141d) | 3d → 1d | 4000d → 13600d | 157, borehole drilling → none | was named deployment of tilt sensors |
| 162 | soms characterization 3 (rainfall-soil moisture correlation with visual water infiltration) | 2018-08-03 → 2018-02-08 (-176d) | 2018-08-22 → 2018-02-14 (-189d) | 13d? → 5d | none → 13500d | manufacturing → none | was named charsense-devfilt-impfilt |
| 164 | develop new soil moisture sensor (improve accuracy, packaging, coms) prototype | 2018-08-23 → 2018-03-09 (-167d) | 2018-08-28 → 2018-04-10 (-140d) | 3d → 20d | none → 8200d | 162, borehole drilling → 163 | was named deployment of tilt sensors |
| 165 | deploy new soms | 2018-02-08 → 2018-04-11 (+62d) | 2018-02-14 → 2018-04-17 (+62d) |  | 13100d → 8200d | none → 164 |  |
| 166 | develop filter | 2018-02-08 → 2018-04-18 (+69d) | 2018-02-20 → 2018-04-27 (+66d) |  | 12800d → 8200d | none → 165 |  |
| 167 | implement filter | 2018-02-08 → 2018-04-30 (+81d) | 2018-02-14 → 2018-05-07 (+82d) |  | 13100d → 8200d | none → 166 |  |
| 168 | **uts-ext** | 2018-08-28 → 2018-02-08 (-201d) | 2018-08-28 → 2018-09-03 (+6d) | 1d? → 140d |  |  |  |
| 169 | provide initial performance metrics based on 2017 experience |  | 2018-02-14 → 2018-02-08 (-6d) | 5d → 1d | 13100d → 13600d |  | was named soms characterization 3 (visual water infiltration e.g. rainfall) |
| 170 | char-dev-dep | 2018-08-28 → 2018-03-09 (-172d) | 2018-08-28 → 2018-07-05 (-54d) | 1d? → 80d | 13500d → 2000d |  | resources emb engr 2 → emb engr 3 |
| 171 | develop filter | 2018-08-28 → 2018-07-06 (-53d) | 2018-08-28 → 2018-08-16 (-12d) | 1d? → 30d | 13500d → none | none → 170 | resources emb engr 2 → emb engr 3 |
| 172 | implement filter | 2018-08-28 → 2018-08-17 (-11d) | 2018-08-28 → 2018-09-03 (+6d) | 1d? → 10d | 13500d → none | none → 171 | resources emb engr 2 → emb engr 3 |
| 173 | **lidar-ext** | 2018-08-28 → 2018-02-08 (-201d) | 2018-08-28 → 2018-09-03 (+6d) | 1d? → 140d |  |  |  |
| 175 | char-dev-dep | 2018-08-28 → 2018-03-09 (-172d) | 2018-08-28 → 2018-07-05 (-54d) | 1d? → 80d | 13500d → 2000d |  |  |
| 176 | develop filter | 2018-08-28 → 2018-07-06 (-53d) | 2018-08-28 → 2018-08-16 (-12d) | 1d? → 30d | 13500d → none | none → 175 |  |
| 177 | implement filter | 2018-08-28 → 2018-08-17 (-11d) | 2018-08-28 → 2018-09-03 (+6d) | 1d? → 10d | 13500d → none | none → 176 |  |
| 178 | **rain gauge** | 2018-08-28 → 2018-02-08 (-201d) | 2018-08-28 → 2018-09-03 (+6d) | 1d? → 140d |  |  |  |
| 180 | char-dev-dep | 2018-08-28 → 2018-06-07 (-82d) | 2018-08-28 → 2018-08-02 (-26d) | 1d? → 40d | 13500d → 8000d |  | resources emb engr 3 → emb engr 5 |
| 181 | develop filter | 2018-08-28 → 2018-08-03 (-25d) | 2018-08-28 → 2018-08-24 (-4d) | 1d? → 15d | 13500d → none | none → 180 | resources emb engr 3 → emb engr 5 |
| 182 | implement filter |  | 2018-08-28 → 2018-09-03 (+6d) | 1d? → 5d | 13500d → none | none → 181 | resources emb engr 3 → emb engr 5 |
| 183 | **piezometer** | 2018-08-28 → 2018-02-08 (-201d) | 2018-08-28 → 2018-09-03 (+6d) | 1d? → 140d |  |  |  |
| 185 | char-dev-dep | 2018-08-28 → 2018-07-06 (-53d) | 2018-08-28 → 2018-08-02 (-26d) | 1d? → 20d | 13500d → 10000d |  | resources emb engr 5 → emb engr 6 |
| 186 | develop filter | 2018-08-28 → 2018-08-03 (-25d) | 2018-08-28 → 2018-08-16 (-12d) | 1d? → 10d | 13500d → none | none → 185 | resources emb engr 5 → emb engr 6 |
| 187 | implement filter | 2018-08-28 → 2018-08-17 (-11d) | 2018-08-28 → 2018-09-03 (+6d) | 1d? → 10d | 13500d → none | none → 186 | resources emb engr 5 → emb engr 6 |
| 188 | **gateway datalogger** | 2018-08-24 → 2018-02-08 (-197d) | 2018-08-24 → 2018-08-02 (-22d) | 1d? → 120d | none → 1700d |  |  |
| 190 | char-dev-dep | 2018-08-28 → 2018-05-10 (-110d) | 2018-08-28 → 2018-08-02 (-26d) | 1d? → 60d | 13500d → 6000d |  | resources emb engr 6 → emb engr 7 |
| 191 | **router datalogger** | 2018-08-28 → 2018-02-08 (-201d) | 2018-08-28 → 2018-09-03 (+6d) | 1d? → 140d |  |  |  |
| 193 | char-dev-dep | 2018-08-24 → 2018-07-20 (-35d) | 2018-08-24 → 2018-09-03 (+10d) | 1d? → 30d | 13400d → 11000d |  |  |
| 194 | **sensor datalogger** | 2018-08-28 → 2018-02-08 (-201d) | 2018-08-28 → 2018-04-20 (-130d) | 1d? → 48d | 13500d → 9200d |  | was named implement filter; constraint as late as possible → none; resources emb engr 6 → none |
| 200 | develop functionality tests | 2018-08-24 → 2018-02-08 (-197d) | 2018-08-24 → 2018-02-12 (-193d) | 1d? → 3d | 13400d → 9200d |  | was named char-dev-dep; constraint as late as possible → none; resources emb engr 7 → none |
| 204 | **stand alone datalogger** | 2018-08-24 → 2018-02-08 (-197d) | 2018-08-24 → 2018-08-02 (-22d) | 1d? → 120d | none → 1700d |  |  |
| 205 | provide initial performance metrics based on 2017 experience | 2018-08-28 → 2018-02-08 (-201d) | 2018-08-28 → 2018-02-08 (-201d) | 1d? → 1d | 13500d → 13600d |  | was named refactoring; constraint as late as possible → none; resources sys ad 1 → none |
| 206 | char-dev-dep | 2018-08-28 → 2018-06-22 (-67d) | 2018-08-28 → 2018-08-02 (-26d) | 1d? → 30d | 13500d → 9000d |  |  |
| 207 | **SMS parsing system for new data structures** | 2018-08-28 → 2018-08-03 (-25d) | 2018-08-28 → 2018-09-03 (+6d) | 1d? → 20d |  |  |  |
| 208 | develop sms parsing system | 2018-08-28 → 2018-08-03 (-25d) | 2018-08-28 → 2018-09-03 (+6d) | 1d? → 20d |  | 193, 200 → 190, 206 |  |
| 209 | **Data storage and management system** | 2018-07-31 → 2018-06-26 (-35d) | 2018-08-28 → 2018-08-29 (+1d) | 19d? → 45d |  |  |  |
| 211 | develop automated backup | 2018-08-28 → 2018-08-07 (-21d) | 2018-08-28 → 2018-08-20 (-8d) | 1d? → 10d | 13500d → 1000d | none → 210 |  |
| 212 | recommend performance metrics | 2018-08-28 → 2018-08-22 (-6d) | 2018-08-28 → 2018-08-29 (+1d) | 1d? → 5d | 13500d → none | none → 211 | resources none → sys ad 1 |
| 213 | develop data access for risk assessment | 2018-07-31 → 2018-07-24 (-7d) | 2018-07-31 → 2018-08-06 (+6d) | 1d? → 10d | 11700d → none | none → 210 | resources sys ad 1 → sys ad 2 |
| 214 | **Data analysis system** | 2018-08-22 → 2018-08-30 (+8d) | 2018-08-28 → 2018-09-03 (+6d) | 4d? → 3d? |  |  |  |
| 215 | **threshold scripts** | 2018-08-28 → 2018-09-03 (+6d) | 2018-08-28 → 2018-09-03 (+6d) |  |  |  |  |
| 216 | implement thresholds | 2018-08-28 → 2018-09-03 (+6d) | 2018-08-28 → 2018-09-03 (+6d) |  | 13500d → 13900d |  |  |
| 217 | **visualization scripts** | 2018-08-28 → 2018-09-03 (+6d) | 2018-08-28 → 2018-09-03 (+6d) |  |  |  |  |
| 218 | research data visualization concepts (inc. hazard concepts) | 2018-08-28 → 2018-09-03 (+6d) | 2018-08-28 → 2018-09-03 (+6d) |  | 13500d → 13900d |  |  |
| 219 | improvement of webcharts | 2018-08-28 → 2018-09-03 (+6d) | 2018-08-28 → 2018-09-03 (+6d) |  | 13500d → 13900d |  |  |
| 220 | improvement of webchart generation | 2018-08-28 → 2018-09-03 (+6d) | 2018-08-28 → 2018-09-03 (+6d) |  | 13500d → 13900d |  |  |
| 221 | recommend performance metrics (in relation to automation) | 2018-08-22 → 2018-09-03 (+12d) | 2018-08-22 → 2018-09-03 (+12d) |  | 13200d → 13900d |  |  |
| 222 | draft process profile (recomm to automation integration) | 2018-08-23 → 2018-08-30 (+7d) | 2018-08-23 → 2018-08-30 (+7d) |  | 13300d → 13700d |  |  |
| 223 | **Dissemination system** | 2018-08-22 → 2018-08-30 (+8d) | 2018-08-28 → 2018-09-03 (+6d) | 4d? → 3d? |  |  |  |
| 224 | **alert generation module** | 2018-08-22 → 2018-08-30 (+8d) | 2018-08-28 → 2018-09-03 (+6d) | 4d? → 3d? |  |  |  |
| 225 | create modularized infrastructure for different operational triggers | 2018-08-28 → 2018-09-03 (+6d) | 2018-08-28 → 2018-09-03 (+6d) |  | 13500d → 13900d |  |  |
| 226 | create "special cases" tables (e.g., Puguis) | 2018-08-24 → 2018-08-31 (+7d) | 2018-08-24 → 2018-08-31 (+7d) |  | 13400d → 13800d |  |  |
| 227 | implement alert protocol (trigger to alert) revisions | 2018-08-28 → 2018-09-03 (+6d) | 2018-08-28 → 2018-09-03 (+6d) |  |  |  |  |
| 228 | recommend performance metrics (in relation to automation) | 2018-08-22 → 2018-09-03 (+12d) | 2018-08-22 → 2018-09-03 (+12d) |  | 13200d → 13900d |  |  |
| 229 | draft process profile (recomm to automation integration) | 2018-08-23 → 2018-08-30 (+7d) | 2018-08-23 → 2018-08-30 (+7d) |  | 13300d → 13700d |  |  |
| 230 | **GSM module server** | 2018-08-22 → 2018-08-30 (+8d) | 2018-08-28 → 2018-09-03 (+6d) | 4d? → 3d? |  |  |  |
| 231 | improve GSM module server | 2018-08-28 → 2018-09-03 (+6d) | 2018-08-28 → 2018-09-03 (+6d) |  | 13500d → 13900d |  |  |
| 232 | recommend performance metrics (in relation to automation) | 2018-08-22 → 2018-09-03 (+12d) | 2018-08-22 → 2018-09-03 (+12d) |  | 13200d → 13900d |  |  |
| 233 | draft process profile (recomm to automation integration) | 2018-08-23 → 2018-08-30 (+7d) | 2018-08-23 → 2018-08-30 (+7d) |  | 13300d → 13700d |  |  |

| ID | Task | Start | Finish | Duration | Total float | Predecessors | Other |
| --- | --- | --- | --- | --- | --- | --- | --- |
| 234 | **chatterbox** | 2018-08-22 → 2018-08-30 (+8d) | 2018-08-28 → 2018-09-03 (+6d) | 4d? → 3d? |  |  |  |
| 235 | revise scripts for SMS generation and sending (automation?) | 2018-08-28 → 2018-09-03 (+6d) | 2018-08-28 → 2018-09-03 (+6d) |  | 13500d → 13900d |  |  |
| 236 | implement feature requests | 2018-08-28 → 2018-09-03 (+6d) | 2018-08-28 → 2018-09-03 (+6d) |  | 13500d → 13900d |  |  |
| 237 | improve performance | 2018-08-28 → 2018-09-03 (+6d) | 2018-08-28 → 2018-09-03 (+6d) |  | 13500d → 13900d |  |  |
| 238 | recommend performance metrics (in relation to automation) | 2018-08-22 → 2018-09-03 (+12d) | 2018-08-22 → 2018-09-03 (+12d) |  | 13200d → 13900d |  | resources web dev 4 → web dev 3 |
| 239 | draft process profile (recomm to automation integration) | 2018-08-23 → 2018-08-30 (+7d) | 2018-08-23 → 2018-08-30 (+7d) |  | 13300d → 13700d |  | resources web dev 4 → web dev 3 |
| 240 | **webcall** | 2018-08-22 → 2018-08-30 (+8d) | 2018-08-28 → 2018-09-03 (+6d) | 4d? → 3d? |  |  |  |
| 241 | acquire, implement hardware | 2018-08-28 → 2018-09-03 (+6d) | 2018-08-28 → 2018-09-03 (+6d) |  | 13500d → 13900d |  |  |
| 242 | develop/integrate software | 2018-08-28 → 2018-09-03 (+6d) | 2018-08-28 → 2018-09-03 (+6d) |  | 13500d → 13900d |  |  |
| 243 | recommend performance metrics (in relation to automation) | 2018-08-22 → 2018-09-03 (+12d) | 2018-08-22 → 2018-09-03 (+12d) |  | 13200d → 13900d |  | resources web dev 5 → web dev 4 |
| 244 | draft process profile (recomm to automation integration) | 2018-08-23 → 2018-08-30 (+7d) | 2018-08-23 → 2018-08-30 (+7d) |  | 13300d → 13700d |  | resources web dev 5 → web dev 4 |
| 245 | **bulletin generator** | 2018-08-22 → 2018-08-30 (+8d) | 2018-08-28 → 2018-09-03 (+6d) | 4d? → 3d? |  |  |  |
| 246 | revise scripts for bulletin generation and sending (automation?) | 2018-08-28 → 2018-09-03 (+6d) | 2018-08-28 → 2018-09-03 (+6d) |  | 13500d → 13900d |  |  |
| 247 | improve performance | 2018-08-28 → 2018-09-03 (+6d) | 2018-08-28 → 2018-09-03 (+6d) |  | 13500d → 13900d |  |  |
| 248 | recommend performance metrics (in relation to automation) | 2018-08-22 → 2018-09-03 (+12d) | 2018-08-22 → 2018-09-03 (+12d) |  | 13200d → 13900d |  | resources web dev 3 → web dev 5 |
| 249 | draft process profile (recomm to automation integration) | 2018-08-23 → 2018-08-30 (+7d) | 2018-08-23 → 2018-08-30 (+7d) |  | 13300d → 13700d |  | resources web dev 3 → web dev 5 |
| 250 | **Local Info system (ISD)** | 2018-08-28 → 2018-07-05 (-54d) | 2018-08-28 → 2018-09-03 (+6d) | 1d? → 41d? |  |  |  |
| 251 | consolidate recommendations into ict specifications | 2018-08-28 → 2018-07-05 (-54d) | 2018-08-28 → 2018-07-05 (-54d) |  | 13500d → 9900d |  |  |
| 252 | use case testing | 2018-08-28 → 2018-09-03 (+6d) | 2018-08-28 → 2018-09-03 (+6d) |  | 13500d → 13900d |  |  |
| 253 | develop local codes updating system | 2018-08-28 → 2018-09-03 (+6d) | 2018-08-28 → 2018-09-03 (+6d) |  | 13500d → 13900d |  |  |
| 254 | port ews-l modules | 2018-08-28 → 2018-09-03 (+6d) | 2018-08-28 → 2018-09-03 (+6d) |  | 13500d → 13900d |  |  |
| 255 | **Automation integration system** | 2018-08-24 → 2018-08-31 (+7d) | 2018-08-28 → 2018-09-03 (+6d) |  |  |  |  |
| 256 | automate recommended processes | 2018-08-24 → 2018-08-31 (+7d) | 2018-08-24 → 2018-08-31 (+7d) |  |  |  |  |
| 257 | evaluate automation performance | 2018-08-28 → 2018-09-03 (+6d) | 2018-08-28 → 2018-09-03 (+6d) |  |  |  |  |
| 258 | **Performance monitoring system of central system** | 2018-08-23 → 2018-02-08 (-196d) | 2018-08-24 → 2018-08-31 (+7d) | 2d? → 139d? | none → 100d |  |  |
| 259 | consolidate recommendations for performance metrics | 2018-08-23 → 2018-08-30 (+7d) | 2018-08-23 → 2018-08-30 (+7d) |  |  | 221, 228, 232, 248, 238, 243 → 142, 146, 159, 169, 174, 179, 184, 189, 192, 195, 205, 212 |  |
| 261 | develop performance monitoring system | 2018-08-24 → 2018-08-31 (+7d) | 2018-08-24 → 2018-08-31 (+7d) |  |  |  |  |
| 263 | **Organized Local Early Warning Committee (LEWC)** | 2018-08-28 → 2018-09-03 (+6d) | 2018-08-28 → 2018-09-03 (+6d) |  |  |  |  |
| 264 | **LEWC org structure and mission/vision (47 sites)** | 2018-08-28 → 2018-09-03 (+6d) | 2018-08-28 → 2018-09-03 (+6d) |  |  |  |  |
| 265 | prepare modules | 2018-08-28 → 2018-09-03 (+6d) | 2018-08-28 → 2018-09-03 (+6d) |  | 13500d → 13900d |  |  |
| 266 | conduct training/ gather data | 2018-08-28 → 2018-09-03 (+6d) | 2018-08-28 → 2018-09-03 (+6d) |  | 13500d → 13900d |  |  |
| 267 | **Guidelines for community organizing (2 sites)** | 2018-08-28 → 2018-09-03 (+6d) | 2018-08-28 → 2018-09-03 (+6d) |  |  |  |  |
| 268 | develop methods for community organizing | 2018-08-28 → 2018-09-03 (+6d) | 2018-08-28 → 2018-09-03 (+6d) |  | 13500d → 13900d |  |  |
| 269 | gather data (fieldwork) | 2018-08-28 → 2018-09-03 (+6d) | 2018-08-28 → 2018-09-03 (+6d) |  | 13500d → 13900d |  |  |
| 270 | recommend activities for community organizing | 2018-08-28 → 2018-09-03 (+6d) | 2018-08-28 → 2018-09-03 (+6d) |  | 13500d → 13900d |  |  |
| 271 | **develop guidelines for institutionalization of LEWC (2 sites)** | 2018-08-28 → 2018-09-03 (+6d) | 2018-08-28 → 2018-09-03 (+6d) |  |  |  |  |
| 272 | develop methods for crafing guidelines | 2018-08-28 → 2018-09-03 (+6d) | 2018-08-28 → 2018-09-03 (+6d) |  | 13500d → 13900d |  |  |
| 273 | gather data (fieldwork) | 2018-08-28 → 2018-09-03 (+6d) | 2018-08-28 → 2018-09-03 (+6d) |  | 13500d → 13900d |  |  |
| 274 | develop guidelines for institutionalization of LEWC | 2018-08-28 → 2018-09-03 (+6d) | 2018-08-28 → 2018-09-03 (+6d) |  | 13500d → 13900d |  |  |
| 275 | **Guidelines for developing contingency plans for DSL (barangay level)** | 2018-08-23 → 2018-08-30 (+7d) | 2018-08-28 → 2018-09-03 (+6d) |  |  |  |  |
| 276 | review literature on contingency plans | 2018-08-23 → 2018-08-30 (+7d) | 2018-08-23 → 2018-08-30 (+7d) |  | 13300d → 13700d |  |  |
| 277 | draft guidelines for contingency plans | 2018-08-24 → 2018-08-31 (+7d) | 2018-08-24 → 2018-08-31 (+7d) |  |  |  |  |
| 278 | approve guidelines for contingency plans | 2018-08-28 → 2018-09-03 (+6d) | 2018-08-28 → 2018-09-03 (+6d) |  |  |  |  |
| 279 | **Operations manual** | 2018-08-28 → 2018-09-03 (+6d) | 2018-08-28 → 2018-09-03 (+6d) |  |  |  |  |
| 280 | update EWS operations manual based on protocol (to MEAL) | 2018-08-28 → 2018-09-03 (+6d) | 2018-08-28 → 2018-09-03 (+6d) |  | 13500d → 13900d |  |  |
| 282 | **Early warning information** | 2018-08-24 → 2018-08-31 (+7d) | 2018-08-28 → 2018-09-03 (+6d) |  |  |  |  |
| 283 | generate, review, and release EWI | 2018-08-28 → 2018-09-03 (+6d) | 2018-08-28 → 2018-09-03 (+6d) |  | 13500d → 13900d |  |  |
| 284 | **EWI support** | 2018-08-24 → 2018-08-31 (+7d) | 2018-08-28 → 2018-09-03 (+6d) |  |  |  |  |
| 285 | **operational systems** | 2018-08-28 → 2018-09-03 (+6d) | 2018-08-28 → 2018-09-03 (+6d) |  |  |  |  |
| 286 | **sensors and dataloggers** | 2018-08-28 → 2018-09-03 (+6d) | 2018-08-28 → 2018-09-03 (+6d) |  |  |  |  |
| 287 | replace defective sensors and loggers | 2018-08-28 → 2018-09-03 (+6d) | 2018-08-28 → 2018-09-03 (+6d) |  | 13500d → 13900d |  |  |
| 288 | monitor sensor and datalogger health status | 2018-08-28 → 2018-09-03 (+6d) | 2018-08-28 → 2018-09-03 (+6d) |  | 13500d → 13900d |  |  |
| 289 | track maintenance activities | 2018-08-28 → 2018-09-03 (+6d) | 2018-08-28 → 2018-09-03 (+6d) |  | 13500d → 13900d |  |  |
| 290 | manage inventory | 2018-08-28 → 2018-09-03 (+6d) | 2018-08-28 → 2018-09-03 (+6d) |  | 13500d → 13900d |  |  |
| 291 | track PLAA events | 2018-08-28 → 2018-09-03 (+6d) | 2018-08-28 → 2018-09-03 (+6d) |  | 13500d → 13900d |  |  |
| 292 | track sensor events | 2018-08-28 → 2018-09-03 (+6d) | 2018-08-28 → 2018-09-03 (+6d) |  | 13500d → 13900d |  |  |
| 293 | field-based maintenance | 2018-08-28 → 2018-09-03 (+6d) | 2018-08-28 → 2018-09-03 (+6d) |  | 13500d → 13900d |  |  |
| 294 | **central server (software)** | 2018-08-28 → 2018-09-03 (+6d) | 2018-08-28 → 2018-09-03 (+6d) |  |  |  |  |
| 295 | maintain data gathering system | 2018-08-28 → 2018-09-03 (+6d) | 2018-08-28 → 2018-09-03 (+6d) |  | 13500d → 13900d |  |  |
| 296 | maintain data storage and management system | 2018-08-28 → 2018-09-03 (+6d) | 2018-08-28 → 2018-09-03 (+6d) |  | 13500d → 13900d |  |  |
| 297 | maintain data analysis system | 2018-08-28 → 2018-09-03 (+6d) | 2018-08-28 → 2018-09-03 (+6d) |  | 13500d → 13900d |  |  |
| 298 | maintain info dissemination system | 2018-08-28 → 2018-09-03 (+6d) | 2018-08-28 → 2018-09-03 (+6d) |  | 13500d → 13900d |  |  |
| 299 | train staff for debugging | 2018-08-28 → 2018-09-03 (+6d) | 2018-08-28 → 2018-09-03 (+6d) |  | 13550d → 13950d |  |  |
| 300 | produce code and documentation standards | 2018-08-28 → 2018-09-03 (+6d) | 2018-08-28 → 2018-09-03 (+6d) |  | 13500d → 13900d |  |  |
| 301 | **updated database** | 2018-08-28 → 2018-09-03 (+6d) | 2018-08-28 → 2018-09-03 (+6d) |  |  |  |  |
| 302 | maintain tables | 2018-08-28 → 2018-09-03 (+6d) | 2018-08-28 → 2018-09-03 (+6d) |  | 13500d → 13900d |  |  |
| 303 | **parsed SMS** | 2018-08-28 → 2018-09-03 (+6d) | 2018-08-28 → 2018-09-03 (+6d) |  |  |  |  |
| 304 | maintain SMS parsing | 2018-08-28 → 2018-09-03 (+6d) | 2018-08-28 → 2018-09-03 (+6d) |  | 13500d → 13900d |  |  |
| 305 | **capable personnel for monitoring and early warning** | 2018-08-24 → 2018-08-31 (+7d) | 2018-08-28 → 2018-09-03 (+6d) |  |  |  |  |
| 306 | **develop training materials** | 2018-08-24 → 2018-08-31 (+7d) | 2018-08-24 → 2018-08-31 (+7d) |  |  |  |  |

| ID | Task | Start | Finish | Duration | Total float |
| --- | --- | --- | --- | --- | --- |
| 307 | hazard monitoring | 2018-08-24 → 2018-08-31 (+7d) | 2018-08-24 → 2018-08-31 (+7d) |  | 13400d → 13800d |
| 308 | analysis and validation | 2018-08-24 → 2018-08-31 (+7d) | 2018-08-24 → 2018-08-31 (+7d) |  | 13400d → 13800d |
| 309 | sensor maintenance | 2018-08-24 → 2018-08-31 (+7d) | 2018-08-24 → 2018-08-31 (+7d) |  | 13400d → 13800d |
| 310 | communications protocol | 2018-08-24 → 2018-08-31 (+7d) | 2018-08-24 → 2018-08-31 (+7d) |  | 13400d → 13800d |
| 311 | **conduct EWS protocol trainings (internal)** | 2018-08-28 → 2018-09-03 (+6d) | 2018-08-28 → 2018-09-03 (+6d) |  |  |
| 312 | hazard monitoring | 2018-08-28 → 2018-09-03 (+6d) | 2018-08-28 → 2018-09-03 (+6d) |  |  |
| 313 | analysis and validation | 2018-08-28 → 2018-09-03 (+6d) | 2018-08-28 → 2018-09-03 (+6d) |  |  |
| 314 | sensor maintenance | 2018-08-28 → 2018-09-03 (+6d) | 2018-08-28 → 2018-09-03 (+6d) |  |  |
| 315 | communications protocol | 2018-08-28 → 2018-09-03 (+6d) | 2018-08-28 → 2018-09-03 (+6d) |  |  |
| 316 | **conduct EWS protocol trainings (external)** | 2018-08-28 → 2018-09-03 (+6d) | 2018-08-28 → 2018-09-03 (+6d) |  |  |
| 317 | hazard monitoring | 2018-08-28 → 2018-09-03 (+6d) | 2018-08-28 → 2018-09-03 (+6d) |  |  |
| 318 | analysis and validation | 2018-08-28 → 2018-09-03 (+6d) | 2018-08-28 → 2018-09-03 (+6d) |  |  |
| 319 | sensor maintenance | 2018-08-28 → 2018-09-03 (+6d) | 2018-08-28 → 2018-09-03 (+6d) |  |  |
| 320 | communications protocol | 2018-08-28 → 2018-09-03 (+6d) | 2018-08-28 → 2018-09-03 (+6d) |  |  |
| 321 | **Strategic communications** | 2018-08-23 → 2018-08-30 (+7d) | 2018-08-28 → 2018-09-03 (+6d) |  |  |
| 322 | research stakeholder info needs | 2018-08-23 → 2018-08-30 (+7d) | 2018-08-23 → 2018-08-30 (+7d) |  | 13300d → 13700d |
| 323 | research policy process | 2018-08-28 → 2018-09-03 (+6d) | 2018-08-28 → 2018-09-03 (+6d) |  | 13500d → 13900d |
| 324 | develop strategic comm plan | 2018-08-24 → 2018-08-31 (+7d) | 2018-08-24 → 2018-08-31 (+7d) |  |  |
| 325 | **develop communication materials** | 2018-08-28 → 2018-09-03 (+6d) | 2018-08-28 → 2018-09-03 (+6d) |  |  |
| 326 | **website** | 2018-08-28 → 2018-09-03 (+6d) | 2018-08-28 → 2018-09-03 (+6d) |  |  |
| 327 | develop website content | 2018-08-28 → 2018-09-03 (+6d) | 2018-08-28 → 2018-09-03 (+6d) |  |  |
| 328 | design website | 2018-08-28 → 2018-09-03 (+6d) | 2018-08-28 → 2018-09-03 (+6d) |  |  |
| 329 | develop content management system | 2018-08-28 → 2018-09-03 (+6d) | 2018-08-28 → 2018-09-03 (+6d) |  |  |
| 330 | develop non-website communications | 2018-08-28 → 2018-09-03 (+6d) | 2018-08-28 → 2018-09-03 (+6d) |  | 13500d → 13900d |
| 331 | **MEAL system** |  | 2018-08-28 → 2018-09-03 (+6d) | 136d? → 140d? |  |
| 332 | develop MEAL framework | 2018-08-15 → 2018-08-22 (+7d) | 2018-08-16 → 2018-08-23 (+7d) |  | 12800d → 13200d |
| 333 | develop MEAL plan | 2018-08-17 → 2018-08-24 (+7d) | 2018-08-22 → 2018-08-29 (+7d) |  |  |
| 334 | **monitoring mechanisms** |  | 2018-08-28 → 2018-09-03 (+6d) | 136d? → 140d? |  |
| 335 | **standard documentation and storage** | 2018-08-24 → 2018-08-31 (+7d) | 2018-08-28 → 2018-09-03 (+6d) |  |  |
| 336 | design documentation templates | 2018-08-24 → 2018-08-31 (+7d) | 2018-08-24 → 2018-08-31 (+7d) |  |  |
| 337 | design repository system | 2018-08-28 → 2018-09-03 (+6d) | 2018-08-28 → 2018-09-03 (+6d) |  |  |
| 338 | **PLAA** | 2018-08-28 → 2018-09-03 (+6d) | 2018-08-28 → 2018-09-03 (+6d) |  |  |
| 339 | review current PLAA vis-a-vis MEAL plan | 2018-08-28 → 2018-09-03 (+6d) | 2018-08-28 → 2018-09-03 (+6d) |  |  |
| 340 | revise PLAA guidelines | 2018-08-28 → 2018-09-03 (+6d) | 2018-08-28 → 2018-09-03 (+6d) |  |  |
| 341 | **EWS-QA** |  | 2018-08-28 → 2018-09-03 (+6d) | 136d → 140d |  |
| 342 | review current EWS-QA vis-a-vis MEAL plan | 2018-08-28 → 2018-09-03 (+6d) | 2018-08-28 → 2018-09-03 (+6d) |  |  |
| 343 | revise EWS-QA guidelines | 2018-08-28 → 2018-09-03 (+6d) | 2018-08-28 → 2018-09-03 (+6d) |  |  |
| 345 | **outcome-impact** | 2018-08-28 → 2018-09-03 (+6d) | 2018-08-28 → 2018-09-03 (+6d) |  |  |
| 346 | review outcome-impact vis-a-vis MEAL plan | 2018-08-28 → 2018-09-03 (+6d) | 2018-08-28 → 2018-09-03 (+6d) |  |  |
| 347 | revise outcome-impact | 2018-08-28 → 2018-09-03 (+6d) | 2018-08-28 → 2018-09-03 (+6d) |  |  |
| 348 | **administrative process** | 2018-08-28 → 2018-09-03 (+6d) | 2018-08-28 → 2018-09-03 (+6d) |  |  |
| 349 | review admin process trackers vis-a-vis MEAL plan | 2018-08-28 → 2018-09-03 (+6d) | 2018-08-28 → 2018-09-03 (+6d) |  |  |
| 350 | revise admin process trackers | 2018-08-28 → 2018-09-03 (+6d) | 2018-08-28 → 2018-09-03 (+6d) |  |  |
| 351 | **project output** | 2018-08-23 → 2018-08-30 (+7d) | 2018-08-28 → 2018-09-03 (+6d) |  |  |
| 352 | develop team output tracker | 2018-08-23 → 2018-08-30 (+7d) | 2018-08-23 → 2018-08-30 (+7d) |  |  |
| 353 | develop individual output tracker | 2018-08-24 → 2018-08-31 (+7d) | 2018-08-24 → 2018-08-31 (+7d) |  |  |
| 354 | develop individual capacity tracker | 2018-08-28 → 2018-09-03 (+6d) | 2018-08-28 → 2018-09-03 (+6d) |  |  |
| 355 | **stakeholder concerns** | 2018-08-28 → 2018-09-03 (+6d) | 2018-08-28 → 2018-09-03 (+6d) |  |  |
| 356 | develop stakeholder concerns tracker | 2018-08-28 → 2018-09-03 (+6d) | 2018-08-28 → 2018-09-03 (+6d) |  |  |
| 359 | **data gathering** |  | 2018-08-28 → 2018-09-03 (+6d) | 136d? → 140d? |  |
| 360 | EWS-QA | 2018-08-28 → 2018-09-03 (+6d) | 2018-08-28 → 2018-09-03 (+6d) |  | 13500d → 13900d |
| 361 | PLAA (per site) | 2018-07-09 → 2018-07-13 (+4d) | 2018-08-28 → 2018-09-03 (+6d) |  | 10100d → 10500d |
| 362 | outcome-iimpact | 2018-08-28 → 2018-09-03 (+6d) | 2018-08-28 → 2018-09-03 (+6d) |  | 13500d → 13900d |
| 363 | project output | 2018-08-28 → 2018-09-03 (+6d) | 2018-08-28 → 2018-09-03 (+6d) |  | 13500d → 13900d |
| 364 | stakeholder concerns | 2018-08-28 → 2018-09-03 (+6d) | 2018-08-28 → 2018-09-03 (+6d) |  | 13500d → 13900d |
| 366 | evaluate | 2018-08-28 → 2018-09-03 (+6d) | 2018-08-28 → 2018-09-03 (+6d) |  | 13500d → 13900d |
| 367 | provide recomms | 2018-08-28 → 2018-09-03 (+6d) | 2018-08-28 → 2018-09-03 (+6d) |  | 13500d → 13900d |
| 370 | **MEAL implem** | 2018-08-23 → 2018-08-30 (+7d) | 2018-08-28 → 2018-09-03 (+6d) |  |  |
| 371 | **EWS-QA** | 2018-08-23 → 2018-08-30 (+7d) | 2018-08-28 → 2018-09-03 (+6d) |  |  |
| 372 | **activity series 1** | 2018-08-23 → 2018-08-30 (+7d) | 2018-08-28 → 2018-09-03 (+6d) |  |  |
| 373 | gather data | 2018-08-23 → 2018-08-30 (+7d) | 2018-08-23 → 2018-08-30 (+7d) |  |  |
| 374 | analyze, evaluate data | 2018-08-24 → 2018-08-31 (+7d) | 2018-08-24 → 2018-08-31 (+7d) |  |  |
| 375 | provide recommendations | 2018-08-28 → 2018-09-03 (+6d) | 2018-08-28 → 2018-09-03 (+6d) |  |  |
| 376 | **PLAA** | 2018-08-23 → 2018-08-30 (+7d) | 2018-08-23 → 2018-08-30 (+7d) |  |  |
| 377 | **activity series 1** | 2018-08-23 → 2018-08-30 (+7d) | 2018-08-23 → 2018-08-30 (+7d) |  |  |
| 378 | gather data | 2018-08-23 → 2018-08-30 (+7d) | 2018-08-23 → 2018-08-30 (+7d) |  |  |
| 379 | analyze, evaluate data | 2018-08-23 → 2018-08-30 (+7d) | 2018-08-23 → 2018-08-30 (+7d) |  |  |
| 380 | provide recommendations | 2018-08-23 → 2018-08-30 (+7d) | 2018-08-23 → 2018-08-30 (+7d) |  |  |
| 381 | **outcome-impact** | 2018-08-23 → 2018-08-30 (+7d) | 2018-08-23 → 2018-08-30 (+7d) |  |  |
| 382 | **activity series 1** | 2018-08-23 → 2018-08-30 (+7d) | 2018-08-23 → 2018-08-30 (+7d) |  |  |

| ID | Task | Start | Finish |
| --- | --- | --- | --- |
| 383 | gather data | 2018-08-23 → 2018-08-30 (+7d) | 2018-08-23 → 2018-08-30 (+7d) |
| 384 | analyze, evaluate data | 2018-08-23 → 2018-08-30 (+7d) | 2018-08-23 → 2018-08-30 (+7d) |
| 385 | provide recommendations | 2018-08-23 → 2018-08-30 (+7d) | 2018-08-23 → 2018-08-30 (+7d) |
| 386 | **project output** | 2018-08-23 → 2018-08-30 (+7d) | 2018-08-23 → 2018-08-30 (+7d) |
| 387 | **activity series 1** | 2018-08-23 → 2018-08-30 (+7d) | 2018-08-23 → 2018-08-30 (+7d) |
| 388 | gather data | 2018-08-23 → 2018-08-30 (+7d) | 2018-08-23 → 2018-08-30 (+7d) |
| 389 | analyze, evaluate data | 2018-08-23 → 2018-08-30 (+7d) | 2018-08-23 → 2018-08-30 (+7d) |
| 390 | provide recommendations | 2018-08-23 → 2018-08-30 (+7d) | 2018-08-23 → 2018-08-30 (+7d) |
| 391 | **stakeholder concerns** | 2018-08-23 → 2018-08-30 (+7d) | 2018-08-23 → 2018-08-30 (+7d) |
| 392 | **activity series 1** | 2018-08-23 → 2018-08-30 (+7d) | 2018-08-23 → 2018-08-30 (+7d) |
| 393 | gather data | 2018-08-23 → 2018-08-30 (+7d) | 2018-08-23 → 2018-08-30 (+7d) |
| 394 | analyze, evaluate data | 2018-08-23 → 2018-08-30 (+7d) | 2018-08-23 → 2018-08-30 (+7d) |
| 395 | provide recommendations | 2018-08-23 → 2018-08-30 (+7d) | 2018-08-23 → 2018-08-30 (+7d) |
| 396 | **admin process** | 2018-08-23 → 2018-08-30 (+7d) | 2018-08-23 → 2018-08-30 (+7d) |
| 397 | **activity series 1** | 2018-08-23 → 2018-08-30 (+7d) | 2018-08-23 → 2018-08-30 (+7d) |
| 398 | gather data | 2018-08-23 → 2018-08-30 (+7d) | 2018-08-23 → 2018-08-30 (+7d) |
| 399 | analyze, evaluate data | 2018-08-23 → 2018-08-30 (+7d) | 2018-08-23 → 2018-08-30 (+7d) |
| 400 | provide recommendations | 2018-08-23 → 2018-08-30 (+7d) | 2018-08-23 → 2018-08-30 (+7d) |

## Version 3 (saved 2018-01-05)

Note of the change: - Data Analysis - Dissemination System

Last finish stays 2018-09-03.

Added:

| ID | Task | Duration | Start | Finish | Constraint | Resources |
| --- | --- | --- | --- | --- | --- | --- |
| 220 | improvement of existing web charts | 1d? | 2018-09-03 | 2018-09-03 | as late as possible | web dev 2 |
| 222 | provide initial performance metrics based on 2017 experience | 1d | 2018-02-08 | 2018-02-08 |  | full stack dev 1 |
| 223 | recommend performance metrics | 1d | 2018-09-03 | 2018-09-03 | as late as possible | data scientist 7 |
| 233 | **develop new GSM module server features** | 15d | 2018-02-08 | 2018-03-01 |  |  |
| 234 | develop power autonomy | 15d | 2018-02-08 | 2018-03-01 |  | emb engr 8 |
| 235 | develop multiple gsm module hardware | 15d | 2018-02-08 | 2018-03-01 |  | emb engr 8 |
| 236 | implement new feature requests | 1d? | 2018-02-08 | 2018-02-08 |  | emb engr 8 |
| 252 | implement feature requests | 1d? | 2018-02-08 | 2018-02-08 |  | web dev 5 |

Removed: 231 improve GSM module server; 238 recommend performance metrics (in relation to automation)

Changed:

| ID | Task | Start | Finish | Duration | Total float | Predecessors | Other |
| --- | --- | --- | --- | --- | --- | --- | --- |
| 2 | **methods report (Hazards)** | 2018-06-25 → 2018-05-23 (-33d) |  | 49d? → 71d? |  |  |  |
| 48 | **threshold model 1** | 2018-07-04 → 2018-05-23 (-42d) | 2018-09-03 → 2018-07-20 (-45d) |  |  |  |  |
| 49 | review related literature | 2018-07-04 → 2018-05-23 (-42d) | 2018-07-10 → 2018-05-29 (-42d) |  | 9800d → 6900d |  |  |
| 50 | develop prototype | 2018-07-11 → 2018-05-30 (-42d) | 2018-08-07 → 2018-06-27 (-41d) |  |  |  |  |
| 51 | implement model alongside operations | 2018-08-08 → 2018-06-28 (-41d) | 2018-08-22 → 2018-07-11 (-42d) |  |  |  |  |
| 52 | evaluate model (report as PI of threshold model) | 2018-08-23 → 2018-07-12 (-42d) | 2018-08-23 → 2018-07-12 (-42d) |  |  |  |  |
| 53 | write report | 2018-08-24 → 2018-07-13 (-42d) | 2018-08-30 → 2018-07-18 (-43d) |  |  |  |  |
| 54 | develop training materials | 2018-08-31 → 2018-07-19 (-43d) | 2018-08-31 → 2018-07-19 (-43d) |  |  |  |  |
| 55 | conduct training | 2018-09-03 → 2018-07-20 (-45d) | 2018-09-03 → 2018-07-20 (-45d) |  |  |  |  |
| 56 | **threshold model 2** | 2018-07-04 → 2018-05-23 (-42d) | 2018-09-03 → 2018-07-20 (-45d) |  |  |  |  |
| 57 | review related literature | 2018-07-04 → 2018-05-23 (-42d) | 2018-07-10 → 2018-05-29 (-42d) |  | 9800d → 6900d |  |  |
| 58 | develop prototype | 2018-07-11 → 2018-05-30 (-42d) | 2018-08-07 → 2018-06-27 (-41d) |  |  |  |  |
| 59 | implement model alongside operations | 2018-08-08 → 2018-06-28 (-41d) | 2018-08-22 → 2018-07-11 (-42d) |  |  |  |  |
| 60 | evaluate model (report as PI of threshold model) | 2018-08-23 → 2018-07-12 (-42d) | 2018-08-23 → 2018-07-12 (-42d) |  |  |  |  |
| 61 | write report | 2018-08-24 → 2018-07-13 (-42d) | 2018-08-30 → 2018-07-18 (-43d) |  |  |  |  |
| 62 | develop training materials | 2018-08-31 → 2018-07-19 (-43d) | 2018-08-31 → 2018-07-19 (-43d) |  |  |  |  |
| 63 | conduct training | 2018-09-03 → 2018-07-20 (-45d) | 2018-09-03 → 2018-07-20 (-45d) |  |  |  |  |
| 64 | **threshold model 3** | 2018-07-04 → 2018-05-23 (-42d) | 2018-09-03 → 2018-07-20 (-45d) |  |  |  |  |
| 65 | review related literature | 2018-07-04 → 2018-05-23 (-42d) | 2018-07-10 → 2018-05-29 (-42d) |  | 9800d → 6900d |  |  |
| 66 | develop prototype | 2018-07-11 → 2018-05-30 (-42d) | 2018-08-07 → 2018-06-27 (-41d) |  |  |  |  |
| 67 | implement model alongside operations | 2018-08-08 → 2018-06-28 (-41d) | 2018-08-22 → 2018-07-11 (-42d) |  |  |  |  |
| 68 | evaluate model (report as PI of threshold model) | 2018-08-23 → 2018-07-12 (-42d) | 2018-08-23 → 2018-07-12 (-42d) |  |  |  |  |
| 69 | write report | 2018-08-24 → 2018-07-13 (-42d) | 2018-08-30 → 2018-07-18 (-43d) |  |  |  |  |
| 70 | develop training materials | 2018-08-31 → 2018-07-19 (-43d) | 2018-08-31 → 2018-07-19 (-43d) |  |  |  |  |
| 71 | conduct training | 2018-09-03 → 2018-07-20 (-45d) | 2018-09-03 → 2018-07-20 (-45d) |  |  |  |  |
| 72 | **threshold model 4** | 2018-07-04 → 2018-05-23 (-42d) | 2018-09-03 → 2018-07-20 (-45d) |  |  |  |  |
| 73 | review related literature | 2018-07-04 → 2018-05-23 (-42d) | 2018-07-10 → 2018-05-29 (-42d) |  | 9800d → 6900d |  |  |
| 74 | develop prototype | 2018-07-11 → 2018-05-30 (-42d) | 2018-08-07 → 2018-06-27 (-41d) |  |  |  |  |
| 75 | implement model alongside operations | 2018-08-08 → 2018-06-28 (-41d) | 2018-08-22 → 2018-07-11 (-42d) |  |  |  |  |
| 76 | evaluate model (report as PI of threshold model) | 2018-08-23 → 2018-07-12 (-42d) | 2018-08-23 → 2018-07-12 (-42d) |  |  |  |  |
| 77 | write report | 2018-08-24 → 2018-07-13 (-42d) | 2018-08-30 → 2018-07-18 (-43d) |  |  |  |  |
| 78 | develop training materials | 2018-08-31 → 2018-07-19 (-43d) | 2018-08-31 → 2018-07-19 (-43d) |  |  |  |  |
| 79 | conduct training | 2018-09-03 → 2018-07-20 (-45d) | 2018-09-03 → 2018-07-20 (-45d) |  |  |  |  |
| 80 | **threshold model 5** | 2018-07-04 → 2018-05-23 (-42d) | 2018-09-03 → 2018-07-20 (-45d) |  |  |  |  |
| 81 | review related literature | 2018-07-04 → 2018-05-23 (-42d) | 2018-07-10 → 2018-05-29 (-42d) |  | 9800d → 6900d |  |  |
| 82 | develop prototype | 2018-07-11 → 2018-05-30 (-42d) | 2018-08-07 → 2018-06-27 (-41d) |  |  |  |  |
| 83 | implement model alongside operations | 2018-08-08 → 2018-06-28 (-41d) | 2018-08-22 → 2018-07-11 (-42d) |  |  |  |  |
| 84 | evaluate model (report as PI of threshold model) | 2018-08-23 → 2018-07-12 (-42d) | 2018-08-23 → 2018-07-12 (-42d) |  |  |  |  |
| 85 | write report | 2018-08-24 → 2018-07-13 (-42d) | 2018-08-30 → 2018-07-18 (-43d) |  |  |  |  |
| 86 | develop training materials | 2018-08-31 → 2018-07-19 (-43d) | 2018-08-31 → 2018-07-19 (-43d) |  |  |  |  |
| 87 | conduct training | 2018-09-03 → 2018-07-20 (-45d) | 2018-09-03 → 2018-07-20 (-45d) |  |  |  |  |
| 88 | **threshold model 6** | 2018-07-04 → 2018-05-23 (-42d) | 2018-09-03 → 2018-07-20 (-45d) |  |  |  |  |
| 89 | review related literature | 2018-07-04 → 2018-05-23 (-42d) | 2018-07-10 → 2018-05-29 (-42d) |  | 9800d → 6900d |  |  |
| 90 | develop prototype | 2018-07-11 → 2018-05-30 (-42d) | 2018-08-07 → 2018-06-27 (-41d) |  |  |  |  |
| 91 | implement model alongside operations | 2018-08-08 → 2018-06-28 (-41d) | 2018-08-22 → 2018-07-11 (-42d) |  |  |  |  |
| 92 | evaluate model (report as PI of threshold model) | 2018-08-23 → 2018-07-12 (-42d) | 2018-08-23 → 2018-07-12 (-42d) |  |  |  |  |
| 93 | write report | 2018-08-24 → 2018-07-13 (-42d) | 2018-08-30 → 2018-07-18 (-43d) |  |  |  |  |
| 94 | develop training materials | 2018-08-31 → 2018-07-19 (-43d) | 2018-08-31 → 2018-07-19 (-43d) |  |  |  |  |
| 95 | conduct training | 2018-09-03 → 2018-07-20 (-45d) | 2018-09-03 → 2018-07-20 (-45d) |  |  |  |  |
| 96 | develop threshold performance index | 2018-07-25 → 2018-06-14 (-41d) | 2018-08-22 → 2018-07-11 (-42d) |  | 11300d → 8400d |  |  |
| 135 | **"Alert protocol" -- essentually how risk knowledge informs early warning practice** | 2018-07-04 → 2018-07-02 (-2d) | 2018-09-03 → 2018-08-30 (-4d) |  |  |  |  |
| 136 | review of related literature | 2018-07-04 → 2018-07-02 (-2d) | 2018-07-31 → 2018-07-27 (-4d) |  | 9800d → 9600d |  |  |
| 137 | review and evaluate current alert protocol | 2018-08-01 → 2018-07-30 (-2d) | 2018-08-30 → 2018-08-28 (-2d) |  |  |  |  |
| 138 | recomend alert protocol | 2018-08-31 → 2018-08-29 (-2d) | 2018-09-03 → 2018-08-30 (-4d) |  |  |  |  |
| 209 | **Data storage and management system** | 2018-06-26 → 2018-05-16 (-41d) |  | 45d → 73d |  |  |  |
| 210 | develop new structure for storage and management | 2018-06-26 → 2018-05-16 (-41d) | 2018-07-23 → 2018-06-13 (-40d) |  | 9200d → 6400d |  |  |
| 213 | develop data access for risk assessment | 2018-07-24 → 2018-06-14 (-40d) | 2018-08-06 → 2018-06-27 (-40d) |  |  |  |  |
| 214 | **Data analysis system** | 2018-08-30 → 2018-02-08 (-203d) |  | 3d? → 140d? |  |  |  |
| 215 | **threshold scripts** | 2018-09-03 → 2018-07-23 (-42d) | 2018-09-03 → 2018-07-23 (-42d) | 1d? → 1d |  |  |  |
| 216 | implement thresholds | 2018-09-03 → 2018-07-23 (-42d) | 2018-09-03 → 2018-07-23 (-42d) | 1d? → 1d | 13900d → none | none → 55, 63, 71, 79, 87, 95 |  |
| 217 | **visualization scripts** | 2018-09-03 → 2018-02-08 (-207d) |  | 1d? → 140d? |  |  |  |
| 218 | research data visualization concepts (inc. hazard concepts) | 2018-09-03 → 2018-07-10 (-55d) | 2018-09-03 → 2018-07-23 (-42d) | 1d? → 10d | 13900d → 10200d |  |  |
| 219 | develop new web charts | 2018-09-03 → 2018-07-24 (-41d) |  | 1d? → 30d | 13900d → none | none → 216, 218 | was named improvement of webcharts; constraint as late as possible → none; resources web dev 2 → full stack dev 1 |
| 224 | draft process profile (recomm to automation integration) | 2018-08-30 → 2018-08-29 (-1d) |  | 1d? → 2d | 13700d → 13600d |  |  |
| 225 | **Dissemination system** | 2018-08-30 → 2018-02-08 (-203d) |  | 3d? → 140d? |  |  |  |
| 226 | **alert generation module** | 2018-08-30 → 2018-08-23 (-7d) |  | 3d? → 7d |  |  |  |
| 227 | create modularized infrastructure for different operational triggers | 2018-09-03 → 2018-08-28 (-6d) |  | 1d? → 5d | 13900d → 13500d |  |  |
| 228 | create "special cases" tables (e.g., Puguis) | 2018-08-31 → 2018-08-23 (-8d) | 2018-08-31 → 2018-08-30 (-1d) | 1d? → 5d | 13800d → 13300d |  |  |
| 229 | implement alert protocol (trigger to alert) revisions | 2018-09-03 → 2018-08-31 (-3d) |  | 1d? → 2d |  | 228 → 138, 228 |  |
| 230 | recommend performance metrics (in relation to automation) |  |  | 1d? → 1d |  |  | resources data scientist 7 → programmer 1 |

| ID | Task | Start | Finish | Duration | Total float | Predecessors | Other |
| --- | --- | --- | --- | --- | --- | --- | --- |
| 231 | draft process profile (recomm to automation integration) | 2018-08-30 → 2018-08-29 (-1d) |  | 1d? → 2d | 13700d → 13600d |  |  |
| 232 | **GSM module server** | 2018-08-30 → 2018-02-08 (-203d) |  | 3d? → 140d? |  |  |  |
| 237 | recommend performance metrics (in relation to automation) |  |  | 1d? → 1d |  |  | resources programmer 1 → emb engr 8 |
| 238 | draft process profile (recomm to automation integration) | 2018-08-30 → 2018-08-29 (-1d) |  | 1d? → 2d | 13700d → 13600d |  |  |
| 239 | **chatterbox** | 2018-08-30 → 2018-08-17 (-13d) |  | 3d? → 10d? |  |  |  |
| 240 | revise scripts for SMS generation and sending (automation?) | 2018-09-03 → 2018-08-17 (-17d) |  | 1d? → 10d | 13900d → 13000d |  |  |
| 243 | recommend performance metrics (in relation to automation) |  |  | 1d? → 1d |  |  | resources web dev 4 → web dev 3 |
| 244 | draft process profile (recomm to automation integration) | 2018-08-30 → 2018-08-29 (-1d) |  | 1d? → 2d | 13700d → 13600d |  | resources web dev 4 → web dev 3 |
| 245 | **webcall** | 2018-08-30 → 2018-05-03 (-119d) | 2018-09-03 → 2018-08-30 (-4d) | 3d? → 83d |  |  |  |
| 246 | acquire, implement hardware | 2018-09-03 → 2018-05-03 (-123d) | 2018-09-03 → 2018-07-26 (-39d) | 1d? → 60d | 13900d → 5500d |  |  |
| 247 | develop/integrate software | 2018-09-03 → 2018-07-27 (-38d) | 2018-09-03 → 2018-08-24 (-10d) | 1d? → 20d | 13900d → none | none → 246 |  |
| 248 | recommend performance metrics (in relation to automation) | 2018-09-03 → 2018-08-28 (-6d) | 2018-09-03 → 2018-08-28 (-6d) | 1d? → 1d | 13900d → none | none → 247 | resources web dev 5 → web dev 4 |
| 249 | draft process profile (recomm to automation integration) | 2018-08-30 → 2018-08-29 (-1d) |  | 1d? → 2d | 13700d → none | none → 248 | resources web dev 5 → web dev 4 |
| 250 | **bulletin generator** | 2018-08-30 → 2018-02-08 (-203d) |  | 3d? → 140d? |  |  |  |
| 251 | revise scripts for bulletin generation and sending (automation?) | 2018-09-03 → 2018-08-28 (-6d) |  | 1d? → 5d | 13900d → 13500d |  |  |
| 254 | recommend performance metrics (in relation to automation) |  |  | 1d? → 1d |  |  | resources emb engr 8 → web dev 5 |
| 255 | draft process profile (recomm to automation integration) | 2018-08-30 → 2018-08-29 (-1d) |  | 1d? → 2d | 13700d → 13600d |  | resources web dev 3 → web dev 5 |
| 256 | **Local Info system (ISD)** | 2018-07-05 → 2018-02-23 (-132d) |  | 41d? → 130d |  |  |  |
| 257 | consolidate recommendations into ict specifications | 2018-07-05 → 2018-02-23 (-132d) | 2018-07-05 → 2018-03-08 (-119d) | 1d? → 10d | 9900d → 1000d |  |  |
| 258 | use case testing | 2018-09-03 → 2018-06-07 (-88d) |  | 1d? → 60d | 13900d → 6000d | none → 257 |  |
| 259 | develop local codes updating system | 2018-09-03 → 2018-08-03 (-31d) |  | 1d? → 20d | 13900d → 10000d | none → 257 |  |
| 260 | port ews-l modules | 2018-09-03 → 2018-03-09 (-178d) |  | 1d? → 120d | 13900d → none | none → 257 |  |

## Version 4 (saved 2018-01-05)

Note of the change: update AIS and PMS

Last finish stays 2018-09-03.

Added:

| ID | Task | Duration | Start | Finish | Predecessors | Resources |
| --- | --- | --- | --- | --- | --- | --- |
| 268 | develop PMS backbone stable version | 20d | 2018-07-27 | 2018-08-24 | 265 | programmer 4 |
| 269 | maintain PMS | 1d? | 2018-08-28 | 2018-08-28 | 268 | programmer 5 |
| 270 | develop agile PMS components | 1d? | 2018-08-28 | 2018-08-28 | 268 | programmer 6 |
| 271 | develop generic visualization charts | 5d | 2018-08-28 | 2018-09-03 | 268 | web dev 5 |

Changed:

| ID | Task | Start | Finish | Duration | Total float |
| --- | --- | --- | --- | --- | --- |
| 2 | **methods report (Hazards)** | 2018-05-23 → 2018-05-21 (-2d) |  | 71d? → 73d? |  |
| 48 | **threshold model 1** | 2018-05-23 → 2018-05-21 (-2d) | 2018-07-20 → 2018-07-18 (-2d) |  |  |
| 49 | review related literature | 2018-05-23 → 2018-05-21 (-2d) | 2018-05-29 → 2018-05-25 (-4d) |  | 6900d → 6700d |
| 50 | develop prototype | 2018-05-30 → 2018-05-28 (-2d) | 2018-06-27 → 2018-06-25 (-2d) |  |  |
| 51 | implement model alongside operations | 2018-06-28 → 2018-06-26 (-2d) | 2018-07-11 → 2018-07-09 (-2d) |  |  |
| 52 | evaluate model (report as PI of threshold model) | 2018-07-12 → 2018-07-10 (-2d) | 2018-07-12 → 2018-07-10 (-2d) |  |  |
| 53 | write report | 2018-07-13 → 2018-07-11 (-2d) | 2018-07-18 → 2018-07-16 (-2d) |  |  |
| 54 | develop training materials | 2018-07-19 → 2018-07-17 (-2d) | 2018-07-19 → 2018-07-17 (-2d) |  |  |
| 55 | conduct training | 2018-07-20 → 2018-07-18 (-2d) | 2018-07-20 → 2018-07-18 (-2d) |  |  |
| 56 | **threshold model 2** | 2018-05-23 → 2018-05-21 (-2d) | 2018-07-20 → 2018-07-18 (-2d) |  |  |
| 57 | review related literature | 2018-05-23 → 2018-05-21 (-2d) | 2018-05-29 → 2018-05-25 (-4d) |  | 6900d → 6700d |
| 58 | develop prototype | 2018-05-30 → 2018-05-28 (-2d) | 2018-06-27 → 2018-06-25 (-2d) |  |  |
| 59 | implement model alongside operations | 2018-06-28 → 2018-06-26 (-2d) | 2018-07-11 → 2018-07-09 (-2d) |  |  |
| 60 | evaluate model (report as PI of threshold model) | 2018-07-12 → 2018-07-10 (-2d) | 2018-07-12 → 2018-07-10 (-2d) |  |  |
| 61 | write report | 2018-07-13 → 2018-07-11 (-2d) | 2018-07-18 → 2018-07-16 (-2d) |  |  |
| 62 | develop training materials | 2018-07-19 → 2018-07-17 (-2d) | 2018-07-19 → 2018-07-17 (-2d) |  |  |
| 63 | conduct training | 2018-07-20 → 2018-07-18 (-2d) | 2018-07-20 → 2018-07-18 (-2d) |  |  |
| 64 | **threshold model 3** | 2018-05-23 → 2018-05-21 (-2d) | 2018-07-20 → 2018-07-18 (-2d) |  |  |
| 65 | review related literature | 2018-05-23 → 2018-05-21 (-2d) | 2018-05-29 → 2018-05-25 (-4d) |  | 6900d → 6700d |
| 66 | develop prototype | 2018-05-30 → 2018-05-28 (-2d) | 2018-06-27 → 2018-06-25 (-2d) |  |  |
| 67 | implement model alongside operations | 2018-06-28 → 2018-06-26 (-2d) | 2018-07-11 → 2018-07-09 (-2d) |  |  |
| 68 | evaluate model (report as PI of threshold model) | 2018-07-12 → 2018-07-10 (-2d) | 2018-07-12 → 2018-07-10 (-2d) |  |  |
| 69 | write report | 2018-07-13 → 2018-07-11 (-2d) | 2018-07-18 → 2018-07-16 (-2d) |  |  |
| 70 | develop training materials | 2018-07-19 → 2018-07-17 (-2d) | 2018-07-19 → 2018-07-17 (-2d) |  |  |
| 71 | conduct training | 2018-07-20 → 2018-07-18 (-2d) | 2018-07-20 → 2018-07-18 (-2d) |  |  |
| 72 | **threshold model 4** | 2018-05-23 → 2018-05-21 (-2d) | 2018-07-20 → 2018-07-18 (-2d) |  |  |
| 73 | review related literature | 2018-05-23 → 2018-05-21 (-2d) | 2018-05-29 → 2018-05-25 (-4d) |  | 6900d → 6700d |
| 74 | develop prototype | 2018-05-30 → 2018-05-28 (-2d) | 2018-06-27 → 2018-06-25 (-2d) |  |  |
| 75 | implement model alongside operations | 2018-06-28 → 2018-06-26 (-2d) | 2018-07-11 → 2018-07-09 (-2d) |  |  |
| 76 | evaluate model (report as PI of threshold model) | 2018-07-12 → 2018-07-10 (-2d) | 2018-07-12 → 2018-07-10 (-2d) |  |  |
| 77 | write report | 2018-07-13 → 2018-07-11 (-2d) | 2018-07-18 → 2018-07-16 (-2d) |  |  |
| 78 | develop training materials | 2018-07-19 → 2018-07-17 (-2d) | 2018-07-19 → 2018-07-17 (-2d) |  |  |
| 79 | conduct training | 2018-07-20 → 2018-07-18 (-2d) | 2018-07-20 → 2018-07-18 (-2d) |  |  |
| 80 | **threshold model 5** | 2018-05-23 → 2018-05-21 (-2d) | 2018-07-20 → 2018-07-18 (-2d) |  |  |
| 81 | review related literature | 2018-05-23 → 2018-05-21 (-2d) | 2018-05-29 → 2018-05-25 (-4d) |  | 6900d → 6700d |
| 82 | develop prototype | 2018-05-30 → 2018-05-28 (-2d) | 2018-06-27 → 2018-06-25 (-2d) |  |  |
| 83 | implement model alongside operations | 2018-06-28 → 2018-06-26 (-2d) | 2018-07-11 → 2018-07-09 (-2d) |  |  |
| 84 | evaluate model (report as PI of threshold model) | 2018-07-12 → 2018-07-10 (-2d) | 2018-07-12 → 2018-07-10 (-2d) |  |  |
| 85 | write report | 2018-07-13 → 2018-07-11 (-2d) | 2018-07-18 → 2018-07-16 (-2d) |  |  |
| 86 | develop training materials | 2018-07-19 → 2018-07-17 (-2d) | 2018-07-19 → 2018-07-17 (-2d) |  |  |
| 87 | conduct training | 2018-07-20 → 2018-07-18 (-2d) | 2018-07-20 → 2018-07-18 (-2d) |  |  |
| 88 | **threshold model 6** | 2018-05-23 → 2018-05-21 (-2d) | 2018-07-20 → 2018-07-18 (-2d) |  |  |
| 89 | review related literature | 2018-05-23 → 2018-05-21 (-2d) | 2018-05-29 → 2018-05-25 (-4d) |  | 6900d → 6700d |
| 90 | develop prototype | 2018-05-30 → 2018-05-28 (-2d) | 2018-06-27 → 2018-06-25 (-2d) |  |  |
| 91 | implement model alongside operations | 2018-06-28 → 2018-06-26 (-2d) | 2018-07-11 → 2018-07-09 (-2d) |  |  |
| 92 | evaluate model (report as PI of threshold model) | 2018-07-12 → 2018-07-10 (-2d) | 2018-07-12 → 2018-07-10 (-2d) |  |  |
| 93 | write report | 2018-07-13 → 2018-07-11 (-2d) | 2018-07-18 → 2018-07-16 (-2d) |  |  |
| 94 | develop training materials | 2018-07-19 → 2018-07-17 (-2d) | 2018-07-19 → 2018-07-17 (-2d) |  |  |
| 95 | conduct training | 2018-07-20 → 2018-07-18 (-2d) | 2018-07-20 → 2018-07-18 (-2d) |  |  |
| 96 | develop threshold performance index | 2018-06-14 → 2018-06-11 (-3d) | 2018-07-11 → 2018-07-09 (-2d) |  | 8400d → 8200d |
| 209 | **Data storage and management system** | 2018-05-16 → 2018-05-14 (-2d) | 2018-08-29 → 2018-07-25 (-35d) | 73d → 52d |  |
| 210 | develop new structure for storage and management | 2018-05-16 → 2018-05-14 (-2d) | 2018-06-13 → 2018-06-08 (-5d) |  | 6400d → 6200d |
| 211 | develop automated backup | 2018-08-07 → 2018-07-05 (-33d) | 2018-08-20 → 2018-07-18 (-33d) |  | 3800d → 1700d |
| 212 | recommend performance metrics | 2018-08-22 → 2018-07-19 (-34d) | 2018-08-29 → 2018-07-25 (-35d) |  |  |
| 213 | develop data access for risk assessment | 2018-06-14 → 2018-06-11 (-3d) | 2018-06-27 → 2018-06-25 (-2d) |  |  |
| 215 | **threshold scripts** | 2018-07-23 → 2018-07-19 (-4d) | 2018-07-23 → 2018-07-19 (-4d) |  |  |
| 216 | implement thresholds | 2018-07-23 → 2018-07-19 (-4d) | 2018-07-23 → 2018-07-19 (-4d) |  |  |
| 218 | research data visualization concepts (inc. hazard concepts) | 2018-07-10 → 2018-07-06 (-4d) | 2018-07-23 → 2018-07-19 (-4d) |  | 10200d → 10000d |
| 219 | develop new web charts | 2018-07-24 → 2018-07-20 (-4d) |  |  |  |
| 223 | recommend performance metrics | 2018-09-03 → 2018-07-25 (-40d) | 2018-09-03 → 2018-07-25 (-40d) |  | 13900d → 11300d |
| 224 | draft process profile (recomm to automation integration) | 2018-08-29 → 2018-08-01 (-28d) | 2018-08-30 → 2018-08-02 (-28d) |  | 13600d → 11800d |
| 226 | **alert generation module** | 2018-08-23 → 2018-07-25 (-29d) |  | 7d → 27d |  |
| 230 | recommend performance metrics (in relation to automation) | 2018-09-03 → 2018-07-25 (-40d) | 2018-09-03 → 2018-07-25 (-40d) |  | 13900d → 11300d |
| 231 | draft process profile (recomm to automation integration) | 2018-08-29 → 2018-08-01 (-28d) | 2018-08-30 → 2018-08-02 (-28d) |  | 13600d → 11800d |
| 232 | **GSM module server** |  | 2018-09-03 → 2018-08-02 (-32d) | 140d? → 120d? | none → 2000d |
| 237 | recommend performance metrics (in relation to automation) | 2018-09-03 → 2018-07-25 (-40d) | 2018-09-03 → 2018-07-25 (-40d) |  | 13900d → 11300d |
| 238 | draft process profile (recomm to automation integration) | 2018-08-29 → 2018-08-01 (-28d) | 2018-08-30 → 2018-08-02 (-28d) |  | 13600d → 11800d |
| 239 | **chatterbox** | 2018-08-17 → 2018-07-25 (-23d) |  | 10d? → 27d? |  |
| 243 | recommend performance metrics (in relation to automation) | 2018-09-03 → 2018-07-25 (-40d) | 2018-09-03 → 2018-07-25 (-40d) |  | 13900d → 11300d |
| 244 | draft process profile (recomm to automation integration) | 2018-08-29 → 2018-08-01 (-28d) | 2018-08-30 → 2018-08-02 (-28d) |  | 13600d → 11800d |

| ID | Task | Start | Finish | Duration | Total float | Predecessors | Other |
| --- | --- | --- | --- | --- | --- | --- | --- |
| 245 | **webcall** | 2018-05-03 → 2018-03-28 (-36d) | 2018-08-30 → 2018-08-02 (-28d) | 83d → 87d |  |  |  |
| 246 | acquire, implement hardware | 2018-05-03 → 2018-03-28 (-36d) | 2018-07-26 → 2018-06-26 (-30d) |  | 5500d → 3300d |  |  |
| 247 | develop/integrate software | 2018-07-27 → 2018-06-27 (-30d) | 2018-08-24 → 2018-07-24 (-31d) |  |  |  |  |
| 248 | recommend performance metrics (in relation to automation) | 2018-08-28 → 2018-07-25 (-34d) | 2018-08-28 → 2018-07-25 (-34d) |  |  |  |  |
| 249 | draft process profile (recomm to automation integration) | 2018-08-29 → 2018-08-01 (-28d) | 2018-08-30 → 2018-08-02 (-28d) |  | none → 400d |  |  |
| 254 | recommend performance metrics (in relation to automation) | 2018-09-03 → 2018-07-25 (-40d) | 2018-09-03 → 2018-07-25 (-40d) |  | 13900d → 11300d |  |  |
| 255 | draft process profile (recomm to automation integration) | 2018-08-29 → 2018-08-01 (-28d) | 2018-08-30 → 2018-08-02 (-28d) |  | 13600d → 11800d |  |  |
| 261 | **Automation integration system** | 2018-08-31 → 2018-02-08 (-204d) |  | 2d? → 140d |  |  |  |
| 262 | automate recommended processes | 2018-08-31 → 2018-08-03 (-28d) | 2018-08-31 → 2018-09-03 (+3d) | 1d? → 20d |  |  |  |
| 263 | recommend performance metrics | 2018-09-03 → 2018-02-08 (-207d) | 2018-09-03 → 2018-02-12 (-203d) | 1d? → 2.5d | none → 11150d | 262, 267 → none | was named evaluate automation performance; constraint as late as possible → none; resources MEAL officer 2 → programmer 3 |
| 264 | **Performance monitoring system of central system** |  | 2018-08-31 → 2018-09-03 (+3d) | 139d? → 140d? | 100d → none |  |  |
| 265 | consolidate recommendations for performance metrics | 2018-08-30 → 2018-07-26 (-35d) | 2018-08-30 → 2018-07-26 (-35d) |  |  | 142, 146, 159, 169, 174, 179, 184, 189, 192, 195, 205, 212 → 142, 146, 159, 169, 174, 179, 184, 189, 192, 195, 205, 212, 223, 230, 234, 237, 243, 248, 254, 263 |  |
| 267 | **Performance monitoring system** | 2018-08-31 → 2018-07-27 (-35d) | 2018-08-31 → 2018-09-03 (+3d) | 1d? → 25d? |  | 265 → none | was named develop performance monitoring system; constraint as late as possible → none; resources programmer 4 → none |

## Version 5 (saved 2018-01-05)

Note of the change: update ISD,AIS,PMS,LEWC,CP,Operations manual

Last finish stays 2018-09-03.

Added:

| ID | Task | Duration | Start | Finish | Predecessors | Resources |
| --- | --- | --- | --- | --- | --- | --- |
| 294 | update EWS operations manual (2) | 3d | 2018-08-24 | 2018-08-29 | 138, 293 | DRRS 2 |
| 295 | update EWS operations manual (3) | 3d | 2018-08-30 | 2018-09-03 | 138, 294 | DRRS 2 |

Changed:

| ID | Task | Start | Finish | Duration | Total float | Predecessors | Other |
| --- | --- | --- | --- | --- | --- | --- | --- |
| 135 | **"Alert protocol" -- essentually how risk knowledge informs early warning practice** | 2018-07-02 → 2018-06-21 (-11d) | 2018-08-30 → 2018-08-17 (-13d) |  |  |  |  |
| 136 | review of related literature | 2018-07-02 → 2018-06-21 (-11d) | 2018-07-27 → 2018-07-18 (-9d) |  | 9600d → 8900d |  |  |
| 137 | review and evaluate current alert protocol | 2018-07-30 → 2018-07-19 (-11d) | 2018-08-28 → 2018-08-15 (-13d) |  |  |  |  |
| 138 | recomend alert protocol | 2018-08-29 → 2018-08-16 (-13d) | 2018-08-30 → 2018-08-17 (-13d) |  |  |  |  |
| 276 | **Organized Local Early Warning Committee (LEWC)** | 2018-09-03 → 2018-05-10 (-116d) |  | 1d? → 80d |  |  |  |
| 277 | **LEWC org structure and mission/vision (47 sites)** | 2018-09-03 → 2018-05-10 (-116d) |  | 1d? → 80d |  |  |  |
| 278 | prepare modules | 2018-09-03 → 2018-05-10 (-116d) | 2018-09-03 → 2018-06-06 (-89d) | 1d? → 20d | 13900d → 6000d |  |  |
| 279 | conduct training/ gather data | 2018-09-03 → 2018-06-07 (-88d) |  | 1d? → 60d | 13900d → none | none → 278 |  |
| 280 | **Guidelines for community organizing (2 sites)** | 2018-09-03 → 2018-05-24 (-102d) |  | 1d? → 70d |  |  |  |
| 281 | develop methods for community organizing | 2018-09-03 → 2018-05-24 (-102d) | 2018-09-03 → 2018-07-19 (-46d) | 1d? → 40d | 13900d → 7000d |  |  |
| 282 | gather data (fieldwork) | 2018-09-03 → 2018-07-20 (-45d) | 2018-09-03 → 2018-08-09 (-25d) | 1d? → 15d | 13900d → none | none → 281 |  |
| 283 | recommend activities for community organizing | 2018-09-03 → 2018-08-10 (-24d) |  | 1d? → 15d | 13900d → none | none → 282 |  |
| 284 | **develop guidelines for institutionalization of LEWC (2 sites)** | 2018-09-03 → 2018-05-24 (-102d) |  | 1d? → 70d |  |  |  |
| 285 | develop methods for crafing guidelines | 2018-09-03 → 2018-05-24 (-102d) | 2018-09-03 → 2018-07-19 (-46d) | 1d? → 40d | 13900d → 7000d |  |  |
| 286 | gather data (fieldwork) | 2018-09-03 → 2018-07-20 (-45d) | 2018-09-03 → 2018-08-09 (-25d) | 1d? → 15d | 13900d → none | none → 285 |  |
| 287 | develop guidelines for institutionalization of LEWC | 2018-09-03 → 2018-08-10 (-24d) |  | 1d? → 15d | 13900d → none | none → 286 |  |
| 288 | **Guidelines for developing contingency plans for DSL (barangay level)** | 2018-08-30 → 2018-06-22 (-69d) |  | 3d? → 50d |  |  |  |
| 289 | review literature on contingency plans | 2018-08-30 → 2018-06-22 (-69d) | 2018-08-30 → 2018-08-16 (-14d) | 1d? → 40d | 13700d → 9000d |  |  |
| 290 | draft guidelines for contingency plans | 2018-08-31 → 2018-08-17 (-14d) | 2018-08-31 → 2018-08-24 (-7d) | 1d? → 5d |  |  |  |
| 291 | approve guidelines for contingency plans | 2018-09-03 → 2018-08-28 (-6d) |  | 1d? → 5d |  |  |  |
| 292 | **Operations manual** | 2018-09-03 → 2018-08-20 (-14d) |  | 1d? → 9d |  |  |  |
| 293 | update EWS operations manual (1) | 2018-09-03 → 2018-08-20 (-14d) | 2018-09-03 → 2018-08-23 (-11d) | 1d? → 3d | 13900d → none | none → 138 | was named update EWS operations manual based on protocol (to MEAL) |

## Version 6 (saved 2018-01-08)

Note of the change: update EWI upto capable personnel

Last finish stays 2018-09-03.

Added:

| ID | Task | Duration | Start | Finish | Resources |
| --- | --- | --- | --- | --- | --- |
| 333 | combo training 3 (hazard monitoring, analysis, comm protocol) | 10d | 2018-02-08 | 2018-02-22 | training specialist 1; training specialist 2; training specialist 4 |

Changed:

| ID | Task | Start | Finish | Duration | Total float | Predecessors | Other |
| --- | --- | --- | --- | --- | --- | --- | --- |
| 1 | **Landslide risk information** | 2018-03-21 → 2018-02-08 (-41d) |  | 112d? → 140d? |  |  |  |
| 2 | **methods report (Hazards)** | 2018-05-21 → 2018-02-08 (-102d) |  | 73d? → 140d? |  |  |  |
| 5 | **slope stability models (FEM)** | 2018-06-25 → 2018-02-08 (-137d) |  | 49d → 140d |  |  |  |
| 14 | **slope stability models (LEM1)** | 2018-07-24 → 2018-02-08 (-166d) |  | 28d → 140d |  |  |  |
| 23 | **slope stability models (LEM2)** | 2018-07-24 → 2018-02-08 (-166d) |  | 28d → 140d |  |  |  |
| 32 | **runout model 1** | 2018-07-10 → 2018-02-08 (-152d) |  | 38d → 140d |  |  |  |
| 40 | **runout model 2** | 2018-07-17 → 2018-02-08 (-159d) |  | 33d → 140d |  |  |  |
| 48 | **threshold model 1** | 2018-05-21 → 2018-02-08 (-102d) |  | 42d → 109d |  |  |  |
| 56 | **threshold model 2** | 2018-05-21 → 2018-02-08 (-102d) |  | 42d → 109d |  |  |  |
| 64 | **threshold model 3** | 2018-05-21 → 2018-02-08 (-102d) |  | 42d → 109d |  |  |  |
| 72 | **threshold model 4** | 2018-05-21 → 2018-02-08 (-102d) |  | 42d → 109d |  |  |  |
| 80 | **threshold model 5** | 2018-05-21 → 2018-02-08 (-102d) |  | 42d → 109d |  |  |  |
| 88 | **threshold model 6** | 2018-05-21 → 2018-02-08 (-102d) |  | 42d → 109d |  |  |  |
| 97 | **methods report (C&V)** | 2018-05-31 → 2018-02-08 (-112d) |  | 65d → 140d |  |  |  |
| 98 | **method 1** | 2018-05-31 → 2018-02-08 (-112d) |  | 65d → 140d |  |  |  |
| 106 | **method 2** | 2018-05-31 → 2018-02-08 (-112d) |  | 65d → 140d |  |  |  |
| 114 | **methods report (Risk)** | 2018-03-21 → 2018-02-08 (-41d) |  | 112d → 140d |  |  |  |
| 120 | **per site landslide risk reports (focus sites)** | 2018-06-15 → 2018-02-08 (-127d) |  | 55d? → 140d? |  |  |  |
| 122 | **per site hazard reports (all sites)** | 2018-06-25 → 2018-02-08 (-137d) |  | 34d? → 125d? |  |  |  |
| 131 | **per site capacity and vulnerability reports (2 focus sites, Mindanao)** | 2018-06-15 → 2018-02-08 (-127d) |  | 40d → 125d |  |  |  |
| 135 | **"Alert protocol" -- essentually how risk knowledge informs early warning practice** | 2018-06-21 → 2018-02-08 (-133d) |  | 42d → 131d |  |  |  |
| 141 | **community reported data** |  | 2018-09-03 → 2018-05-09 (-117d) | 140d → 60d | none → 8000d |  |  |
| 188 | **gateway datalogger** |  | 2018-08-02 → 2018-05-09 (-85d) | 120d → 60d | none → 6000d |  |  |
| 191 | **router datalogger** |  | 2018-09-03 → 2018-03-22 (-165d) | 140d → 30d | none → 11000d |  |  |
| 204 | **stand alone datalogger** |  | 2018-08-02 → 2018-03-22 (-133d) | 120d → 30d | none → 9000d |  |  |
| 209 | **Data storage and management system** | 2018-05-14 → 2018-02-08 (-95d) |  | 52d → 114d |  |  |  |
| 226 | **alert generation module** | 2018-07-25 → 2018-02-08 (-167d) |  | 27d → 140d |  |  |  |
| 232 | **GSM module server** |  | 2018-08-02 → 2018-03-01 (-154d) | 120d? → 15d? | 2000d → 12500d |  |  |
| 239 | **chatterbox** | 2018-07-25 → 2018-02-08 (-167d) | 2018-09-03 → 2018-02-22 (-193d) | 27d? → 10d? | none → 13000d |  |  |
| 245 | **webcall** | 2018-03-28 → 2018-02-08 (-48d) | 2018-08-02 → 2018-07-27 (-6d) | 87d → 116d | none → 400d |  |  |
| 250 | **bulletin generator** |  | 2018-09-03 → 2018-02-14 (-201d) | 140d? → 5d? | none → 13500d |  |  |
| 256 | **Local Info system (ISD)** | 2018-02-23 → 2018-02-08 (-15d) |  | 130d → 140d |  |  |  |
| 276 | **Organized Local Early Warning Committee (LEWC)** | 2018-05-10 → 2018-02-08 (-91d) |  | 80d → 140d |  |  |  |
| 277 | **LEWC org structure and mission/vision (47 sites)** | 2018-05-10 → 2018-02-08 (-91d) |  | 80d → 140d |  |  |  |
| 280 | **Guidelines for community organizing (2 sites)** | 2018-05-24 → 2018-02-08 (-105d) |  | 70d → 140d |  |  |  |
| 284 | **develop guidelines for institutionalization of LEWC (2 sites)** | 2018-05-24 → 2018-02-08 (-105d) |  | 70d → 140d |  |  |  |
| 288 | **Guidelines for developing contingency plans for DSL (barangay level)** | 2018-06-22 → 2018-02-08 (-134d) |  | 50d → 140d |  |  |  |
| 296 | **Early warning information** | 2018-08-31 → 2018-02-08 (-204d) |  | 2d? → 140d? |  |  |  |
| 298 | **EWI support** | 2018-08-31 → 2018-02-08 (-204d) |  | 2d? → 140d? |  |  |  |
| 299 | **operational systems** | 2018-09-03 → 2018-02-08 (-207d) | 2018-09-03 → 2018-02-08 (-207d) |  | none → 13900d |  |  |
| 300 | **sensors and dataloggers** | 2018-09-03 → 2018-02-08 (-207d) | 2018-09-03 → 2018-02-08 (-207d) |  | none → 13900d |  |  |
| 308 | **central server (software)** | 2018-09-03 → 2018-02-08 (-207d) | 2018-09-03 → 2018-02-08 (-207d) |  | none → 13900d |  |  |
| 315 | **updated database** | 2018-09-03 → 2018-02-08 (-207d) | 2018-09-03 → 2018-02-08 (-207d) |  | none → 13900d |  |  |
| 317 | **parsed SMS** | 2018-09-03 → 2018-02-08 (-207d) | 2018-09-03 → 2018-02-08 (-207d) |  | none → 13900d |  |  |
| 319 | **capable personnel for monitoring and early warning** | 2018-08-31 → 2018-02-08 (-204d) |  | 2d? → 140d? |  |  |  |
| 320 | **develop training materials** | 2018-08-31 → 2018-02-08 (-204d) | 2018-08-31 → 2018-03-08 (-176d) | 1d? → 20d? | none → 11900d |  |  |
| 321 | hazard monitoring | 2018-08-31 → 2018-08-02 (-29d) |  | 1d? → 20d | 13800d → 11900d |  |  |
| 322 | analysis and validation | 2018-08-31 → 2018-08-02 (-29d) |  | 1d? → 20d | 13800d → 11900d |  |  |
| 323 | sensor maintenance |  |  |  |  |  | resources training specialist 1 → eletech 5 |
| 324 | communications protocol | 2018-08-31 → 2018-08-02 (-29d) |  | 1d? → 20d | 13800d → 11900d |  |  |
| 325 | **conduct EWS protocol trainings (internal)** |  |  |  |  | 320 → none |  |
| 326 | hazard monitoring |  |  | 1d? → 1d |  | none → 321 |  |
| 327 | analysis and validation |  |  | 1d? → 1d |  | none → 322 |  |
| 328 | sensor maintenance |  |  |  |  | none → 323 |  |
| 329 | communications protocol |  |  | 1d? → 1d |  | none → 324 |  |
| 330 | **conduct EWS protocol trainings (external)** | 2018-09-03 → 2018-02-08 (-207d) | 2018-09-03 → 2018-02-22 (-193d) | 1d? → 10d? | none → 13000d | 320 → none |  |
| 331 | combo training 1 (hazard monitoring, analysis, comm protocol) | 2018-09-03 → 2018-02-08 (-207d) | 2018-09-03 → 2018-02-22 (-193d) | 1d? → 10d | none → 13000d |  | was named hazard monitoring; constraint as late as possible → none; resources training specialist 2 → training specialist 1; training specialist 2; training specialist 4 |
| 332 | combo training 2 (hazard monitoring, analysis, comm protocol) | 2018-09-03 → 2018-02-08 (-207d) | 2018-09-03 → 2018-02-22 (-193d) | 1d? → 10d | none → 13000d |  | was named analysis and validation; constraint as late as possible → none; resources training specialist 2 → training specialist 1; training specialist 2; training specialist 4 |
| 334 | combo training n (hazard monitoring, analysis, comm protocol) | 2018-09-03 → 2018-02-08 (-207d) | 2018-09-03 → 2018-02-22 (-193d) | 1d? → 10d | none → 13000d |  | was named communications protocol; constraint as late as possible → none; resources training specialist 2 → training specialist 1; training specialist 2; training specialist 4 |
| 335 | sensor maintenance |  |  |  | none → 13900d |  | resources training specialist 2 → training specialist 3 |
| 336 | **Strategic communications** | 2018-08-30 → 2018-02-08 (-203d) |  | 3d? → 140d? |  |  |  |
| 350 | **standard documentation and storage** | 2018-08-31 → 2018-08-30 (-1d) |  | 2d? → 3d? |  |  |  |
| 353 | **PLAA** | 2018-09-03 → 2018-08-30 (-4d) |  | 1d → 3d |  |  |  |
| 360 | **outcome-impact** | 2018-09-03 → 2018-08-30 (-4d) |  | 1d → 3d |  |  |  |
| 363 | **administrative process** | 2018-09-03 → 2018-08-30 (-4d) |  | 1d → 3d |  |  |  |
| 370 | **stakeholder concerns** | 2018-09-03 → 2018-08-30 (-4d) | 2018-09-03 → 2018-08-30 (-4d) |  | none → 250d |  |  |
| 374 | **data gathering** |  | 2018-09-03 → 2018-04-02 (-154d) | 140d? → 35d? | none → 10500d |  |  |
