# Dynaslope2018

How a schedule from MS Project XML changed from version to version. A marks actual dates.

## Version 1 (saved 2018-01-08)

Note of the change: add xml version of project plan

| ID | WBS | Task | Duration | Start | Finish | Predecessors | Total float | Constraint |
| --- | --- | --- | --- | --- | --- | --- | --- | --- |
| 1 | 1 | **Landslide risk information** | 112d? | 2018-03-21 | 2018-09-03 |  |  |  |
| 2 | 1.1 | **methods report (Hazards)** | 73d? | 2018-05-21 | 2018-09-03 |  |  |  |
| 3 |  | MoMs | 1d? | 2018-09-03 | 2018-09-03 |  | 13900d | as late as possible |
| 4 |  | study surficial displacement behaviour | 1d? | 2018-09-03 | 2018-09-03 |  | 13900d | as late as possible |
| 5 | 1.1.3 | **slope stability models (FEM)** | 49d | 2018-06-25 | 2018-09-03 |  |  |  |
| 6 |  | review related literature | 10d | 2018-06-25 | 2018-07-06 |  | 9100d | as late as possible |
| 7 |  | develop prototype | 5d | 2018-07-09 | 2018-07-13 | 6 |  | as late as possible |
| 8 |  | test model with monitoring data | 20d | 2018-07-16 | 2018-08-10 | 7 |  | as late as possible |
| 9 |  | field data gathering | 15d | 2018-07-23 | 2018-08-10 | 7 | 500d | as late as possible |
| 10 |  | evaluate model (report as PI of slope stab model) | 4d | 2018-08-13 | 2018-08-16 | 8, 9 |  | as late as possible |
| 11 |  | write report | 5d | 2018-08-17 | 2018-08-24 | 10 |  | as late as possible |
| 12 |  | develop training materials | 3d | 2018-08-28 | 2018-08-30 | 11 |  | as late as possible |
| 13 |  | conduct training | 2d | 2018-08-31 | 2018-09-03 | 12 |  | as late as possible |
| 14 | 1.1.4 | **slope stability models (LEM1)** | 28d | 2018-07-24 | 2018-09-03 |  |  |  |
| 15 |  | review related literature | 5d | 2018-07-24 | 2018-07-30 |  | 11200d | as late as possible |
| 16 |  | develop prototype | 5d | 2018-07-31 | 2018-08-06 | 15 |  | as late as possible |
| 17 |  | test model with monitoring data | 5d | 2018-08-07 | 2018-08-13 | 16, 213 |  | as late as possible |
| 18 |  | field data gathering | 15d | 2018-08-10 | 2018-09-03 | 16 | 300d | as late as possible |
| 19 |  | evaluate model (report as PI of slope stab model) | 3d | 2018-08-14 | 2018-08-16 | 17 |  | as late as possible |
| 20 |  | write report | 5d | 2018-08-17 | 2018-08-24 | 19 |  | as late as possible |
| 21 |  | develop training materials | 3d | 2018-08-28 | 2018-08-30 | 20 |  | as late as possible |
| 22 |  | conduct training | 2d | 2018-08-31 | 2018-09-03 | 21 |  | as late as possible |
| 23 | 1.1.5 | **slope stability models (LEM2)** | 28d | 2018-07-24 | 2018-09-03 |  |  |  |
| 24 |  | review related literature | 5d | 2018-07-24 | 2018-07-30 |  | 11200d | as late as possible |
| 25 |  | develop prototype | 5d | 2018-07-31 | 2018-08-06 | 24 |  | as late as possible |
| 26 |  | test model with monitoring data | 5d | 2018-08-07 | 2018-08-13 | 25, 213 |  | as late as possible |
| 27 |  | field data gathering | 15d | 2018-08-10 | 2018-09-03 | 25 | 300d | as late as possible |
| 28 |  | evaluate model (report as PI of slope stab model) | 3d | 2018-08-14 | 2018-08-16 | 26 |  | as late as possible |
| 29 |  | write report | 5d | 2018-08-17 | 2018-08-24 | 28 |  | as late as possible |
| 30 |  | develop training materials | 3d | 2018-08-28 | 2018-08-30 | 29 |  | as late as possible |
| 31 |  | conduct training | 2d | 2018-08-31 | 2018-09-03 | 30 |  | as late as possible |
| 32 | 1.1.6 | **runout model 1** | 38d | 2018-07-10 | 2018-09-03 |  |  |  |
| 33 |  | review related literature | 10d | 2018-07-10 | 2018-07-23 |  | 10200d | as late as possible |
| 34 |  | develop prototype | 10d | 2018-07-24 | 2018-08-06 | 33 |  | as late as possible |
| 35 |  | test model with monitoring data | 5d | 2018-08-07 | 2018-08-13 | 34, 213 |  | as late as possible |
| 36 |  | evaluate model (report as PI of runout model) | 3d | 2018-08-14 | 2018-08-16 | 35 |  | as late as possible |
| 37 |  | write report | 5d | 2018-08-17 | 2018-08-24 | 36 |  | as late as possible |
| 38 |  | develop training materials | 3d | 2018-08-28 | 2018-08-30 | 37 |  | as late as possible |
| 39 |  | conduct training | 2d | 2018-08-31 | 2018-09-03 | 38 |  | as late as possible |
| 40 | 1.1.7 | **runout model 2** | 33d | 2018-07-17 | 2018-09-03 |  |  |  |
| 41 |  | review related literature | 5d | 2018-07-17 | 2018-07-23 |  | 10700d | as late as possible |
| 42 |  | develop prototype | 10d | 2018-07-24 | 2018-08-06 | 41 |  | as late as possible |
| 43 |  | test model with monitoring data | 5d | 2018-08-07 | 2018-08-13 | 42, 213 |  | as late as possible |
| 44 |  | evaluate model (report as PI of runout model) | 3d | 2018-08-14 | 2018-08-16 | 43 |  | as late as possible |
| 45 |  | write report | 5d | 2018-08-17 | 2018-08-24 | 44 |  | as late as possible |
| 46 |  | develop training materials | 3d | 2018-08-28 | 2018-08-30 | 45 |  | as late as possible |
| 47 |  | conduct training | 2d | 2018-08-31 | 2018-09-03 | 46 |  | as late as possible |
| 48 | 1.1.8 | **threshold model 1** | 42d | 2018-05-21 | 2018-07-18 |  |  |  |
| 49 |  | review related literature | 5d | 2018-05-21 | 2018-05-25 |  | 6700d | as late as possible |
| 50 |  | develop prototype | 20d | 2018-05-28 | 2018-06-25 | 49 |  | as late as possible |
| 51 |  | implement model alongside operations | 10d | 2018-06-26 | 2018-07-09 | 50, 213 |  | as late as possible |
| 52 |  | evaluate model (report as PI of threshold model) | 1d | 2018-07-10 | 2018-07-10 | 51, 96 |  | as late as possible |
| 53 |  | write report | 4d | 2018-07-11 | 2018-07-16 | 52 |  | as late as possible |
| 54 |  | develop training materials | 1d | 2018-07-17 | 2018-07-17 | 53 |  | as late as possible |
| 55 |  | conduct training | 1d | 2018-07-18 | 2018-07-18 | 54 |  | as late as possible |
| 56 | 1.1.9 | **threshold model 2** | 42d | 2018-05-21 | 2018-07-18 |  |  |  |
| 57 |  | review related literature | 5d | 2018-05-21 | 2018-05-25 |  | 6700d | as late as possible |
| 58 |  | develop prototype | 20d | 2018-05-28 | 2018-06-25 | 57 |  | as late as possible |
| 59 |  | implement model alongside operations | 10d | 2018-06-26 | 2018-07-09 | 58, 213 |  | as late as possible |
| 60 |  | evaluate model (report as PI of threshold model) | 1d | 2018-07-10 | 2018-07-10 | 59, 96 |  | as late as possible |
| 61 |  | write report | 4d | 2018-07-11 | 2018-07-16 | 60 |  | as late as possible |
| 62 |  | develop training materials | 1d | 2018-07-17 | 2018-07-17 | 61 |  | as late as possible |
| 63 |  | conduct training | 1d | 2018-07-18 | 2018-07-18 | 62 |  | as late as possible |
| 64 | 1.1.10 | **threshold model 3** | 42d | 2018-05-21 | 2018-07-18 |  |  |  |
| 65 |  | review related literature | 5d | 2018-05-21 | 2018-05-25 |  | 6700d | as late as possible |
| 66 |  | develop prototype | 20d | 2018-05-28 | 2018-06-25 | 65 |  | as late as possible |
| 67 |  | implement model alongside operations | 10d | 2018-06-26 | 2018-07-09 | 66, 213 |  | as late as possible |
| 68 |  | evaluate model (report as PI of threshold model) | 1d | 2018-07-10 | 2018-07-10 | 67, 96 |  | as late as possible |
| 69 |  | write report | 4d | 2018-07-11 | 2018-07-16 | 68 |  | as late as possible |
| 70 |  | develop training materials | 1d | 2018-07-17 | 2018-07-17 | 69 |  | as late as possible |

| ID | WBS | Task | Duration | Start | Finish | Predecessors | Total float | Constraint |
| --- | --- | --- | --- | --- | --- | --- | --- | --- |
| 71 |  | conduct training | 1d | 2018-07-18 | 2018-07-18 | 70 |  | as late as possible |
| 72 | 1.1.11 | **threshold model 4** | 42d | 2018-05-21 | 2018-07-18 |  |  |  |
| 73 |  | review related literature | 5d | 2018-05-21 | 2018-05-25 |  | 6700d | as late as possible |
| 74 |  | develop prototype | 20d | 2018-05-28 | 2018-06-25 | 73 |  | as late as possible |
| 75 |  | implement model alongside operations | 10d | 2018-06-26 | 2018-07-09 | 213, 74 |  | as late as possible |
| 76 |  | evaluate model (report as PI of threshold model) | 1d | 2018-07-10 | 2018-07-10 | 96, 75 |  | as late as possible |
| 77 |  | write report | 4d | 2018-07-11 | 2018-07-16 | 76 |  | as late as possible |
| 78 |  | develop training materials | 1d | 2018-07-17 | 2018-07-17 | 77 |  | as late as possible |
| 79 |  | conduct training | 1d | 2018-07-18 | 2018-07-18 | 78 |  | as late as possible |
| 80 | 1.1.12 | **threshold model 5** | 42d | 2018-05-21 | 2018-07-18 |  |  |  |
| 81 |  | review related literature | 5d | 2018-05-21 | 2018-05-25 |  | 6700d | as late as possible |
| 82 |  | develop prototype | 20d | 2018-05-28 | 2018-06-25 | 81 |  | as late as possible |
| 83 |  | implement model alongside operations | 10d | 2018-06-26 | 2018-07-09 | 82, 213 |  | as late as possible |
| 84 |  | evaluate model (report as PI of threshold model) | 1d | 2018-07-10 | 2018-07-10 | 83, 96 |  | as late as possible |
| 85 |  | write report | 4d | 2018-07-11 | 2018-07-16 | 84 |  | as late as possible |
| 86 |  | develop training materials | 1d | 2018-07-17 | 2018-07-17 | 85 |  | as late as possible |
| 87 |  | conduct training | 1d | 2018-07-18 | 2018-07-18 | 86 |  | as late as possible |
| 88 | 1.1.13 | **threshold model 6** | 42d | 2018-05-21 | 2018-07-18 |  |  |  |
| 89 |  | review related literature | 5d | 2018-05-21 | 2018-05-25 |  | 6700d | as late as possible |
| 90 |  | develop prototype | 20d | 2018-05-28 | 2018-06-25 | 89 |  | as late as possible |
| 91 |  | implement model alongside operations | 10d | 2018-06-26 | 2018-07-09 | 90, 213 |  | as late as possible |
| 92 |  | evaluate model (report as PI of threshold model) | 1d | 2018-07-10 | 2018-07-10 | 91, 96 |  | as late as possible |
| 93 |  | write report | 4d | 2018-07-11 | 2018-07-16 | 92 |  | as late as possible |
| 94 |  | develop training materials | 1d | 2018-07-17 | 2018-07-17 | 93 |  | as late as possible |
| 95 |  | conduct training | 1d | 2018-07-18 | 2018-07-18 | 94 |  | as late as possible |
| 96 |  | develop threshold performance index | 20d | 2018-06-11 | 2018-07-09 |  | 8200d | as late as possible |
| 97 | 1.2 | **methods report (C&V)** | 65d | 2018-05-31 | 2018-09-03 |  |  |  |
| 98 | 1.2.1 | **method 1** | 65d | 2018-05-31 | 2018-09-03 |  |  |  |
| 99 |  | evaluate C&V frameworks (explore REDAS as one of the frameworks/models) | 20d | 2018-05-31 | 2018-06-28 |  | 7500d | as late as possible |
| 100 |  | development of C&V assessment modules | 20d | 2018-06-29 | 2018-07-26 | 99 |  | as late as possible |
| 101 |  | recommend C&V info system | 5d | 2018-08-28 | 2018-09-03 | 100 | 2000d | as late as possible |
| 102 |  | design database (linking to EWSL data storage and management)) | 5d | 2018-08-23 | 2018-08-30 | 99 | 3800d | as late as possible |
| 103 |  | write report | 2d | 2018-08-31 | 2018-09-03 | 102 |  | as late as possible |
| 104 |  | develop training materials | 20d | 2018-07-27 | 2018-08-24 | 100 |  | as late as possible |
| 105 |  | conduct training | 5d | 2018-08-28 | 2018-09-03 | 104 |  | as late as possible |
| 106 | 1.2.2 | **method 2** | 65d | 2018-05-31 | 2018-09-03 |  |  |  |
| 107 |  | evaluate C&V frameworks (explore REDAS as one of the frameworks/models) | 20d | 2018-05-31 | 2018-06-28 |  | 7500d | as late as possible |
| 108 |  | development of C&V assessment modules | 20d | 2018-06-29 | 2018-07-26 | 107 |  | as late as possible |
| 109 |  | recommend C&V info system | 5d | 2018-08-28 | 2018-09-03 | 108 | 2000d | as late as possible |
| 110 |  | design database (linking to EWSL data storage and management)) | 5d | 2018-08-23 | 2018-08-30 | 107 | 3800d | as late as possible |
| 111 |  | write report | 2d | 2018-08-31 | 2018-09-03 | 110 |  | as late as possible |
| 112 |  | develop training materials | 20d | 2018-07-27 | 2018-08-24 | 108 |  | as late as possible |
| 113 |  | conduct training | 5d | 2018-08-28 | 2018-09-03 | 112 |  | as late as possible |
| 114 | 1.3 | **methods report (Risk)** | 112d | 2018-03-21 | 2018-09-03 |  |  |  |
| 115 |  | evaluate frameworks for risk | 20d | 2018-03-21 | 2018-04-20 |  | 2800d | as late as possible |
| 116 |  | develop methods | 20d | 2018-04-23 | 2018-05-21 | 115 |  | as late as possible |
| 117 |  | write report | 2d | 2018-05-22 | 2018-05-23 | 116 |  | as late as possible |
| 118 |  | develop training materials | 10d | 2018-05-24 | 2018-06-06 | 117 |  | as late as possible |
| 119 |  | conduct training (NC 3) | 60d | 2018-06-07 | 2018-09-03 | 118 |  | as late as possible |
| 120 | 1.4 | **per site landslide risk reports (focus sites)** | 55d? | 2018-06-15 | 2018-09-03 |  |  |  |
| 121 |  | integration of hazard, capacity, and vulnerability information | 15d | 2018-08-10 | 2018-09-03 | 116, 130, 134 |  | as late as possible |
| 122 | 1.4.2 | **per site hazard reports (all sites)** | 34d? | 2018-06-25 | 2018-08-09 |  |  |  |
| 123 |  | conduct fieldwork (resurvey) | 30d | 2018-06-25 | 2018-08-03 |  | 9100d | as late as possible |
| 124 |  | consolidate field notes | 1d? | 2018-08-06 | 2018-08-06 | 123 |  | as late as possible |
| 125 |  | review and identify active sites | 1d? | 2018-08-03 | 2018-08-03 |  | 12000d | as late as possible |
| 126 |  | conduct quarterly survey (RTS/RTK/remap) | 1d? | 2018-08-06 | 2018-08-06 | 125 |  | as late as possible |
| 127 |  | analyze monitoring data (requires access to database) | 1d? | 2018-08-07 | 2018-08-07 | 124, 126 |  | as late as possible |
| 128 |  | update volume, depth, extent (using current models) | 1d? | 2018-08-08 | 2018-08-08 | 127 |  | as late as possible |
| 129 |  | update thresholds with monitoring data and performance index | 1d? | 2018-08-08 | 2018-08-08 |  | 12300d | as late as possible |
| 130 |  | update per site hazard reports (updated maps as PI) | 1d? | 2018-08-09 | 2018-08-09 | 129, 128 |  | as late as possible |
| 131 | 1.4.3 | **per site capacity and vulnerability reports (2 focus sites, Mindanao)** | 40d | 2018-06-15 | 2018-08-09 |  |  |  |
| 132 |  | conduct data gathering | 15d | 2018-06-15 | 2018-07-05 |  | 8500d | as late as possible |
| 133 |  | analyze data | 20d | 2018-07-06 | 2018-08-02 | 132 |  | as late as possible |
| 134 |  | update per site capacity and vulnerability reports | 5d | 2018-08-03 | 2018-08-09 | 133 |  | as late as possible |
| 135 | 1.5 | **"Alert protocol" -- essentually how risk knowledge informs early warning practice** | 42d | 2018-06-21 | 2018-08-17 |  |  |  |
| 136 |  | review of related literature | 20d | 2018-06-21 | 2018-07-18 |  | 8900d | as late as possible |
| 137 |  | review and evaluate current alert protocol | 20d | 2018-07-19 | 2018-08-15 | 136 |  | as late as possible |
| 138 |  | recomend alert protocol | 2d | 2018-08-16 | 2018-08-17 | 137 |  | as late as possible |
| 139 | 2 | **Early warning system for landslides** | 140d? | 2018-02-08 | 2018-09-03 |  |  |  |
| 140 | 2.1 | **Data gathering system** | 140d | 2018-02-08 | 2018-09-03 |  |  |  |

| ID | WBS | Task | Duration | Start | Finish | Predecessors | Total float | Constraint |
| --- | --- | --- | --- | --- | --- | --- | --- | --- |
| 141 | 2.1.1 | **community reported data** | 140d | 2018-02-08 | 2018-09-03 |  |  |  |
| 142 |  | provide initial performance metrics based on 2017 experience | 1d | 2018-02-08 | 2018-02-08 |  | 11300d |  |
| 143 |  | improve means of gathering surficial data (including transmission) | 40d | 2018-07-06 | 2018-09-03 | 257 | 8000d | as late as possible |
| 144 |  | develop on the ground validation of rainfall via sensors | 40d | 2018-07-06 | 2018-09-03 |  | 10000d | as late as possible |
| 145 | 2.1.2 | **tilt** | 140d | 2018-02-08 | 2018-09-03 |  |  |  |
| 146 |  | provide initial performance metrics based on 2017 experience | 1d | 2018-02-08 | 2018-02-08 |  | 11300d |  |
| 147 |  | characterize tilt sensor(angle range and accuracy of v3 tilt sensor) | 10d | 2018-02-08 | 2018-02-22 |  | 13000d |  |
| 148 |  | develop tilt sensor feature 1(improve angle range, accuracy,packaging,coms) | 20d | 2018-02-08 | 2018-03-08 |  | 12000d |  |
| 149 |  | develop tilt sensor feature 2(improve angle range, accuracy,packaging,coms) | 20d | 2018-02-08 | 2018-03-08 |  | 12000d |  |
| 150 |  | prepare manufacturing documents (project to phivolcs --admin heavy task ito) | 20d | 2018-02-08 | 2018-03-08 |  | 12000d |  |
| 151 | 2.1.2.6 | **manufacturing monitoring** | 140d | 2018-02-08 | 2018-09-03 |  |  |  |
| 152 |  | develop functionality tests | 10d | 2018-02-08 | 2018-02-22 |  |  |  |
| 153 |  | manufacture | 120d | 2018-02-23 | 2018-08-16 | 152 |  |  |
| 154 |  | troubleshoot manufacturing issues | 120d | 2018-02-23 | 2018-08-16 | 152 | 1000d |  |
| 155 |  | evaluate sample boards | 10d | 2018-08-17 | 2018-09-03 | 153 |  |  |
| 156 |  | develop and implement filters | 8d | 2018-02-08 | 2018-02-20 |  | 13200d |  |
| 157 |  | deployment of new tilt sensors | 5d | 2018-02-08 | 2018-02-14 |  | 13500d |  |
| 158 | 2.1.3 | **soms** | 58d | 2018-02-08 | 2018-05-07 |  | 8200d |  |
| 159 |  | provide initial performance metrics based on 2017 experience | 1d | 2018-02-08 | 2018-02-08 |  | 11300d |  |
| 160 |  | soms characterization 1 (gravimetric site-specific) | 20d | 2018-02-08 | 2018-03-08 |  | 12000d |  |
| 161 |  | soms characterization 2 (borehole infiltration versus non-borehole infiltration) | 10d | 2018-02-08 | 2018-02-22 |  | 13000d |  |
| 162 |  | soms characterization 3 (rainfall-soil moisture correlation with visual water infiltration) | 5d | 2018-02-08 | 2018-02-14 |  | 13500d |  |
| 163 |  | improve soms probe and its orientation | 20d | 2018-02-08 | 2018-03-08 |  | 8200d |  |
| 164 |  | develop new soil moisture sensor (improve accuracy, packaging, coms) prototype | 20d | 2018-03-09 | 2018-04-10 | 163 | 8200d |  |
| 165 |  | deploy new soms | 5d | 2018-04-11 | 2018-04-17 | 164 | 8200d |  |
| 166 |  | develop filter | 8d | 2018-04-18 | 2018-04-27 | 165 | 8200d |  |
| 167 |  | implement filter | 5d | 2018-04-30 | 2018-05-07 | 166 | 8200d |  |
| 168 | 2.1.4 | **uts-ext** | 140d | 2018-02-08 | 2018-09-03 |  |  |  |
| 169 |  | provide initial performance metrics based on 2017 experience | 1d | 2018-02-08 | 2018-02-08 |  | 11300d |  |
| 170 |  | char-dev-dep | 80d | 2018-03-09 | 2018-07-05 |  | 2000d | as late as possible |
| 171 |  | develop filter | 30d | 2018-07-06 | 2018-08-16 | 170 |  | as late as possible |
| 172 |  | implement filter | 10d | 2018-08-17 | 2018-09-03 | 171 |  | as late as possible |
| 173 | 2.1.5 | **lidar-ext** | 140d | 2018-02-08 | 2018-09-03 |  |  |  |
| 174 |  | provide initial performance metrics based on 2017 experience | 1d | 2018-02-08 | 2018-02-08 |  | 11300d |  |
| 175 |  | char-dev-dep | 80d | 2018-03-09 | 2018-07-05 |  | 2000d | as late as possible |
| 176 |  | develop filter | 30d | 2018-07-06 | 2018-08-16 | 175 |  | as late as possible |
| 177 |  | implement filter | 10d | 2018-08-17 | 2018-09-03 | 176 |  | as late as possible |
| 178 | 2.1.6 | **rain gauge** | 140d | 2018-02-08 | 2018-09-03 |  |  |  |
| 179 |  | provide initial performance metrics based on 2017 experience | 1d | 2018-02-08 | 2018-02-08 |  | 11300d |  |
| 180 |  | char-dev-dep | 40d | 2018-06-07 | 2018-08-02 |  | 8000d | as late as possible |
| 181 |  | develop filter | 15d | 2018-08-03 | 2018-08-24 | 180 |  | as late as possible |
| 182 |  | implement filter | 5d | 2018-08-28 | 2018-09-03 | 181 |  | as late as possible |
| 183 | 2.1.7 | **piezometer** | 140d | 2018-02-08 | 2018-09-03 |  |  |  |
| 184 |  | provide initial performance metrics based on 2017 experience | 1d | 2018-02-08 | 2018-02-08 |  | 11300d |  |
| 185 |  | char-dev-dep | 20d | 2018-07-06 | 2018-08-02 |  | 10000d | as late as possible |
| 186 |  | develop filter | 10d | 2018-08-03 | 2018-08-16 | 185 |  | as late as possible |
| 187 |  | implement filter | 10d | 2018-08-17 | 2018-09-03 | 186 |  | as late as possible |
| 188 | 2.1.8 | **gateway datalogger** | 120d | 2018-02-08 | 2018-08-02 |  |  |  |
| 189 |  | provide initial performance metrics based on 2017 experience | 1d | 2018-02-08 | 2018-02-08 |  | 11300d |  |
| 190 |  | char-dev-dep | 60d | 2018-05-10 | 2018-08-02 |  | 6000d | as late as possible |
| 191 | 2.1.9 | **router datalogger** | 140d | 2018-02-08 | 2018-09-03 |  |  |  |
| 192 |  | provide initial performance metrics based on 2017 experience | 1d | 2018-02-08 | 2018-02-08 |  | 11300d |  |
| 193 |  | char-dev-dep | 30d | 2018-07-20 | 2018-09-03 |  | 11000d | as late as possible |
| 194 | 2.1.10 | **sensor datalogger** | 48d | 2018-02-08 | 2018-04-20 |  | 9200d |  |
| 195 |  | provide initial performance metrics based on 2017 experience | 1d | 2018-02-08 | 2018-02-08 |  | 11300d |  |
| 196 |  | develop sensor datalogger feature 1( rtc, low-power, xbee interface, bluetooth interface) | 10d | 2018-02-08 | 2018-02-22 |  | 13000d |  |
| 197 |  | develop sensor datalogger feature 2( rtc, low-power, xbee interface, bluetooth interface) | 10d | 2018-02-08 | 2018-02-22 |  | 13000d |  |
| 198 |  | prepare manufacturing documents | 20d | 2018-02-08 | 2018-03-08 |  | 12000d |  |
| 199 | 2.1.10.5 | **manufacturing monitoring** | 48d | 2018-02-08 | 2018-04-20 |  | 9200d |  |
| 200 |  | develop functionality tests | 3d | 2018-02-08 | 2018-02-12 |  | 9200d |  |
| 201 |  | manufacture | 40d | 2018-02-13 | 2018-04-13 | 200 | 9200d |  |
| 202 |  | troubleshoot manufacturing issues | 40d | 2018-02-13 | 2018-04-13 | 200 | 9700d |  |
| 203 |  | evaluate sample boards | 5d | 2018-04-16 | 2018-04-20 | 201 | 9200d |  |
| 204 | 2.1.11 | **stand alone datalogger** | 120d | 2018-02-08 | 2018-08-02 |  |  |  |
| 205 |  | provide initial performance metrics based on 2017 experience | 1d | 2018-02-08 | 2018-02-08 |  | 11300d |  |
| 206 |  | char-dev-dep | 30d | 2018-06-22 | 2018-08-02 |  | 9000d | as late as possible |
| 207 | 2.2 | **SMS parsing system for new data structures** | 20d | 2018-08-03 | 2018-09-03 |  |  |  |
| 208 |  | develop sms parsing system | 20d | 2018-08-03 | 2018-09-03 | 190, 206 |  | as late as possible |
| 209 | 2.3 | **Data storage and management system** | 52d | 2018-05-14 | 2018-07-25 |  |  |  |
| 210 |  | develop new structure for storage and management | 20d | 2018-05-14 | 2018-06-08 |  | 6200d | as late as possible |

| ID | WBS | Task | Duration | Start | Finish | Predecessors | Total float | Constraint |
| --- | --- | --- | --- | --- | --- | --- | --- | --- |
| 211 |  | develop automated backup | 10d | 2018-07-05 | 2018-07-18 | 210 | 1700d | as late as possible |
| 212 |  | recommend performance metrics | 5d | 2018-07-19 | 2018-07-25 | 211 |  | as late as possible |
| 213 |  | develop data access for risk assessment | 10d | 2018-06-11 | 2018-06-25 | 210 |  | as late as possible |
| 214 | 2.4 | **Data analysis system** | 140d? | 2018-02-08 | 2018-09-03 |  |  |  |
| 215 | 2.4.1 | **threshold scripts** | 1d | 2018-07-19 | 2018-07-19 |  |  |  |
| 216 |  | implement thresholds | 1d | 2018-07-19 | 2018-07-19 | 55, 63, 71, 79, 87, 95 |  | as late as possible |
| 217 | 2.4.2 | **visualization scripts** | 140d? | 2018-02-08 | 2018-09-03 |  |  |  |
| 218 |  | research data visualization concepts (inc. hazard concepts) | 10d | 2018-07-06 | 2018-07-19 |  | 10000d | as late as possible |
| 219 |  | develop new web charts | 30d | 2018-07-20 | 2018-09-03 | 216, 218 |  |  |
| 220 |  | improvement of existing web charts | 1d? | 2018-09-03 | 2018-09-03 |  | 13900d | as late as possible |
| 221 |  | improvement of webchart generation | 1d? | 2018-09-03 | 2018-09-03 |  | 13900d | as late as possible |
| 222 |  | provide initial performance metrics based on 2017 experience | 1d | 2018-02-08 | 2018-02-08 |  | 13900d |  |
| 223 |  | recommend performance metrics | 1d | 2018-07-25 | 2018-07-25 |  | 11300d | as late as possible |
| 224 |  | draft process profile (recomm to automation integration) | 2d | 2018-08-01 | 2018-08-02 |  | 11800d | as late as possible |
| 225 | 2.5 | **Dissemination system** | 140d? | 2018-02-08 | 2018-09-03 |  |  |  |
| 226 | 2.5.1 | **alert generation module** | 27d | 2018-07-25 | 2018-09-03 |  |  |  |
| 227 |  | create modularized infrastructure for different operational triggers | 5d | 2018-08-28 | 2018-09-03 |  | 13500d | as late as possible |
| 228 |  | create "special cases" tables (e.g., Puguis) | 5d | 2018-08-23 | 2018-08-30 |  | 13300d | as late as possible |
| 229 |  | implement alert protocol (trigger to alert) revisions | 2d | 2018-08-31 | 2018-09-03 | 138, 228 |  | as late as possible |
| 230 |  | recommend performance metrics (in relation to automation) | 1d | 2018-07-25 | 2018-07-25 |  | 11300d | as late as possible |
| 231 |  | draft process profile (recomm to automation integration) | 2d | 2018-08-01 | 2018-08-02 |  | 11800d | as late as possible |
| 232 | 2.5.2 | **GSM module server** | 120d? | 2018-02-08 | 2018-08-02 |  | 2000d |  |
| 233 | 2.5.2.1 | **develop new GSM module server features** | 15d | 2018-02-08 | 2018-03-01 |  | 12500d |  |
| 234 |  | develop power autonomy | 15d | 2018-02-08 | 2018-03-01 |  | 9900d |  |
| 235 |  | develop multiple gsm module hardware | 15d | 2018-02-08 | 2018-03-01 |  | 12500d |  |
| 236 |  | implement new feature requests | 1d? | 2018-02-08 | 2018-02-08 |  | 13900d |  |
| 237 |  | recommend performance metrics (in relation to automation) | 1d | 2018-07-25 | 2018-07-25 |  | 11300d | as late as possible |
| 238 |  | draft process profile (recomm to automation integration) | 2d | 2018-08-01 | 2018-08-02 |  | 11800d | as late as possible |
| 239 | 2.5.3 | **chatterbox** | 27d? | 2018-07-25 | 2018-09-03 |  |  |  |
| 240 |  | revise scripts for SMS generation and sending (automation?) | 10d | 2018-08-17 | 2018-09-03 |  | 13000d | as late as possible |
| 241 |  | implement feature requests | 1d? | 2018-09-03 | 2018-09-03 |  | 13900d | as late as possible |
| 242 |  | improve performance | 1d? | 2018-09-03 | 2018-09-03 |  | 13900d | as late as possible |
| 243 |  | recommend performance metrics (in relation to automation) | 1d | 2018-07-25 | 2018-07-25 |  | 11300d | as late as possible |
| 244 |  | draft process profile (recomm to automation integration) | 2d | 2018-08-01 | 2018-08-02 |  | 11800d | as late as possible |
| 245 | 2.5.4 | **webcall** | 87d | 2018-03-28 | 2018-08-02 |  |  |  |
| 246 |  | acquire, implement hardware | 60d | 2018-03-28 | 2018-06-26 |  | 3300d | as late as possible |
| 247 |  | develop/integrate software | 20d | 2018-06-27 | 2018-07-24 | 246 |  | as late as possible |
| 248 |  | recommend performance metrics (in relation to automation) | 1d | 2018-07-25 | 2018-07-25 | 247 |  | as late as possible |
| 249 |  | draft process profile (recomm to automation integration) | 2d | 2018-08-01 | 2018-08-02 | 248 | 400d | as late as possible |
| 250 | 2.5.5 | **bulletin generator** | 140d? | 2018-02-08 | 2018-09-03 |  |  |  |
| 251 |  | revise scripts for bulletin generation and sending (automation?) | 5d | 2018-08-28 | 2018-09-03 |  | 13500d | as late as possible |
| 252 |  | implement feature requests | 1d? | 2018-02-08 | 2018-02-08 |  | 13900d |  |
| 253 |  | improve performance | 1d? | 2018-09-03 | 2018-09-03 |  | 13900d | as late as possible |
| 254 |  | recommend performance metrics (in relation to automation) | 1d | 2018-07-25 | 2018-07-25 |  | 11300d | as late as possible |
| 255 |  | draft process profile (recomm to automation integration) | 2d | 2018-08-01 | 2018-08-02 |  | 11800d | as late as possible |
| 256 | 2.6 | **Local Info system (ISD)** | 130d | 2018-02-23 | 2018-09-03 |  |  |  |
| 257 |  | consolidate recommendations into ict specifications | 10d | 2018-02-23 | 2018-03-08 |  | 1000d | as late as possible |
| 258 |  | use case testing | 60d | 2018-06-07 | 2018-09-03 | 257 | 6000d | as late as possible |
| 259 |  | develop local codes updating system | 20d | 2018-08-03 | 2018-09-03 | 257 | 10000d | as late as possible |
| 260 |  | port ews-l modules | 120d | 2018-03-09 | 2018-09-03 | 257 |  | as late as possible |
| 261 | 2.7 | **Automation integration system** | 140d | 2018-02-08 | 2018-09-03 |  |  |  |
| 262 |  | automate recommended processes | 20d | 2018-08-03 | 2018-09-03 | 224, 231, 238, 244, 249, 255 |  | as late as possible |
| 263 |  | recommend performance metrics | 2.5d | 2018-02-08 | 2018-02-12 |  | 11150d |  |
| 264 | 2.8 | **Performance monitoring system of central system** | 140d? | 2018-02-08 | 2018-09-03 |  |  |  |
| 265 |  | consolidate recommendations for performance metrics | 1d? | 2018-07-26 | 2018-07-26 | 142, 146, 159, 169, 174, 179, 184, 189, 192, 195, 205, 212, 223, 230, 234, 237, 243, 248, 254, 263 |  | as late as possible |
| 266 |  | develop performance targets | 1d? | 2018-02-08 | 2018-02-08 |  | 13900d |  |
| 267 | 2.8.3 | **Performance monitoring system** | 25d? | 2018-07-27 | 2018-09-03 |  |  |  |
| 268 |  | develop PMS backbone stable version | 20d | 2018-07-27 | 2018-08-24 | 265 |  |  |
| 269 |  | maintain PMS | 1d? | 2018-08-28 | 2018-08-28 | 268 | 400d |  |
| 270 |  | develop agile PMS components | 1d? | 2018-08-28 | 2018-08-28 | 268 | 400d |  |
| 271 |  | develop generic visualization charts | 5d | 2018-08-28 | 2018-09-03 | 268 |  |  |
| 275 |  | establish baseline | 1d? | 2018-02-08 | 2018-02-08 |  | 13900d |  |
| 276 | 2.9 | **Organized Local Early Warning Committee (LEWC)** | 80d | 2018-05-10 | 2018-09-03 |  |  |  |
| 277 | 2.9.1 | **LEWC org structure and mission/vision (47 sites)** | 80d | 2018-05-10 | 2018-09-03 |  |  |  |
| 278 |  | prepare modules | 20d | 2018-05-10 | 2018-06-06 |  | 6000d | as late as possible |
| 279 |  | conduct training/ gather data | 60d | 2018-06-07 | 2018-09-03 | 278 |  | as late as possible |
| 280 | 2.9.2 | **Guidelines for community organizing (2 sites)** | 70d | 2018-05-24 | 2018-09-03 |  |  |  |
| 281 |  | develop methods for community organizing | 40d | 2018-05-24 | 2018-07-19 |  | 7000d | as late as possible |
| 282 |  | gather data (fieldwork) | 15d | 2018-07-20 | 2018-08-09 | 281 |  | as late as possible |
| 283 |  | recommend activities for community organizing | 15d | 2018-08-10 | 2018-09-03 | 282 |  | as late as possible |

| ID | WBS | Task | Duration | Start | Finish | Predecessors | Total float | Constraint |
| --- | --- | --- | --- | --- | --- | --- | --- | --- |
| 284 | 2.9.3 | **develop guidelines for institutionalization of LEWC (2 sites)** | 70d | 2018-05-24 | 2018-09-03 |  |  |  |
| 285 |  | develop methods for crafing guidelines | 40d | 2018-05-24 | 2018-07-19 |  | 7000d | as late as possible |
| 286 |  | gather data (fieldwork) | 15d | 2018-07-20 | 2018-08-09 | 285 |  | as late as possible |
| 287 |  | develop guidelines for institutionalization of LEWC | 15d | 2018-08-10 | 2018-09-03 | 286 |  | as late as possible |
| 288 | 2.10 | **Guidelines for developing contingency plans for DSL (barangay level)** | 50d | 2018-06-22 | 2018-09-03 |  |  |  |
| 289 |  | review literature on contingency plans | 40d | 2018-06-22 | 2018-08-16 |  | 9000d | as late as possible |
| 290 |  | draft guidelines for contingency plans | 5d | 2018-08-17 | 2018-08-24 | 289 |  | as late as possible |
| 291 |  | approve guidelines for contingency plans | 5d | 2018-08-28 | 2018-09-03 | 290 |  | as late as possible |
| 292 | 2.11 | **Operations manual** | 9d | 2018-08-20 | 2018-09-03 |  |  |  |
| 293 |  | update EWS operations manual (1) | 3d | 2018-08-20 | 2018-08-23 | 138 |  | as late as possible |
| 294 |  | update EWS operations manual (2) | 3d | 2018-08-24 | 2018-08-29 | 138, 293 |  |  |
| 295 |  | update EWS operations manual (3) | 3d | 2018-08-30 | 2018-09-03 | 138, 294 |  |  |
| 296 | 3 | **Early warning information** | 140d? | 2018-02-08 | 2018-09-03 |  |  |  |
| 297 |  | generate, review, and release EWI | 1d? | 2018-09-03 | 2018-09-03 |  | 13900d | as late as possible |
| 298 | 3.2 | **EWI support** | 140d? | 2018-02-08 | 2018-09-03 |  |  |  |
| 299 | 3.2.1 | **operational systems** | 1d? | 2018-09-03 | 2018-09-03 |  |  |  |
| 300 | 3.2.1.1 | **sensors and dataloggers** | 1d? | 2018-09-03 | 2018-09-03 |  |  |  |
| 301 |  | replace defective sensors and loggers | 1d? | 2018-09-03 | 2018-09-03 |  | 13900d | as late as possible |
| 302 |  | monitor sensor and datalogger health status | 1d? | 2018-09-03 | 2018-09-03 |  | 13900d | as late as possible |
| 303 |  | track maintenance activities | 1d? | 2018-09-03 | 2018-09-03 |  | 13900d | as late as possible |
| 304 |  | manage inventory | 1d? | 2018-09-03 | 2018-09-03 |  | 13900d | as late as possible |
| 305 |  | track PLAA events | 1d? | 2018-09-03 | 2018-09-03 |  | 13900d | as late as possible |
| 306 |  | track sensor events | 1d? | 2018-09-03 | 2018-09-03 |  | 13900d | as late as possible |
| 307 |  | field-based maintenance | 1d? | 2018-09-03 | 2018-09-03 |  | 13900d | as late as possible |
| 308 | 3.2.1.2 | **central server (software)** | 1d? | 2018-09-03 | 2018-09-03 |  |  |  |
| 309 |  | maintain data gathering system | 1d? | 2018-09-03 | 2018-09-03 |  | 13900d | as late as possible |
| 310 |  | maintain data storage and management system | 1d? | 2018-09-03 | 2018-09-03 |  | 13900d | as late as possible |
| 311 |  | maintain data analysis system | 1d? | 2018-09-03 | 2018-09-03 |  | 13900d | as late as possible |
| 312 |  | maintain info dissemination system | 1d? | 2018-09-03 | 2018-09-03 |  | 13900d | as late as possible |
| 313 |  | train staff for debugging | 0.5d? | 2018-09-03 | 2018-09-03 |  | 13950d | as late as possible |
| 314 |  | produce code and documentation standards | 1d? | 2018-09-03 | 2018-09-03 |  | 13900d | as late as possible |
| 315 | 3.2.2 | **updated database** | 1d? | 2018-09-03 | 2018-09-03 |  |  |  |
| 316 |  | maintain tables | 1d? | 2018-09-03 | 2018-09-03 |  | 13900d | as late as possible |
| 317 | 3.2.3 | **parsed SMS** | 1d? | 2018-09-03 | 2018-09-03 |  |  |  |
| 318 |  | maintain SMS parsing | 1d? | 2018-09-03 | 2018-09-03 |  | 13900d | as late as possible |
| 319 | 3.2.4 | **capable personnel for monitoring and early warning** | 140d? | 2018-02-08 | 2018-09-03 |  |  |  |
| 320 | 3.2.4.1 | **develop training materials** | 20d? | 2018-08-02 | 2018-08-31 |  |  |  |
| 321 |  | hazard monitoring | 20d | 2018-08-02 | 2018-08-31 |  | 11900d | as late as possible |
| 322 |  | analysis and validation | 20d | 2018-08-02 | 2018-08-31 |  | 11900d | as late as possible |
| 323 |  | sensor maintenance | 1d? | 2018-08-31 | 2018-08-31 |  | 13800d | as late as possible |
| 324 |  | communications protocol | 20d | 2018-08-02 | 2018-08-31 |  | 11900d | as late as possible |
| 325 | 3.2.4.2 | **conduct EWS protocol trainings (internal)** | 1d? | 2018-09-03 | 2018-09-03 |  |  |  |
| 326 |  | hazard monitoring | 1d | 2018-09-03 | 2018-09-03 | 321 |  | as late as possible |
| 327 |  | analysis and validation | 1d | 2018-09-03 | 2018-09-03 | 322 |  | as late as possible |
| 328 |  | sensor maintenance | 1d? | 2018-09-03 | 2018-09-03 | 323 |  | as late as possible |
| 329 |  | communications protocol | 1d | 2018-09-03 | 2018-09-03 | 324 |  | as late as possible |
| 330 | 3.2.4.3 | **conduct EWS protocol trainings (external)** | 140d? | 2018-02-08 | 2018-09-03 |  |  |  |
| 331 |  | combo training 1 (hazard monitoring, analysis, comm protocol) | 10d | 2018-02-08 | 2018-02-22 |  | 13000d |  |
| 332 |  | combo training 2 (hazard monitoring, analysis, comm protocol) | 10d | 2018-02-08 | 2018-02-22 |  | 13000d |  |
| 333 |  | combo training 3 (hazard monitoring, analysis, comm protocol) | 10d | 2018-02-08 | 2018-02-22 |  | 13000d |  |
| 334 |  | combo training n (hazard monitoring, analysis, comm protocol) | 10d | 2018-02-08 | 2018-02-22 |  | 13000d |  |
| 335 |  | sensor maintenance | 1d? | 2018-09-03 | 2018-09-03 |  | 13900d | as late as possible |
| 336 | 4 | **Strategic communications** | 3d? | 2018-08-30 | 2018-09-03 |  |  |  |
| 337 |  | research stakeholder info needs | 1d? | 2018-08-30 | 2018-08-30 |  | 13700d | as late as possible |
| 338 |  | research policy process | 1d? | 2018-09-03 | 2018-09-03 |  | 13900d | as late as possible |
| 339 |  | develop strategic comm plan | 1d? | 2018-08-31 | 2018-08-31 | 337 |  | as late as possible |
| 340 | 4.4 | **develop communication materials** | 1d? | 2018-09-03 | 2018-09-03 | 339 |  |  |
| 341 | 4.4.1 | **website** | 1d? | 2018-09-03 | 2018-09-03 |  |  |  |
| 342 |  | develop website content | 1d? | 2018-09-03 | 2018-09-03 |  |  | as late as possible |
| 343 |  | design website | 1d? | 2018-09-03 | 2018-09-03 |  |  | as late as possible |
| 344 |  | develop content management system | 1d? | 2018-09-03 | 2018-09-03 |  |  | as late as possible |
| 345 |  | develop non-website communications | 1d? | 2018-09-03 | 2018-09-03 |  | 13900d | as late as possible |
| 346 | 5 | **MEAL system** | 140d? | 2018-02-08 | 2018-09-03 |  |  |  |
| 347 |  | develop MEAL framework | 2d | 2018-08-22 | 2018-08-23 |  | 13200d | as late as possible |
| 348 |  | develop MEAL plan | 3d | 2018-08-24 | 2018-08-29 | 347 |  | as late as possible |
| 349 | 5.3 | **monitoring mechanisms** | 140d? | 2018-02-08 | 2018-09-03 |  |  |  |
| 350 | 5.3.1 | **standard documentation and storage** | 2d? | 2018-08-31 | 2018-09-03 |  |  |  |
| 351 |  | design documentation templates | 1d? | 2018-08-31 | 2018-08-31 | 348 | 100d | as late as possible |
| 352 |  | design repository system | 1d? | 2018-09-03 | 2018-09-03 | 351 |  | as late as possible |
| 353 | 5.3.2 | **PLAA** | 1d | 2018-09-03 | 2018-09-03 |  |  |  |

| ID | WBS | Task | Duration | Start | Finish | Predecessors | Total float | Constraint |
| --- | --- | --- | --- | --- | --- | --- | --- | --- |
| 354 |  | review current PLAA vis-a-vis MEAL plan | 0.5d | 2018-09-03 | 2018-09-03 | 348 | 200d | as late as possible |
| 355 |  | revise PLAA guidelines | 0.5d | 2018-09-03 | 2018-09-03 | 354 |  | as late as possible |
| 356 | 5.3.3 | **EWS-QA** | 140d | 2018-02-08 | 2018-09-03 |  |  |  |
| 357 |  | review current EWS-QA vis-a-vis MEAL plan | 0.5d | 2018-09-03 | 2018-09-03 | 348 | 200d | as late as possible |
| 358 |  | revise EWS-QA guidelines | 0.5d | 2018-09-03 | 2018-09-03 | 357 |  | as late as possible |
| 359 |  | revise tools for data gathering | 3d | 2018-02-08 | 2018-02-12 |  | 13700d |  |
| 360 | 5.3.4 | **outcome-impact** | 1d | 2018-09-03 | 2018-09-03 |  |  |  |
| 361 |  | review outcome-impact vis-a-vis MEAL plan | 0.5d | 2018-09-03 | 2018-09-03 | 348 | 200d | as late as possible |
| 362 |  | revise outcome-impact | 0.5d | 2018-09-03 | 2018-09-03 | 361 |  | as late as possible |
| 363 | 5.3.5 | **administrative process** | 1d | 2018-09-03 | 2018-09-03 |  |  |  |
| 364 |  | review admin process trackers vis-a-vis MEAL plan | 0.5d | 2018-09-03 | 2018-09-03 | 348 | 200d | as late as possible |
| 365 |  | revise admin process trackers | 0.5d | 2018-09-03 | 2018-09-03 | 364 |  | as late as possible |
| 366 | 5.3.6 | **project output** | 3d | 2018-08-30 | 2018-09-03 |  |  |  |
| 367 |  | develop team output tracker | 1d | 2018-08-30 | 2018-08-30 | 348 |  | as late as possible |
| 368 |  | develop individual output tracker | 1d | 2018-08-31 | 2018-08-31 | 348, 367 |  | as late as possible |
| 369 |  | develop individual capacity tracker | 1d | 2018-09-03 | 2018-09-03 | 348, 368 |  | as late as possible |
| 370 | 5.3.7 | **stakeholder concerns** | 0.5d | 2018-09-03 | 2018-09-03 |  |  |  |
| 371 |  | develop stakeholder concerns tracker | 0.5d | 2018-09-03 | 2018-09-03 | 348 | 250d | as late as possible |
| 374 | 5.4 | **data gathering** | 140d? | 2018-02-08 | 2018-09-03 |  |  |  |
| 375 |  | EWS-QA | 1d? | 2018-09-03 | 2018-09-03 |  | 13900d | as late as possible |
| 376 |  | PLAA (per site) | 35d | 2018-07-13 | 2018-09-03 |  | 10500d | as late as possible |
| 377 |  | outcome-iimpact | 1d? | 2018-09-03 | 2018-09-03 |  | 13900d | as late as possible |
| 378 |  | project output | 1d? | 2018-09-03 | 2018-09-03 |  | 13900d | as late as possible |
| 379 |  | stakeholder concerns | 1d? | 2018-09-03 | 2018-09-03 |  | 13900d | as late as possible |
| 380 |  | admin process | 1d? | 2018-02-08 | 2018-02-08 |  | 13900d |  |
| 381 |  | evaluate | 1d? | 2018-09-03 | 2018-09-03 |  | 13900d | as late as possible |
| 382 |  | provide recomms | 1d? | 2018-09-03 | 2018-09-03 |  | 13900d | as late as possible |
| 385 | 5.7 | **MEAL implem** | 3d? | 2018-08-30 | 2018-09-03 |  |  |  |
| 386 | 5.7.1 | **EWS-QA** | 3d? | 2018-08-30 | 2018-09-03 | 348 |  |  |
| 387 | 5.7.1.1 | **activity series 1** | 3d? | 2018-08-30 | 2018-09-03 |  |  |  |
| 388 |  | gather data | 1d? | 2018-08-30 | 2018-08-30 |  |  |  |
| 389 |  | analyze, evaluate data | 1d? | 2018-08-31 | 2018-08-31 | 388 |  |  |
| 390 |  | provide recommendations | 1d? | 2018-09-03 | 2018-09-03 | 389 |  |  |
| 391 | 5.7.2 | **PLAA** | 1d? | 2018-08-30 | 2018-08-30 | 348 | 200d |  |
| 392 | 5.7.2.1 | **activity series 1** | 1d? | 2018-08-30 | 2018-08-30 |  | 200d |  |
| 393 |  | gather data | 1d? | 2018-08-30 | 2018-08-30 |  | 200d |  |
| 394 |  | analyze, evaluate data | 1d? | 2018-08-30 | 2018-08-30 |  | 200d |  |
| 395 |  | provide recommendations | 1d? | 2018-08-30 | 2018-08-30 |  | 200d |  |
| 396 | 5.7.3 | **outcome-impact** | 1d? | 2018-08-30 | 2018-08-30 | 348 | 200d |  |
| 397 | 5.7.3.1 | **activity series 1** | 1d? | 2018-08-30 | 2018-08-30 |  | 200d |  |
| 398 |  | gather data | 1d? | 2018-08-30 | 2018-08-30 |  | 200d |  |
| 399 |  | analyze, evaluate data | 1d? | 2018-08-30 | 2018-08-30 |  | 200d |  |
| 400 |  | provide recommendations | 1d? | 2018-08-30 | 2018-08-30 |  | 200d |  |
| 401 | 5.7.4 | **project output** | 1d? | 2018-08-30 | 2018-08-30 | 348 | 200d |  |
| 402 | 5.7.4.1 | **activity series 1** | 1d? | 2018-08-30 | 2018-08-30 |  | 200d |  |
| 403 |  | gather data | 1d? | 2018-08-30 | 2018-08-30 |  | 200d |  |
| 404 |  | analyze, evaluate data | 1d? | 2018-08-30 | 2018-08-30 |  | 200d |  |
| 405 |  | provide recommendations | 1d? | 2018-08-30 | 2018-08-30 |  | 200d |  |
| 406 | 5.7.5 | **stakeholder concerns** | 1d? | 2018-08-30 | 2018-08-30 | 348 | 200d |  |
| 407 | 5.7.5.1 | **activity series 1** | 1d? | 2018-08-30 | 2018-08-30 |  | 200d |  |
| 408 |  | gather data | 1d? | 2018-08-30 | 2018-08-30 |  | 200d |  |
| 409 |  | analyze, evaluate data | 1d? | 2018-08-30 | 2018-08-30 |  | 200d |  |
| 410 |  | provide recommendations | 1d? | 2018-08-30 | 2018-08-30 |  | 200d |  |
| 411 | 5.7.6 | **admin process** | 1d? | 2018-08-30 | 2018-08-30 | 348 | 200d |  |
| 412 | 5.7.6.1 | **activity series 1** | 1d? | 2018-08-30 | 2018-08-30 |  | 200d |  |
| 413 |  | gather data | 1d? | 2018-08-30 | 2018-08-30 |  | 200d |  |
| 414 |  | analyze, evaluate data | 1d? | 2018-08-30 | 2018-08-30 |  | 200d |  |
| 415 |  | provide recommendations | 1d? | 2018-08-30 | 2018-08-30 |  | 200d |  |

## Version 2 (saved 2018-01-08)

Note of the change: update upto MEAL-PLAA

Last finish 2018-09-03 → 2018-09-04 (+1d).

Added:

| ID | Task | Duration | Start | Finish | Predecessors | Constraint | Resources |
| --- | --- | --- | --- | --- | --- | --- | --- |
| 341 | develop content management system (core) | 16d | 2018-08-13 | 2018-09-04 | 340 | as late as possible | web dev 1 |
| 347 | conduct training needs analysis | 1d | 2018-04-05 | 2018-04-06 | 346 |  |  |
| 348 | develop training plan | 2d | 2018-04-06 | 2018-04-10 | 347 |  |  |
| 384 | **site 1** | 18d | 2018-04-05 | 2018-05-01 |  |  |  |
| 385 | conduct sensor fieldwork - write report | 8d | 2018-04-05 | 2018-04-17 |  |  | eletech 1; eletech 2 |
| 386 | conduct landslide fieldwork - write report | 15d | 2018-04-05 | 2018-04-26 |  |  | geol 1; geotech 1 |
| 387 | conduct community fieldwork - write report | 15d | 2018-04-05 | 2018-04-26 |  |  | social scientist 1; social scientist 2 |
| 388 | review | 3d | 2018-04-26 | 2018-05-01 | 385, 386, 387 |  | MEAL officer 1; MEAL staff 1; MEAL staff 2 |
| 389 | **site 2** | 15d | 2018-05-01 | 2018-05-25 | 384 |  |  |
| 390 | conduct sensor fieldwork - write report | 6d | 2018-05-01 | 2018-05-11 |  |  | eletech 1; eletech 2 |
| 391 | conduct landslide fieldwork - write report | 12d | 2018-05-01 | 2018-05-22 |  |  | geol 1; geotech 1 |
| 392 | conduct community fieldwork - write report | 12d | 2018-05-01 | 2018-05-22 |  |  | social scientist 1; social scientist 2 |
| 393 | review | 3d | 2018-05-22 | 2018-05-25 | 390, 391, 392 |  | MEAL officer 1; MEAL staff 1; MEAL staff 2 |
| 394 | **site 3** | 16d | 2018-05-25 | 2018-06-20 | 389 |  |  |
| 395 | conduct sensor fieldwork - write report | 8d | 2018-05-25 | 2018-06-06 |  |  | eletech 1; eletech 2 |
| 396 | conduct landslide fieldwork - write report | 13d | 2018-05-25 | 2018-06-15 |  |  | geol 1; geotech 1 |
| 397 | conduct community fieldwork - write report | 13d | 2018-05-25 | 2018-06-15 |  |  | social scientist 1; social scientist 2 |
| 398 | review | 3d | 2018-06-15 | 2018-06-20 | 395, 396, 397 |  | MEAL officer 1; MEAL staff 1; MEAL staff 2 |
| 399 | **site 4** | 15d | 2018-06-20 | 2018-07-16 | 394 |  |  |
| 400 | conduct sensor fieldwork - write report | 8d | 2018-06-20 | 2018-07-02 |  |  | eletech 1; eletech 2 |
| 401 | conduct landslide fieldwork - write report | 12d | 2018-06-20 | 2018-07-11 |  |  | geol 1; geotech 1 |
| 402 | conduct community fieldwork - write report | 12d | 2018-06-20 | 2018-07-11 |  |  | social scientist 1; social scientist 2 |
| 403 | review | 3d | 2018-07-11 | 2018-07-16 | 400, 401, 402 |  | MEAL officer 1; MEAL staff 1; MEAL staff 2 |
| 404 | **site 5** | 17d | 2018-07-16 | 2018-08-09 | 399 |  |  |
| 405 | conduct sensor fieldwork - write report | 8d | 2018-07-16 | 2018-07-26 |  |  | eletech 1; eletech 2 |
| 406 | conduct landslide fieldwork - write report | 15d | 2018-07-16 | 2018-08-06 |  |  | geol 1; geotech 1 |
| 411 | conduct landslide fieldwork - write report | 15d | 2018-08-09 | 2018-08-30 |  |  | geol 1; geotech 1 |

Removed: 415 provide recommendations

Changed:

| ID | Task | Start | Finish | Duration | Total float |
| --- | --- | --- | --- | --- | --- |
| 1 | **Landslide risk information** | 2018-03-21 → 2018-05-03 (+43d) | 2018-09-03 → 2018-09-04 (+1d) | 112d? → 77d? |  |
| 2 | **methods report (Hazards)** | 2018-05-21 → 2018-06-12 (+22d) | 2018-09-03 → 2018-09-04 (+1d) | 73d? → 54d? |  |
| 3 | MoMs |  | 2018-09-03 → 2018-09-04 (+1d) |  | 13900d → 12750d |
| 4 | study surficial displacement behaviour |  | 2018-09-03 → 2018-09-04 (+1d) |  | 13900d → 12750d |
| 5 | **slope stability models (FEM)** | 2018-06-25 → 2018-07-05 (+10d) | 2018-09-03 → 2018-09-04 (+1d) | 49d → 40d |  |
| 6 | review related literature | 2018-06-25 → 2018-07-05 (+10d) | 2018-07-06 → 2018-07-16 (+10d) | 10d → 7d | 9100d → 8950d |
| 7 | develop prototype | 2018-07-09 → 2018-07-16 (+7d) | 2018-07-13 → 2018-07-23 (+10d) |  |  |
| 8 | test model with monitoring data | 2018-07-16 → 2018-07-23 (+7d) | 2018-08-10 → 2018-08-15 (+5d) | 20d → 17d |  |
| 9 | field data gathering | 2018-07-23 → 2018-07-30 (+7d) | 2018-08-10 → 2018-08-15 (+5d) | 15d → 9d |  |
| 10 | evaluate model (report as PI of slope stab model) | 2018-08-13 → 2018-08-15 (+2d) | 2018-08-16 → 2018-08-21 (+5d) |  |  |
| 11 | write report | 2018-08-17 → 2018-08-21 (+4d) | 2018-08-24 → 2018-08-28 (+4d) |  |  |
| 12 | develop training materials |  | 2018-08-30 → 2018-08-31 (+1d) |  |  |
| 13 | conduct training |  | 2018-09-03 → 2018-09-04 (+1d) |  |  |
| 14 | **slope stability models (LEM1)** | 2018-07-24 → 2018-07-26 (+2d) | 2018-09-03 → 2018-09-04 (+1d) | 28d → 25d |  |
| 15 | review related literature | 2018-07-24 → 2018-07-26 (+2d) | 2018-07-30 → 2018-08-02 (+3d) |  | 11200d → 10350d |
| 16 | develop prototype | 2018-07-31 → 2018-08-02 (+2d) | 2018-08-06 → 2018-08-09 (+3d) |  |  |
| 17 | test model with monitoring data | 2018-08-07 → 2018-08-09 (+2d) | 2018-08-13 → 2018-08-16 (+3d) |  |  |
| 18 | field data gathering | 2018-08-10 → 2018-08-13 (+3d) | 2018-09-03 → 2018-09-04 (+1d) |  | 300d → 200d |
| 19 | evaluate model (report as PI of slope stab model) | 2018-08-14 → 2018-08-16 (+2d) | 2018-08-16 → 2018-08-21 (+5d) |  |  |
| 20 | write report | 2018-08-17 → 2018-08-21 (+4d) | 2018-08-24 → 2018-08-28 (+4d) |  |  |
| 21 | develop training materials |  | 2018-08-30 → 2018-08-31 (+1d) |  |  |
| 22 | conduct training |  | 2018-09-03 → 2018-09-04 (+1d) |  |  |
| 23 | **slope stability models (LEM2)** | 2018-07-24 → 2018-07-26 (+2d) | 2018-09-03 → 2018-09-04 (+1d) | 28d → 25d |  |
| 24 | review related literature | 2018-07-24 → 2018-07-26 (+2d) | 2018-07-30 → 2018-08-02 (+3d) |  | 11200d → 10350d |
| 25 | develop prototype | 2018-07-31 → 2018-08-02 (+2d) | 2018-08-06 → 2018-08-09 (+3d) |  |  |
| 26 | test model with monitoring data | 2018-08-07 → 2018-08-09 (+2d) | 2018-08-13 → 2018-08-16 (+3d) |  |  |
| 27 | field data gathering | 2018-08-10 → 2018-08-13 (+3d) | 2018-09-03 → 2018-09-04 (+1d) |  | 300d → 200d |
| 28 | evaluate model (report as PI of slope stab model) | 2018-08-14 → 2018-08-16 (+2d) | 2018-08-16 → 2018-08-21 (+5d) |  |  |
| 29 | write report | 2018-08-17 → 2018-08-21 (+4d) | 2018-08-24 → 2018-08-28 (+4d) |  |  |
| 30 | develop training materials |  | 2018-08-30 → 2018-08-31 (+1d) |  |  |
| 31 | conduct training |  | 2018-09-03 → 2018-09-04 (+1d) |  |  |
| 32 | **runout model 1** | 2018-07-10 → 2018-07-12 (+2d) | 2018-09-03 → 2018-09-04 (+1d) | 38d → 35d |  |
| 33 | review related literature | 2018-07-10 → 2018-07-12 (+2d) | 2018-07-23 → 2018-07-26 (+3d) |  | 10200d → 9350d |
| 34 | develop prototype | 2018-07-24 → 2018-07-26 (+2d) | 2018-08-06 → 2018-08-09 (+3d) |  |  |
| 35 | test model with monitoring data | 2018-08-07 → 2018-08-09 (+2d) | 2018-08-13 → 2018-08-16 (+3d) |  |  |
| 36 | evaluate model (report as PI of runout model) | 2018-08-14 → 2018-08-16 (+2d) | 2018-08-16 → 2018-08-21 (+5d) |  |  |
| 37 | write report | 2018-08-17 → 2018-08-21 (+4d) | 2018-08-24 → 2018-08-28 (+4d) |  |  |
| 38 | develop training materials |  | 2018-08-30 → 2018-08-31 (+1d) |  |  |
| 39 | conduct training |  | 2018-09-03 → 2018-09-04 (+1d) |  |  |
| 40 | **runout model 2** | 2018-07-17 → 2018-07-19 (+2d) | 2018-09-03 → 2018-09-04 (+1d) | 33d → 30d |  |
| 41 | review related literature | 2018-07-17 → 2018-07-19 (+2d) | 2018-07-23 → 2018-07-26 (+3d) |  | 10700d → 9850d |
| 42 | develop prototype | 2018-07-24 → 2018-07-26 (+2d) | 2018-08-06 → 2018-08-09 (+3d) |  |  |
| 43 | test model with monitoring data | 2018-08-07 → 2018-08-09 (+2d) | 2018-08-13 → 2018-08-16 (+3d) |  |  |
| 44 | evaluate model (report as PI of runout model) | 2018-08-14 → 2018-08-16 (+2d) | 2018-08-16 → 2018-08-21 (+5d) |  |  |
| 45 | write report | 2018-08-17 → 2018-08-21 (+4d) | 2018-08-24 → 2018-08-28 (+4d) |  |  |
| 46 | develop training materials |  | 2018-08-30 → 2018-08-31 (+1d) |  |  |
| 47 | conduct training |  | 2018-09-03 → 2018-09-04 (+1d) |  |  |
| 48 | **threshold model 1** | 2018-05-21 → 2018-06-12 (+22d) | 2018-07-18 → 2018-07-31 (+13d) | 42d → 32d |  |
| 49 | review related literature | 2018-05-21 → 2018-06-12 (+22d) | 2018-05-25 → 2018-06-19 (+25d) |  | 6700d → 7450d |
| 50 | develop prototype | 2018-05-28 → 2018-06-19 (+22d) | 2018-06-25 → 2018-07-12 (+17d) | 20d → 17d |  |
| 51 | implement model alongside operations | 2018-06-26 → 2018-07-12 (+16d) | 2018-07-09 → 2018-07-20 (+11d) | 10d → 6d |  |
| 52 | evaluate model (report as PI of threshold model) | 2018-07-10 → 2018-07-20 (+10d) | 2018-07-10 → 2018-07-23 (+13d) |  |  |
| 53 | write report | 2018-07-11 → 2018-07-23 (+12d) | 2018-07-16 → 2018-07-27 (+11d) |  |  |
| 54 | develop training materials | 2018-07-17 → 2018-07-27 (+10d) | 2018-07-17 → 2018-07-30 (+13d) |  |  |
| 55 | conduct training | 2018-07-18 → 2018-07-30 (+12d) | 2018-07-18 → 2018-07-31 (+13d) |  |  |
| 56 | **threshold model 2** | 2018-05-21 → 2018-06-12 (+22d) | 2018-07-18 → 2018-07-31 (+13d) | 42d → 32d |  |
| 57 | review related literature | 2018-05-21 → 2018-06-12 (+22d) | 2018-05-25 → 2018-06-19 (+25d) |  | 6700d → 7450d |
| 58 | develop prototype | 2018-05-28 → 2018-06-19 (+22d) | 2018-06-25 → 2018-07-12 (+17d) | 20d → 17d |  |
| 59 | implement model alongside operations | 2018-06-26 → 2018-07-12 (+16d) | 2018-07-09 → 2018-07-20 (+11d) | 10d → 6d |  |
| 60 | evaluate model (report as PI of threshold model) | 2018-07-10 → 2018-07-20 (+10d) | 2018-07-10 → 2018-07-23 (+13d) |  |  |
| 61 | write report | 2018-07-11 → 2018-07-23 (+12d) | 2018-07-16 → 2018-07-27 (+11d) |  |  |
| 62 | develop training materials | 2018-07-17 → 2018-07-27 (+10d) | 2018-07-17 → 2018-07-30 (+13d) |  |  |
| 63 | conduct training | 2018-07-18 → 2018-07-30 (+12d) | 2018-07-18 → 2018-07-31 (+13d) |  |  |
| 64 | **threshold model 3** | 2018-05-21 → 2018-06-12 (+22d) | 2018-07-18 → 2018-07-31 (+13d) | 42d → 32d |  |
| 65 | review related literature | 2018-05-21 → 2018-06-12 (+22d) | 2018-05-25 → 2018-06-19 (+25d) |  | 6700d → 7450d |
| 66 | develop prototype | 2018-05-28 → 2018-06-19 (+22d) | 2018-06-25 → 2018-07-12 (+17d) | 20d → 17d |  |
| 67 | implement model alongside operations | 2018-06-26 → 2018-07-12 (+16d) | 2018-07-09 → 2018-07-20 (+11d) | 10d → 6d |  |
| 68 | evaluate model (report as PI of threshold model) | 2018-07-10 → 2018-07-20 (+10d) | 2018-07-10 → 2018-07-23 (+13d) |  |  |
| 69 | write report | 2018-07-11 → 2018-07-23 (+12d) | 2018-07-16 → 2018-07-27 (+11d) |  |  |
| 70 | develop training materials | 2018-07-17 → 2018-07-27 (+10d) | 2018-07-17 → 2018-07-30 (+13d) |  |  |

| ID | Task | Start | Finish | Duration | Total float |
| --- | --- | --- | --- | --- | --- |
| 71 | conduct training | 2018-07-18 → 2018-07-30 (+12d) | 2018-07-18 → 2018-07-31 (+13d) |  |  |
| 72 | **threshold model 4** | 2018-05-21 → 2018-06-12 (+22d) | 2018-07-18 → 2018-07-31 (+13d) | 42d → 32d |  |
| 73 | review related literature | 2018-05-21 → 2018-06-12 (+22d) | 2018-05-25 → 2018-06-19 (+25d) |  | 6700d → 7450d |
| 74 | develop prototype | 2018-05-28 → 2018-06-19 (+22d) | 2018-06-25 → 2018-07-12 (+17d) | 20d → 17d |  |
| 75 | implement model alongside operations | 2018-06-26 → 2018-07-12 (+16d) | 2018-07-09 → 2018-07-20 (+11d) | 10d → 6d |  |
| 76 | evaluate model (report as PI of threshold model) | 2018-07-10 → 2018-07-20 (+10d) | 2018-07-10 → 2018-07-23 (+13d) |  |  |
| 77 | write report | 2018-07-11 → 2018-07-23 (+12d) | 2018-07-16 → 2018-07-27 (+11d) |  |  |
| 78 | develop training materials | 2018-07-17 → 2018-07-27 (+10d) | 2018-07-17 → 2018-07-30 (+13d) |  |  |
| 79 | conduct training | 2018-07-18 → 2018-07-30 (+12d) | 2018-07-18 → 2018-07-31 (+13d) |  |  |
| 80 | **threshold model 5** | 2018-05-21 → 2018-06-12 (+22d) | 2018-07-18 → 2018-07-31 (+13d) | 42d → 32d |  |
| 81 | review related literature | 2018-05-21 → 2018-06-12 (+22d) | 2018-05-25 → 2018-06-19 (+25d) |  | 6700d → 7450d |
| 82 | develop prototype | 2018-05-28 → 2018-06-19 (+22d) | 2018-06-25 → 2018-07-12 (+17d) | 20d → 17d |  |
| 83 | implement model alongside operations | 2018-06-26 → 2018-07-12 (+16d) | 2018-07-09 → 2018-07-20 (+11d) | 10d → 6d |  |
| 84 | evaluate model (report as PI of threshold model) | 2018-07-10 → 2018-07-20 (+10d) | 2018-07-10 → 2018-07-23 (+13d) |  |  |
| 85 | write report | 2018-07-11 → 2018-07-23 (+12d) | 2018-07-16 → 2018-07-27 (+11d) |  |  |
| 86 | develop training materials | 2018-07-17 → 2018-07-27 (+10d) | 2018-07-17 → 2018-07-30 (+13d) |  |  |
| 87 | conduct training | 2018-07-18 → 2018-07-30 (+12d) | 2018-07-18 → 2018-07-31 (+13d) |  |  |
| 88 | **threshold model 6** | 2018-05-21 → 2018-06-12 (+22d) | 2018-07-18 → 2018-07-31 (+13d) | 42d → 32d |  |
| 89 | review related literature | 2018-05-21 → 2018-06-12 (+22d) | 2018-05-25 → 2018-06-19 (+25d) |  | 6700d → 7450d |
| 90 | develop prototype | 2018-05-28 → 2018-06-19 (+22d) | 2018-06-25 → 2018-07-12 (+17d) | 20d → 17d |  |
| 91 | implement model alongside operations | 2018-06-26 → 2018-07-12 (+16d) | 2018-07-09 → 2018-07-20 (+11d) | 10d → 6d |  |
| 92 | evaluate model (report as PI of threshold model) | 2018-07-10 → 2018-07-20 (+10d) | 2018-07-10 → 2018-07-23 (+13d) |  |  |
| 93 | write report | 2018-07-11 → 2018-07-23 (+12d) | 2018-07-16 → 2018-07-27 (+11d) |  |  |
| 94 | develop training materials | 2018-07-17 → 2018-07-27 (+10d) | 2018-07-17 → 2018-07-30 (+13d) |  |  |
| 95 | conduct training | 2018-07-18 → 2018-07-30 (+12d) | 2018-07-18 → 2018-07-31 (+13d) |  |  |
| 96 | develop threshold performance index | 2018-06-11 → 2018-07-03 (+22d) | 2018-07-09 → 2018-07-20 (+11d) | 20d → 13d | 8200d → 8750d |
| 97 | **methods report (C&V)** | 2018-05-31 → 2018-06-19 (+19d) | 2018-09-03 → 2018-09-04 (+1d) | 65d → 49d |  |
| 98 | **method 1** | 2018-05-31 → 2018-06-19 (+19d) | 2018-09-03 → 2018-09-04 (+1d) | 65d → 49d |  |
| 99 | evaluate C&V frameworks (explore REDAS as one of the frameworks/models) | 2018-05-31 → 2018-06-19 (+19d) | 2018-06-28 → 2018-07-12 (+14d) | 20d → 17d | 7500d → 7750d |
| 100 | development of C&V assessment modules | 2018-06-29 → 2018-07-12 (+13d) | 2018-07-26 → 2018-08-03 (+8d) | 20d → 16d |  |
| 101 | recommend C&V info system |  | 2018-09-03 → 2018-09-04 (+1d) |  | 2000d → 1700d |
| 102 | design database (linking to EWSL data storage and management)) |  | 2018-08-30 → 2018-08-31 (+1d) | 5d → 6d | 3800d → 2700d |
| 103 | write report |  | 2018-09-03 → 2018-09-04 (+1d) |  |  |
| 104 | develop training materials | 2018-07-27 → 2018-08-03 (+7d) | 2018-08-24 → 2018-08-28 (+4d) | 20d → 17d |  |
| 105 | conduct training |  | 2018-09-03 → 2018-09-04 (+1d) |  |  |
| 106 | **method 2** | 2018-05-31 → 2018-06-19 (+19d) | 2018-09-03 → 2018-09-04 (+1d) | 65d → 49d |  |
| 107 | evaluate C&V frameworks (explore REDAS as one of the frameworks/models) | 2018-05-31 → 2018-06-19 (+19d) | 2018-06-28 → 2018-07-12 (+14d) | 20d → 17d | 7500d → 7750d |
| 108 | development of C&V assessment modules | 2018-06-29 → 2018-07-12 (+13d) | 2018-07-26 → 2018-08-03 (+8d) | 20d → 16d |  |
| 109 | recommend C&V info system |  | 2018-09-03 → 2018-09-04 (+1d) |  | 2000d → 1700d |
| 110 | design database (linking to EWSL data storage and management)) |  | 2018-08-30 → 2018-08-31 (+1d) | 5d → 6d | 3800d → 2700d |
| 111 | write report |  | 2018-09-03 → 2018-09-04 (+1d) |  |  |
| 112 | develop training materials | 2018-07-27 → 2018-08-03 (+7d) | 2018-08-24 → 2018-08-28 (+4d) | 20d → 17d |  |
| 113 | conduct training |  | 2018-09-03 → 2018-09-04 (+1d) |  |  |
| 114 | **methods report (Risk)** | 2018-03-21 → 2018-05-03 (+43d) | 2018-09-03 → 2018-09-04 (+1d) | 112d → 77d |  |
| 115 | evaluate frameworks for risk | 2018-03-21 → 2018-05-03 (+43d) | 2018-04-20 → 2018-05-28 (+38d) | 20d → 17d | 2800d → 4950d |
| 116 | develop methods | 2018-04-23 → 2018-05-28 (+35d) | 2018-05-21 → 2018-06-15 (+25d) | 20d → 14d |  |
| 117 | write report | 2018-05-22 → 2018-06-15 (+24d) | 2018-05-23 → 2018-06-19 (+27d) |  |  |
| 118 | develop training materials | 2018-05-24 → 2018-06-19 (+26d) | 2018-06-06 → 2018-07-03 (+27d) |  |  |
| 119 | conduct training (NC 3) | 2018-06-07 → 2018-07-03 (+26d) | 2018-09-03 → 2018-09-04 (+1d) | 60d → 45d |  |
| 120 | **per site landslide risk reports (focus sites)** | 2018-06-15 → 2018-06-19 (+4d) | 2018-09-03 → 2018-09-04 (+1d) | 55d? → 49d? |  |
| 121 | integration of hazard, capacity, and vulnerability information | 2018-08-10 → 2018-08-14 (+4d) | 2018-09-03 → 2018-09-04 (+1d) |  |  |
| 122 | **per site hazard reports (all sites)** | 2018-06-25 → 2018-07-04 (+9d) | 2018-08-09 → 2018-08-14 (+5d) | 34d? → 25d? |  |
| 123 | conduct fieldwork (resurvey) | 2018-06-25 → 2018-07-04 (+9d) | 2018-08-03 → 2018-08-08 (+5d) | 30d → 25d | 9100d → 9150d |
| 124 | consolidate field notes | 2018-08-06 → 2018-08-08 (+2d) | 2018-08-06 → 2018-08-09 (+3d) |  |  |
| 125 | review and identify active sites | 2018-08-03 → 2018-08-07 (+4d) | 2018-08-03 → 2018-08-08 (+5d) |  | 12000d → 11150d |
| 126 | conduct quarterly survey (RTS/RTK/remap) | 2018-08-06 → 2018-08-08 (+2d) | 2018-08-06 → 2018-08-09 (+3d) |  |  |
| 127 | analyze monitoring data (requires access to database) | 2018-08-07 → 2018-08-09 (+2d) | 2018-08-07 → 2018-08-10 (+3d) |  |  |
| 128 | update volume, depth, extent (using current models) | 2018-08-08 → 2018-08-10 (+2d) | 2018-08-08 → 2018-08-13 (+5d) |  |  |
| 129 | update thresholds with monitoring data and performance index | 2018-08-08 → 2018-08-10 (+2d) | 2018-08-08 → 2018-08-13 (+5d) |  | 12300d → 11150d |
| 130 | update per site hazard reports (updated maps as PI) | 2018-08-09 → 2018-08-13 (+4d) | 2018-08-09 → 2018-08-14 (+5d) |  |  |
| 131 | **per site capacity and vulnerability reports (2 focus sites, Mindanao)** | 2018-06-15 → 2018-06-19 (+4d) | 2018-08-09 → 2018-08-14 (+5d) | 40d → 35d |  |
| 132 | conduct data gathering | 2018-06-15 → 2018-06-19 (+4d) | 2018-07-05 → 2018-07-10 (+5d) |  | 8500d → 7750d |
| 133 | analyze data | 2018-07-06 → 2018-07-10 (+4d) | 2018-08-02 → 2018-08-07 (+5d) |  |  |
| 134 | update per site capacity and vulnerability reports | 2018-08-03 → 2018-08-07 (+4d) | 2018-08-09 → 2018-08-14 (+5d) |  |  |
| 135 | **"Alert protocol" -- essentually how risk knowledge informs early warning practice** | 2018-06-21 → 2018-07-10 (+19d) | 2018-08-17 → 2018-08-20 (+3d) | 42d → 26d |  |
| 136 | review of related literature | 2018-06-21 → 2018-07-10 (+19d) | 2018-07-18 → 2018-07-30 (+12d) | 20d → 14d | 8900d → 9250d |
| 137 | review and evaluate current alert protocol | 2018-07-19 → 2018-07-30 (+11d) | 2018-08-15 → 2018-08-16 (+1d) | 20d → 13d |  |
| 138 | recomend alert protocol |  | 2018-08-17 → 2018-08-20 (+3d) |  |  |
| 139 | **Early warning system for landslides** |  | 2018-09-03 → 2018-09-04 (+1d) | 140d? → 128.5d? |  |
| 140 | **Data gathering system** |  | 2018-09-03 → 2018-09-04 (+1d) | 140d → 128.5d |  |

| ID | Task | Start | Finish | Duration | Total float |
| --- | --- | --- | --- | --- | --- |
| 141 | **community reported data** |  | 2018-09-03 → 2018-09-04 (+1d) | 140d → 128.5d |  |
| 143 | improve means of gathering surficial data (including transmission) | 2018-07-06 → 2018-07-05 (-1d) | 2018-09-03 → 2018-09-04 (+1d) | 40d → 39d | 8000d → 3900d |
| 144 | develop on the ground validation of rainfall via sensors | 2018-07-06 → 2018-07-05 (-1d) | 2018-09-03 → 2018-09-04 (+1d) | 40d → 39d | 10000d → 8850d |
| 145 | **tilt** |  |  | 140d → 128d | none → 50d |
| 147 | characterize tilt sensor(angle range and accuracy of v3 tilt sensor) |  | 2018-02-22 → 2018-02-20 (-2d) | 10d → 9d | 13000d → 12050d |
| 148 | develop tilt sensor feature 1(improve angle range, accuracy,packaging,coms) |  | 2018-03-08 → 2018-03-13 (+5d) |  | 12000d → 10850d |
| 149 | develop tilt sensor feature 2(improve angle range, accuracy,packaging,coms) |  | 2018-03-08 → 2018-03-13 (+5d) |  | 12000d → 10850d |
| 150 | prepare manufacturing documents (project to phivolcs --admin heavy task ito) |  | 2018-03-08 → 2018-03-13 (+5d) |  | 12000d → 10850d |
| 151 | **manufacturing monitoring** |  |  | 140d → 128d | none → 50d |
| 153 | manufacture |  |  | 120d → 106d | none → -50d |
| 154 | troubleshoot manufacturing issues |  |  | 120d → 106d | 1000d → 1250d |
| 155 | evaluate sample boards |  |  | 10d → 12d | none → 50d |
| 158 | **soms** |  | 2018-05-07 → 2018-05-14 (+7d) | 58d → 56d | 8200d → 7150d |
| 160 | soms characterization 1 (gravimetric site-specific) |  | 2018-03-08 → 2018-03-13 (+5d) |  | 12000d → 10850d |
| 163 | improve soms probe and its orientation |  | 2018-03-08 → 2018-03-13 (+5d) |  | 8200d → 7150d |
| 164 | develop new soil moisture sensor (improve accuracy, packaging, coms) prototype | 2018-03-09 → 2018-03-14 (+5d) | 2018-04-10 → 2018-04-17 (+7d) |  | 8200d → 7050d |
| 165 | deploy new soms | 2018-04-11 → 2018-04-18 (+7d) | 2018-04-17 → 2018-04-24 (+7d) |  | 8200d → 6950d |
| 166 | develop filter | 2018-04-18 → 2018-04-25 (+7d) | 2018-04-27 → 2018-05-07 (+10d) | 8d → 9d | 8200d → 6950d |
| 167 | implement filter | 2018-04-30 → 2018-05-08 (+8d) | 2018-05-07 → 2018-05-14 (+7d) |  | 8200d → 7150d |
| 168 | **uts-ext** |  | 2018-09-03 → 2018-09-04 (+1d) | 140d → 128.5d |  |
| 170 | char-dev-dep | 2018-03-09 → 2018-04-25 (+47d) | 2018-07-05 → 2018-07-16 (+11d) | 80d → 58d | 2000d → 4650d |
| 171 | develop filter | 2018-07-06 → 2018-07-16 (+10d) | 2018-08-16 → 2018-08-21 (+5d) | 30d → 26d |  |
| 172 | implement filter | 2018-08-17 → 2018-08-21 (+4d) | 2018-09-03 → 2018-09-04 (+1d) |  |  |
| 173 | **lidar-ext** |  | 2018-09-03 → 2018-09-04 (+1d) | 140d → 128.5d |  |
| 175 | char-dev-dep | 2018-03-09 → 2018-04-25 (+47d) | 2018-07-05 → 2018-07-16 (+11d) | 80d → 58d | 2000d → 4650d |
| 176 | develop filter | 2018-07-06 → 2018-07-16 (+10d) | 2018-08-16 → 2018-08-21 (+5d) | 30d → 26d |  |
| 177 | implement filter | 2018-08-17 → 2018-08-21 (+4d) | 2018-09-03 → 2018-09-04 (+1d) |  |  |
| 178 | **rain gauge** |  | 2018-09-03 → 2018-09-04 (+1d) | 140d → 128.5d |  |
| 180 | char-dev-dep | 2018-06-07 → 2018-06-26 (+19d) | 2018-08-02 → 2018-08-09 (+7d) | 40d → 32d | 8000d → 8550d |
| 181 | develop filter | 2018-08-03 → 2018-08-09 (+6d) | 2018-08-24 → 2018-08-28 (+4d) | 15d → 13d |  |
| 182 | implement filter |  | 2018-09-03 → 2018-09-04 (+1d) |  |  |
| 183 | **piezometer** |  | 2018-09-03 → 2018-09-04 (+1d) | 140d → 128.5d |  |
| 185 | char-dev-dep | 2018-07-06 → 2018-07-16 (+10d) | 2018-08-02 → 2018-08-13 (+11d) |  | 10000d → 9550d |
| 186 | develop filter | 2018-08-03 → 2018-08-13 (+10d) | 2018-08-16 → 2018-08-21 (+5d) | 10d → 6d |  |
| 187 | implement filter | 2018-08-17 → 2018-08-21 (+4d) | 2018-09-03 → 2018-09-04 (+1d) |  |  |
| 188 | **gateway datalogger** |  | 2018-08-02 → 2018-08-10 (+8d) | 120d → 111.5d |  |
| 190 | char-dev-dep | 2018-05-10 → 2018-06-11 (+32d) | 2018-08-02 → 2018-08-10 (+8d) | 60d → 44d | 6000d → 7750d |
| 191 | **router datalogger** |  | 2018-09-03 → 2018-09-04 (+1d) | 140d → 128.5d |  |
| 193 | char-dev-dep | 2018-07-20 → 2018-08-01 (+12d) | 2018-09-03 → 2018-09-04 (+1d) | 30d → 24d | 11000d → 10850d |
| 194 | **sensor datalogger** |  | 2018-04-20 → 2018-04-27 (+7d) |  | 9200d → 8050d |
| 198 | prepare manufacturing documents |  | 2018-03-08 → 2018-03-13 (+5d) |  | 12000d → 10850d |
| 199 | **manufacturing monitoring** |  | 2018-04-20 → 2018-04-27 (+7d) |  | 9200d → 8050d |
| 201 | manufacture |  | 2018-04-13 → 2018-04-20 (+7d) |  | 9200d → 8050d |
| 202 | troubleshoot manufacturing issues |  | 2018-04-13 → 2018-04-20 (+7d) |  | 9700d → 8550d |
| 203 | evaluate sample boards | 2018-04-16 → 2018-04-23 (+7d) | 2018-04-20 → 2018-04-27 (+7d) |  | 9200d → 8050d |
| 204 | **stand alone datalogger** |  | 2018-08-02 → 2018-08-10 (+8d) | 120d → 111.5d |  |
| 206 | char-dev-dep | 2018-06-22 → 2018-07-10 (+18d) | 2018-08-02 → 2018-08-10 (+8d) | 30d → 23d | 9000d → 9450d |
| 207 | **SMS parsing system for new data structures** | 2018-08-03 → 2018-08-10 (+7d) | 2018-09-03 → 2018-09-04 (+1d) | 20d → 17d |  |
| 208 | develop sms parsing system | 2018-08-03 → 2018-08-10 (+7d) | 2018-09-03 → 2018-09-04 (+1d) | 20d → 17d |  |
| 209 | **Data storage and management system** | 2018-05-14 → 2018-05-31 (+17d) | 2018-07-25 → 2018-08-02 (+8d) | 52d → 40d |  |
| 210 | develop new structure for storage and management | 2018-05-14 → 2018-05-31 (+17d) | 2018-06-08 → 2018-06-28 (+20d) |  | 6200d → 6950d |
| 211 | develop automated backup | 2018-07-05 → 2018-07-13 (+8d) | 2018-07-18 → 2018-07-26 (+8d) | 10d → 9d | 1700d → 1100d |
| 212 | recommend performance metrics | 2018-07-19 → 2018-07-26 (+7d) | 2018-07-25 → 2018-08-02 (+8d) |  |  |
| 213 | develop data access for risk assessment | 2018-06-11 → 2018-06-28 (+17d) | 2018-06-25 → 2018-07-12 (+17d) |  |  |
| 214 | **Data analysis system** |  | 2018-09-03 → 2018-09-04 (+1d) | 140d? → 128.5d? |  |
| 215 | **threshold scripts** | 2018-07-19 → 2018-07-31 (+12d) | 2018-07-19 → 2018-08-01 (+13d) |  |  |
| 216 | implement thresholds | 2018-07-19 → 2018-07-31 (+12d) | 2018-07-19 → 2018-08-01 (+13d) |  |  |
| 217 | **visualization scripts** |  | 2018-09-03 → 2018-09-04 (+1d) | 140d? → 128.5d? |  |
| 218 | research data visualization concepts (inc. hazard concepts) | 2018-07-06 → 2018-07-18 (+12d) | 2018-07-19 → 2018-08-01 (+13d) |  | 10000d → 9850d |
| 219 | develop new web charts | 2018-07-20 → 2018-08-01 (+12d) | 2018-09-03 → 2018-09-04 (+1d) | 30d → 24d |  |
| 220 | improvement of existing web charts |  | 2018-09-03 → 2018-09-04 (+1d) |  | 13900d → 12750d |
| 221 | improvement of webchart generation |  | 2018-09-03 → 2018-09-04 (+1d) |  | 13900d → 12750d |
| 223 | recommend performance metrics | 2018-07-25 → 2018-08-01 (+7d) | 2018-07-25 → 2018-08-02 (+8d) |  | 11300d → 10750d |
| 224 | draft process profile (recomm to automation integration) | 2018-08-01 → 2018-08-08 (+7d) | 2018-08-02 → 2018-08-10 (+8d) |  | 11800d → 11250d |
| 225 | **Dissemination system** |  | 2018-09-03 → 2018-09-04 (+1d) | 140d? → 128.5d? |  |
| 226 | **alert generation module** | 2018-07-25 → 2018-08-01 (+7d) | 2018-09-03 → 2018-09-04 (+1d) | 27d → 21d |  |
| 227 | create modularized infrastructure for different operational triggers |  | 2018-09-03 → 2018-09-04 (+1d) |  | 13500d → 12350d |
| 228 | create "special cases" tables (e.g., Puguis) |  | 2018-08-30 → 2018-08-31 (+1d) | 5d → 6d | 13300d → 12150d |
| 229 | implement alert protocol (trigger to alert) revisions |  | 2018-09-03 → 2018-09-04 (+1d) |  |  |
| 230 | recommend performance metrics (in relation to automation) | 2018-07-25 → 2018-08-01 (+7d) | 2018-07-25 → 2018-08-02 (+8d) |  | 11300d → 10750d |

| ID | Task | Start | Finish | Duration | Total float |
| --- | --- | --- | --- | --- | --- |
| 231 | draft process profile (recomm to automation integration) | 2018-08-01 → 2018-08-08 (+7d) | 2018-08-02 → 2018-08-10 (+8d) |  | 11800d → 11250d |
| 232 | **GSM module server** |  | 2018-08-02 → 2018-08-10 (+8d) | 120d? → 111.5d? | 2000d → 1700d |
| 233 | **develop new GSM module server features** |  | 2018-03-01 → 2018-02-27 (-2d) | 15d → 13d | 12500d → 11550d |
| 234 | develop power autonomy |  | 2018-03-01 → 2018-02-27 (-2d) | 15d → 14d | 9900d → 9550d |
| 235 | develop multiple gsm module hardware |  | 2018-03-01 → 2018-02-27 (-2d) | 15d → 14d | 12500d → 11550d |
| 237 | recommend performance metrics (in relation to automation) | 2018-07-25 → 2018-08-01 (+7d) | 2018-07-25 → 2018-08-02 (+8d) |  | 11300d → 10750d |
| 238 | draft process profile (recomm to automation integration) | 2018-08-01 → 2018-08-08 (+7d) | 2018-08-02 → 2018-08-10 (+8d) |  | 11800d → 11250d |
| 239 | **chatterbox** | 2018-07-25 → 2018-08-01 (+7d) | 2018-09-03 → 2018-09-04 (+1d) | 27d? → 21d? |  |
| 240 | revise scripts for SMS generation and sending (automation?) | 2018-08-17 → 2018-08-21 (+4d) | 2018-09-03 → 2018-09-04 (+1d) |  | 13000d → 11950d |
| 241 | implement feature requests |  | 2018-09-03 → 2018-09-04 (+1d) |  | 13900d → 12750d |
| 242 | improve performance |  | 2018-09-03 → 2018-09-04 (+1d) |  | 13900d → 12750d |
| 243 | recommend performance metrics (in relation to automation) | 2018-07-25 → 2018-08-01 (+7d) | 2018-07-25 → 2018-08-02 (+8d) |  | 11300d → 10750d |
| 244 | draft process profile (recomm to automation integration) | 2018-08-01 → 2018-08-08 (+7d) | 2018-08-02 → 2018-08-10 (+8d) |  | 11800d → 11250d |
| 245 | **webcall** | 2018-03-28 → 2018-05-11 (+44d) | 2018-08-02 → 2018-08-10 (+8d) | 87d → 60d |  |
| 246 | acquire, implement hardware | 2018-03-28 → 2018-05-11 (+44d) | 2018-06-26 → 2018-07-10 (+14d) | 60d → 42d | 3300d → 5850d |
| 247 | develop/integrate software | 2018-06-27 → 2018-07-10 (+13d) | 2018-07-24 → 2018-08-01 (+8d) | 20d → 16d |  |
| 248 | recommend performance metrics (in relation to automation) | 2018-07-25 → 2018-08-01 (+7d) | 2018-07-25 → 2018-08-02 (+8d) |  |  |
| 249 | draft process profile (recomm to automation integration) | 2018-08-01 → 2018-08-08 (+7d) | 2018-08-02 → 2018-08-10 (+8d) |  |  |
| 250 | **bulletin generator** |  | 2018-09-03 → 2018-09-04 (+1d) | 140d? → 128.5d? |  |
| 251 | revise scripts for bulletin generation and sending (automation?) |  | 2018-09-03 → 2018-09-04 (+1d) |  | 13500d → 12350d |
| 253 | improve performance |  | 2018-09-03 → 2018-09-04 (+1d) |  | 13900d → 12750d |
| 254 | recommend performance metrics (in relation to automation) | 2018-07-25 → 2018-08-01 (+7d) | 2018-07-25 → 2018-08-02 (+8d) |  | 11300d → 10750d |
| 255 | draft process profile (recomm to automation integration) | 2018-08-01 → 2018-08-08 (+7d) | 2018-08-02 → 2018-08-10 (+8d) |  | 11800d → 11250d |
| 256 | **Local Info system (ISD)** | 2018-02-23 → 2018-04-20 (+56d) | 2018-09-03 → 2018-09-04 (+1d) | 130d → 86d |  |
| 257 | consolidate recommendations into ict specifications | 2018-02-23 → 2018-04-20 (+56d) | 2018-03-08 → 2018-05-01 (+54d) | 10d → 7d | 1000d → 4350d |
| 258 | use case testing | 2018-06-07 → 2018-07-03 (+26d) | 2018-09-03 → 2018-09-04 (+1d) | 60d → 45d | 6000d → 4000d |
| 259 | develop local codes updating system | 2018-08-03 → 2018-08-10 (+7d) | 2018-09-03 → 2018-09-04 (+1d) | 20d → 17d | 10000d → 6500d |
| 260 | port ews-l modules | 2018-03-09 → 2018-05-01 (+53d) | 2018-09-03 → 2018-09-04 (+1d) | 120d → 90d |  |
| 261 | **Automation integration system** |  | 2018-09-03 → 2018-09-04 (+1d) | 140d → 128.5d |  |
| 262 | automate recommended processes | 2018-08-03 → 2018-08-10 (+7d) | 2018-09-03 → 2018-09-04 (+1d) | 20d → 17d |  |
| 263 | recommend performance metrics |  | 2018-02-12 → 2018-02-09 (-3d) | 2.5d → 2d | 11150d → 10650d |
| 264 | **Performance monitoring system of central system** |  | 2018-09-03 → 2018-09-04 (+1d) | 140d? → 128.5d? |  |
| 265 | consolidate recommendations for performance metrics | 2018-07-26 → 2018-08-02 (+7d) | 2018-07-26 → 2018-08-03 (+8d) |  |  |
| 267 | **Performance monitoring system** | 2018-07-27 → 2018-08-03 (+7d) | 2018-09-03 → 2018-09-04 (+1d) | 25d? → 19d? |  |
| 268 | develop PMS backbone stable version | 2018-07-27 → 2018-08-03 (+7d) | 2018-08-24 → 2018-08-28 (+4d) | 20d → 17d |  |
| 269 | maintain PMS |  | 2018-08-28 → 2018-08-29 (+1d) |  |  |
| 270 | develop agile PMS components |  | 2018-08-28 → 2018-08-29 (+1d) |  |  |
| 271 | develop generic visualization charts |  | 2018-09-03 → 2018-09-04 (+1d) |  |  |
| 273 | **Organized Local Early Warning Committee (LEWC)** | 2018-05-10 → 2018-06-07 (+28d) | 2018-09-03 → 2018-09-04 (+1d) | 80d → 57d |  |
| 274 | **LEWC org structure and mission/vision (47 sites)** | 2018-05-10 → 2018-06-13 (+34d) | 2018-09-03 → 2018-09-04 (+1d) | 80d → 53d |  |
| 275 | prepare modules | 2018-05-10 → 2018-06-13 (+34d) | 2018-06-06 → 2018-07-03 (+27d) | 20d → 14d | 6000d → 7650d |
| 276 | conduct training/ gather data | 2018-06-07 → 2018-07-03 (+26d) | 2018-09-03 → 2018-09-04 (+1d) | 60d → 45d |  |
| 277 | **Guidelines for community organizing (2 sites)** | 2018-05-24 → 2018-06-07 (+14d) | 2018-09-03 → 2018-09-04 (+1d) | 70d → 57d |  |
| 278 | develop methods for community organizing | 2018-05-24 → 2018-06-07 (+14d) | 2018-07-19 → 2018-07-24 (+5d) | 40d → 33d | 7000d → 7250d |
| 279 | gather data (fieldwork) | 2018-07-20 → 2018-07-24 (+4d) | 2018-08-09 → 2018-08-14 (+5d) |  |  |
| 280 | recommend activities for community organizing | 2018-08-10 → 2018-08-14 (+4d) | 2018-09-03 → 2018-09-04 (+1d) |  |  |
| 281 | **develop guidelines for institutionalization of LEWC (2 sites)** | 2018-05-24 → 2018-06-07 (+14d) | 2018-09-03 → 2018-09-04 (+1d) | 70d → 57d |  |
| 282 | develop methods for crafing guidelines | 2018-05-24 → 2018-06-07 (+14d) | 2018-07-19 → 2018-07-24 (+5d) | 40d → 33d | 7000d → 7250d |
| 283 | gather data (fieldwork) | 2018-07-20 → 2018-07-24 (+4d) | 2018-08-09 → 2018-08-14 (+5d) |  |  |
| 284 | develop guidelines for institutionalization of LEWC | 2018-08-10 → 2018-08-14 (+4d) | 2018-09-03 → 2018-09-04 (+1d) |  |  |
| 285 | **Guidelines for developing contingency plans for DSL (barangay level)** | 2018-06-22 → 2018-07-11 (+19d) | 2018-09-03 → 2018-09-04 (+1d) | 50d → 36d |  |
| 286 | review literature on contingency plans | 2018-06-22 → 2018-07-11 (+19d) | 2018-08-16 → 2018-08-21 (+5d) | 40d → 29d | 9000d → 9350d |
| 287 | draft guidelines for contingency plans | 2018-08-17 → 2018-08-21 (+4d) | 2018-08-24 → 2018-08-28 (+4d) |  |  |
| 288 | approve guidelines for contingency plans |  | 2018-09-03 → 2018-09-04 (+1d) |  |  |
| 289 | **Operations manual** |  | 2018-09-03 → 2018-09-04 (+1d) | 9d → 10d |  |
| 290 | update EWS operations manual (1) |  | 2018-08-23 → 2018-08-24 (+1d) | 3d → 4d |  |
| 291 | update EWS operations manual (2) |  | 2018-08-29 → 2018-08-30 (+1d) | 3d → 4d |  |
| 292 | update EWS operations manual (3) |  | 2018-09-03 → 2018-09-04 (+1d) |  |  |
| 293 | **Early warning information** |  | 2018-09-03 → 2018-09-04 (+1d) | 140d? → 128.5d? |  |
| 294 | generate, review, and release EWI |  | 2018-09-03 → 2018-09-04 (+1d) |  | 13900d → 12750d |
| 295 | **EWI support** |  | 2018-09-03 → 2018-09-04 (+1d) | 140d? → 128.5d? |  |
| 296 | **operational systems** |  | 2018-09-03 → 2018-09-04 (+1d) |  |  |
| 297 | **sensors and dataloggers** |  | 2018-09-03 → 2018-09-04 (+1d) |  |  |
| 298 | replace defective sensors and loggers |  | 2018-09-03 → 2018-09-04 (+1d) |  | 13900d → 12750d |
| 299 | monitor sensor and datalogger health status |  | 2018-09-03 → 2018-09-04 (+1d) |  | 13900d → 12750d |
| 300 | track maintenance activities |  | 2018-09-03 → 2018-09-04 (+1d) |  | 13900d → 12750d |
| 301 | manage inventory |  | 2018-09-03 → 2018-09-04 (+1d) |  | 13900d → 12750d |
| 302 | track PLAA events |  | 2018-09-03 → 2018-09-04 (+1d) |  | 13900d → 12750d |
| 303 | track sensor events |  | 2018-09-03 → 2018-09-04 (+1d) |  | 13900d → 12750d |
| 304 | field-based maintenance |  | 2018-09-03 → 2018-09-04 (+1d) |  | 13900d → 12750d |

| ID | Task | Start | Finish | Duration | Total float | Predecessors | Other |
| --- | --- | --- | --- | --- | --- | --- | --- |
| 305 | **central server (software)** |  | 2018-09-03 → 2018-09-04 (+1d) |  |  |  |  |
| 306 | maintain data gathering system |  | 2018-09-03 → 2018-09-04 (+1d) |  | 13900d → 12750d |  |  |
| 307 | maintain data storage and management system |  | 2018-09-03 → 2018-09-04 (+1d) |  | 13900d → 12750d |  |  |
| 308 | maintain data analysis system |  | 2018-09-03 → 2018-09-04 (+1d) |  | 13900d → 12750d |  |  |
| 309 | maintain info dissemination system |  | 2018-09-03 → 2018-09-04 (+1d) |  | 13900d → 12750d |  |  |
| 310 | train staff for debugging | 2018-09-03 → 2018-09-04 (+1d) | 2018-09-03 → 2018-09-04 (+1d) |  | 13950d → 12800d |  |  |
| 311 | produce code and documentation standards |  | 2018-09-03 → 2018-09-04 (+1d) |  | 13900d → 12750d |  |  |
| 312 | **updated database** |  | 2018-09-03 → 2018-09-04 (+1d) |  |  |  |  |
| 313 | maintain tables |  | 2018-09-03 → 2018-09-04 (+1d) |  | 13900d → 12750d |  |  |
| 314 | **parsed SMS** |  | 2018-09-03 → 2018-09-04 (+1d) |  |  |  |  |
| 315 | maintain SMS parsing |  | 2018-09-03 → 2018-09-04 (+1d) |  | 13900d → 12750d |  |  |
| 316 | **capable personnel for monitoring and early warning** |  | 2018-09-03 → 2018-09-04 (+1d) | 140d? → 128.5d? |  |  |  |
| 317 | **develop training materials** | 2018-08-02 → 2018-08-06 (+4d) | 2018-08-31 → 2018-09-03 (+3d) | 20d? → 17d? |  |  |  |
| 318 | hazard monitoring | 2018-08-02 → 2018-08-06 (+4d) | 2018-08-31 → 2018-09-03 (+3d) |  | 11900d → 11050d |  |  |
| 319 | analysis and validation | 2018-08-02 → 2018-08-06 (+4d) | 2018-08-31 → 2018-09-03 (+3d) |  | 11900d → 11050d |  |  |
| 320 | sensor maintenance |  | 2018-08-31 → 2018-09-03 (+3d) |  | 13800d → 12650d |  |  |
| 321 | communications protocol | 2018-08-02 → 2018-08-06 (+4d) | 2018-08-31 → 2018-09-03 (+3d) |  | 11900d → 11050d |  |  |
| 322 | **conduct EWS protocol trainings (internal)** |  | 2018-09-03 → 2018-09-04 (+1d) |  |  |  |  |
| 323 | hazard monitoring |  | 2018-09-03 → 2018-09-04 (+1d) |  |  |  |  |
| 324 | analysis and validation |  | 2018-09-03 → 2018-09-04 (+1d) |  |  |  |  |
| 325 | sensor maintenance |  | 2018-09-03 → 2018-09-04 (+1d) |  |  |  |  |
| 326 | communications protocol |  | 2018-09-03 → 2018-09-04 (+1d) |  |  |  |  |
| 327 | **conduct EWS protocol trainings (external)** |  | 2018-09-03 → 2018-09-04 (+1d) | 140d? → 128.5d? |  |  |  |
| 328 | combo training 1 (hazard monitoring, analysis, comm protocol) |  | 2018-02-22 → 2018-02-21 (-1d) | 10d → 9d | 13000d → 11950d |  |  |
| 329 | combo training 2 (hazard monitoring, analysis, comm protocol) |  | 2018-02-22 → 2018-02-21 (-1d) | 10d → 9d | 13000d → 11950d |  |  |
| 330 | combo training 3 (hazard monitoring, analysis, comm protocol) |  | 2018-02-22 → 2018-02-21 (-1d) | 10d → 9d | 13000d → 11950d |  |  |
| 331 | combo training n (hazard monitoring, analysis, comm protocol) |  | 2018-02-22 → 2018-02-21 (-1d) | 10d → 9d | 13000d → 11950d |  |  |
| 332 | sensor maintenance |  | 2018-09-03 → 2018-09-04 (+1d) |  | 13900d → 12750d |  |  |
| 333 | **Strategic communications** | 2018-08-30 → 2018-08-07 (-23d) | 2018-09-03 → 2018-09-04 (+1d) | 3d? → 18d? |  |  |  |
| 334 | research stakeholder info needs | 2018-08-30 → 2018-08-07 (-23d) | 2018-08-30 → 2018-08-08 (-22d) |  | 13700d → 11150d |  |  |
| 335 | research policy process |  | 2018-09-03 → 2018-09-04 (+1d) |  | 13900d → 12750d |  |  |
| 336 | develop strategic comm plan | 2018-08-31 → 2018-08-08 (-23d) | 2018-08-31 → 2018-08-09 (-22d) |  |  |  |  |
| 337 | **develop communication materials** | 2018-09-03 → 2018-08-09 (-25d) | 2018-09-03 → 2018-09-04 (+1d) | 1d? → 18d? |  |  |  |
| 338 | **website** | 2018-09-03 → 2018-08-09 (-25d) | 2018-09-03 → 2018-09-04 (+1d) | 1d? → 18d? |  |  |  |
| 339 | develop website content | 2018-09-03 → 2018-08-09 (-25d) | 2018-09-03 → 2018-08-10 (-24d) |  |  |  |  |
| 340 | design website | 2018-09-03 → 2018-08-10 (-24d) | 2018-09-03 → 2018-08-13 (-21d) |  |  | none → 339 |  |
| 342 | develop non-website communications |  | 2018-09-03 → 2018-09-04 (+1d) |  | 13900d → 12750d |  |  |
| 343 | **MEAL system** |  | 2018-09-03 → 2018-09-04 (+1d) | 140d? → 128.5d? |  |  |  |
| 344 | sourcing of MEAL expert | 2018-09-03 → 2018-02-08 (-207d) | 2018-09-03 → 2018-02-20 (-195d) | 1d? → 9d | none → 2150d |  | was named develop content management system; constraint as late as possible → none; resources web dev 1 → MEAL officer 1 |
| 345 | develop MEAL framework | 2018-08-22 → 2018-03-28 (-147d) | 2018-08-23 → 2018-03-30 (-146d) |  | 13200d → 2050d | none → 344 |  |
| 346 | develop MEAL plan | 2018-08-24 → 2018-03-30 (-147d) | 2018-08-29 → 2018-04-05 (-146d) | 3d → 4d |  |  |  |
| 349 | **monitoring mechanisms** |  | 2018-09-03 → 2018-09-04 (+1d) | 140d? → 128.5d |  |  |  |
| 350 | **standard documentation and storage** | 2018-08-31 → 2018-08-24 (-7d) | 2018-09-03 → 2018-09-04 (+1d) | 2d? → 7d |  |  |  |
| 351 | design documentation templates and organization/structure | 2018-08-31 → 2018-08-24 (-7d) |  | 1d? → 5d | 100d → 9000d |  | was named design documentation templates; resources MEAL officer 6 → MEAL officer 1; MEAL officer 2; MEAL officer 3; MEAL officer 4; MEAL officer 5; MEAL officer 6 |
| 352 | design repository system | 2018-09-03 → 2018-08-31 (-3d) | 2018-09-03 → 2018-09-04 (+1d) | 1d? → 2d |  |  |  |
| 353 | **PLAA** | 2018-09-03 → 2018-08-30 (-4d) | 2018-09-03 → 2018-09-04 (+1d) | 1d → 3d |  |  |  |
| 354 | review current PLAA vis-a-vis MEAL plan | 2018-09-03 → 2018-08-30 (-4d) |  | 0.5d → 2d | 200d → 9400d |  |  |
| 355 | revise PLAA guidelines |  | 2018-09-03 → 2018-09-04 (+1d) | 0.5d → 1d |  |  |  |
| 356 | **EWS-QA** |  | 2018-09-03 → 2018-09-04 (+1d) | 140d → 128.5d |  |  |  |
| 357 | review current EWS-QA vis-a-vis MEAL plan | 2018-09-03 → 2018-08-30 (-4d) |  | 0.5d → 2d | 200d → 9400d |  |  |
| 358 | revise EWS-QA guidelines |  | 2018-09-03 → 2018-09-04 (+1d) | 0.5d → 1d |  |  |  |
| 359 | revise tools for data gathering |  | 2018-02-12 → 2018-02-09 (-3d) | 3d → 2d | 13700d → 12650d |  |  |
| 360 | **outcome-impact** | 2018-09-03 → 2018-08-30 (-4d) | 2018-09-03 → 2018-09-04 (+1d) | 1d → 3d |  |  |  |
| 361 | review outcome-impact vis-a-vis MEAL plan | 2018-09-03 → 2018-08-30 (-4d) |  | 0.5d → 2d | 200d → 9400d |  |  |
| 362 | revise outcome-impact |  | 2018-09-03 → 2018-09-04 (+1d) | 0.5d → 1d |  |  |  |
| 363 | **administrative process** | 2018-09-03 → 2018-08-30 (-4d) | 2018-09-03 → 2018-09-04 (+1d) | 1d → 3d |  |  |  |
| 364 | review admin process trackers vis-a-vis MEAL plan | 2018-09-03 → 2018-08-30 (-4d) |  | 0.5d → 2d | 200d → 9400d |  |  |
| 365 | revise admin process trackers |  | 2018-09-03 → 2018-09-04 (+1d) | 0.5d → 1d |  |  |  |
| 366 | **project output** |  | 2018-09-03 → 2018-09-04 (+1d) |  |  |  |  |
| 367 | develop team output tracker |  | 2018-08-30 → 2018-08-31 (+1d) |  | none → 9400d |  |  |
| 368 | develop individual output tracker |  | 2018-08-31 → 2018-09-03 (+3d) |  |  |  |  |
| 369 | develop individual capacity tracker |  | 2018-09-03 → 2018-09-04 (+1d) |  |  |  |  |
| 370 | **stakeholder concerns** | 2018-09-03 → 2018-09-04 (+1d) | 2018-09-03 → 2018-09-04 (+1d) |  |  |  |  |
| 371 | develop stakeholder concerns tracker | 2018-09-03 → 2018-09-04 (+1d) | 2018-09-03 → 2018-09-04 (+1d) |  | 250d → 9650d |  |  |
| 372 | **MEAL implem** | 2018-08-30 → 2018-04-05 (-147d) | 2018-09-03 → 2018-09-04 (+1d) | 3d? → 97d? |  |  |  |
| 373 | **EWS-QA** | 2018-08-30 → 2018-04-05 (-147d) | 2018-09-03 → 2018-04-06 (-150d) | 3d? → 1d | none → 9600d |  |  |
| 374 | **bimonthly** | 2018-02-08 → 2018-04-05 (+56d) | 2018-09-03 → 2018-04-06 (-150d) | 140d? → 1d | none → 9600d |  | was named data gathering |
| 375 | gather, analyze, evaluate data | 2018-09-03 → 2018-04-05 (-151d) | 2018-09-03 → 2018-04-06 (-150d) | 1d? → 1d | 13900d → 9600d |  | was named EWS-QA; constraint as late as possible → none; resources MEAL officer 1 → MEAL officer 2; MEAL staff 3; MEAL staff 4 |
| 376 | prepare for presentation (feedback sessions) | 2018-07-13 → 2018-04-06 (-98d) | 2018-09-03 → 2018-04-06 (-150d) | 35d → 0d | 10500d → 9600d | none → 375 | was named PLAA (per site); constraint as late as possible → none; resources MEAL officer 2 → MEAL officer 2; MEAL staff 3; MEAL staff 4 |
| 377 | **quarterly** | 2018-09-03 → 2018-04-05 (-151d) | 2018-09-03 → 2018-04-06 (-150d) | 1d? → 1d | 13900d → 9600d |  | was named outcome-iimpact; constraint as late as possible → none; resources MEAL officer 3 → none |

| ID | Task | Start | Finish | Duration | Total float | Predecessors | Other |
| --- | --- | --- | --- | --- | --- | --- | --- |
| 378 | gather, analyze, evaluate data | 2018-09-03 → 2018-04-05 (-151d) | 2018-09-03 → 2018-04-06 (-150d) | 1d? → 1d | 13900d → 9600d |  | was named project output; constraint as late as possible → none; resources MEAL officer 5 → MEAL officer 2; MEAL staff 3; MEAL staff 4 |
| 379 | prepare for presentation (feedback sessions) | 2018-09-03 → 2018-04-06 (-150d) | 2018-09-03 → 2018-04-06 (-150d) | 1d? → 0d | 13900d → 9600d | none → 378 | was named stakeholder concerns; constraint as late as possible → none; resources MEAL officer 5 → MEAL officer 2; MEAL staff 3; MEAL staff 4 |
| 380 | **annual** | 2018-02-08 → 2018-04-05 (+56d) | 2018-02-08 → 2018-04-06 (+57d) | 1d? → 1d | 13900d → 9600d |  | was named admin process; resources MEAL officer 4 → none |
| 381 | gather, analyze, evaluate data | 2018-09-03 → 2018-04-05 (-151d) | 2018-09-03 → 2018-04-06 (-150d) | 1d? → 1d | 13900d → 9600d |  | was named evaluate; constraint as late as possible → none; resources none → MEAL officer 2; MEAL staff 3; MEAL staff 4 |
| 382 | prepare for presentation (feedback sessions) | 2018-09-03 → 2018-04-06 (-150d) | 2018-09-03 → 2018-04-06 (-150d) | 1d? → 0d | 13900d → 9600d | none → 381 | was named provide recomms; constraint as late as possible → none; resources none → MEAL officer 2; MEAL staff 3; MEAL staff 4 |
| 383 | **PLAA** | 2018-08-30 → 2018-04-05 (-147d) | 2018-08-30 → 2018-09-04 (+5d) | 1d? → 97d? | 200d → none |  |  |
| 407 | conduct community fieldwork - write report | 2018-08-30 → 2018-07-16 (-45d) | 2018-08-30 → 2018-08-06 (-24d) | 1d? → 15d | 200d → none |  | was named activity series 1; resources none → social scientist 1; social scientist 2 |
| 408 | review | 2018-08-30 → 2018-08-06 (-24d) | 2018-08-30 → 2018-08-09 (-21d) | 1d? → 3d | 200d → none | none → 406, 405, 407 | was named gather data; resources none → MEAL officer 1; MEAL staff 1; MEAL staff 2 |
| 409 | **site 6** | 2018-08-30 → 2018-08-09 (-21d) | 2018-08-30 → 2018-09-04 (+5d) | 1d? → 18d | 200d → none | none → 404 | was named analyze, evaluate data |
| 410 | conduct sensor fieldwork - write report | 2018-08-30 → 2018-08-09 (-21d) | 2018-08-30 → 2018-08-21 (-9d) | 1d? → 8d | 200d → 700d |  | was named provide recommendations; resources none → eletech 1; eletech 2 |
| 412 | conduct community fieldwork - write report | 2018-08-30 → 2018-08-09 (-21d) |  | 1d? → 15d | 200d → none |  | was named activity series 1; resources none → social scientist 1; social scientist 2 |
| 413 | review |  | 2018-08-30 → 2018-09-04 (+5d) | 1d? → 3d | 200d → none | none → 411, 410, 412 | was named gather data; resources none → MEAL officer 1; MEAL staff 1; MEAL staff 2 |
| 414 | synthesis (across sites) | 2018-08-30 → 2018-04-05 (-147d) | 2018-08-30 → 2018-04-06 (-146d) |  | 200d → 9600d |  | was named analyze, evaluate data |
| 415 | **outcome-impact** | 2018-08-30 → 2018-04-05 (-147d) | 2018-08-30 → 2018-04-06 (-146d) |  | 200d → 9600d |  |  |
| 416 | **activity series 1** | 2018-08-30 → 2018-04-05 (-147d) | 2018-09-03 → 2018-04-06 (-150d) | 3d? → 1d? | none → 9600d |  |  |
| 417 | gather data | 2018-08-30 → 2018-04-05 (-147d) | 2018-08-30 → 2018-04-06 (-146d) |  | none → 9600d |  |  |
| 418 | analyze, evaluate data | 2018-08-31 → 2018-04-05 (-148d) | 2018-08-31 → 2018-04-06 (-147d) |  | none → 9600d | 417 → none |  |
| 419 | provide recommendations | 2018-09-03 → 2018-04-05 (-151d) | 2018-09-03 → 2018-04-06 (-150d) |  | none → 9600d | 418 → none |  |
| 420 | **project output** | 2018-08-30 → 2018-04-05 (-147d) | 2018-08-30 → 2018-04-06 (-146d) |  | 200d → 9600d |  |  |
| 421 | **activity series 1** | 2018-08-30 → 2018-04-05 (-147d) | 2018-08-30 → 2018-04-06 (-146d) |  | 200d → 9600d |  |  |
| 422 | gather data | 2018-08-30 → 2018-04-05 (-147d) | 2018-08-30 → 2018-04-06 (-146d) |  | 200d → 9600d |  |  |
| 423 | analyze, evaluate data | 2018-08-30 → 2018-04-05 (-147d) | 2018-08-30 → 2018-04-06 (-146d) |  | 200d → 9600d |  |  |
| 424 | provide recommendations | 2018-08-30 → 2018-04-05 (-147d) | 2018-08-30 → 2018-04-06 (-146d) |  | 200d → 9600d |  |  |
| 425 | **stakeholder concerns** | 2018-08-30 → 2018-04-05 (-147d) | 2018-08-30 → 2018-04-06 (-146d) |  | 200d → 9600d |  |  |
| 426 | **activity series 1** | 2018-08-30 → 2018-04-05 (-147d) | 2018-08-30 → 2018-04-06 (-146d) |  | 200d → 9600d |  |  |
| 427 | gather data | 2018-08-30 → 2018-04-05 (-147d) | 2018-08-30 → 2018-04-06 (-146d) |  | 200d → 9600d |  |  |
| 428 | analyze, evaluate data | 2018-08-30 → 2018-04-05 (-147d) | 2018-08-30 → 2018-04-06 (-146d) |  | 200d → 9600d |  |  |
| 429 | provide recommendations | 2018-08-30 → 2018-04-05 (-147d) | 2018-08-30 → 2018-04-06 (-146d) |  | 200d → 9600d |  |  |
| 430 | **admin process** | 2018-08-30 → 2018-04-05 (-147d) | 2018-08-30 → 2018-04-06 (-146d) |  | 200d → 9600d |  |  |
| 431 | **activity series 1** | 2018-08-30 → 2018-04-05 (-147d) | 2018-08-30 → 2018-04-06 (-146d) |  | 200d → 9600d |  |  |
| 432 | gather data | 2018-08-30 → 2018-04-05 (-147d) | 2018-08-30 → 2018-04-06 (-146d) |  | 200d → 9600d |  |  |
| 433 | analyze, evaluate data | 2018-08-30 → 2018-04-05 (-147d) | 2018-08-30 → 2018-04-06 (-146d) |  | 200d → 9600d |  |  |
| 434 | provide recommendations | 2018-08-30 → 2018-04-05 (-147d) | 2018-08-30 → 2018-04-06 (-146d) |  | 200d → 9600d |  |  |

## Version 3 (saved 2018-01-08)

Note of the change: organize resources into hierarchy

Last finish 2018-09-04 → 2018-09-03 (-1d).

Added:

| ID | Task | Duration | Start | Finish | Predecessors | Constraint | Resources |
| --- | --- | --- | --- | --- | --- | --- | --- |
| 28 | field data gathering | 26d | 2018-07-30 | 2018-09-03 | 26 | as late as possible | geol 3 |
| 29 | field data gathering | 13d | 2018-08-16 | 2018-09-03 | 26 | as late as possible | geotech 3 |

Changed:

| ID | Task | Start | Finish | Duration | Total float | Predecessors | Other |
| --- | --- | --- | --- | --- | --- | --- | --- |
| 1 | **Landslide risk information** | 2018-05-03 → 2018-05-16 (+13d) | 2018-09-04 → 2018-09-03 (-1d) | 77d? → 70d? |  |  |  |
| 2 | **methods report (Hazards)** | 2018-06-12 → 2018-06-25 (+13d) | 2018-09-04 → 2018-09-03 (-1d) | 54d? → 44d? |  |  |  |
| 3 | MoMs |  | 2018-09-04 → 2018-09-03 (-1d) |  | 12750d → 12500d |  |  |
| 4 | study surficial displacement behaviour |  | 2018-09-04 → 2018-09-03 (-1d) |  | 12750d → 12500d |  |  |
| 5 | **slope stability models (FEM)** | 2018-07-05 → 2018-07-10 (+5d) | 2018-09-04 → 2018-09-03 (-1d) | 40d → 36d |  |  |  |
| 6 | review related literature | 2018-07-05 → 2018-07-10 (+5d) | 2018-07-16 → 2018-07-18 (+2d) |  | 8950d → 9100d |  |  |
| 7 | develop prototype | 2018-07-16 → 2018-07-19 (+3d) | 2018-07-23 → 2018-07-25 (+2d) |  |  |  |  |
| 8 | test model with monitoring data | 2018-07-23 → 2018-07-26 (+3d) | 2018-08-15 → 2018-08-14 (-1d) | 17d → 14d |  |  |  |
| 9 | field data gathering | 2018-07-30 → 2018-08-02 (+3d) | 2018-08-15 → 2018-08-14 (-1d) | 9d → 6d |  |  |  |
| 10 | evaluate model (report as PI of slope stab model) |  | 2018-08-21 → 2018-08-20 (-1d) |  |  |  |  |
| 11 | write report |  | 2018-08-28 → 2018-08-27 (-1d) |  |  |  |  |
| 12 | develop training materials |  | 2018-08-31 → 2018-08-30 (-1d) |  |  |  |  |
| 13 | conduct training |  | 2018-09-04 → 2018-09-03 (-1d) |  |  |  |  |
| 14 | **slope stability models (LEM1)** |  | 2018-09-04 → 2018-09-03 (-1d) | 25d → 24d |  |  |  |
| 15 | review related literature |  | 2018-08-02 → 2018-08-01 (-1d) |  | 10350d → 10300d |  |  |
| 16 | develop prototype |  | 2018-08-09 → 2018-08-08 (-1d) |  |  |  |  |
| 17 | test model with monitoring data |  | 2018-08-16 → 2018-08-15 (-1d) |  |  |  |  |
| 18 | field data gathering | 2018-08-13 → 2018-08-16 (+3d) | 2018-09-04 → 2018-09-03 (-1d) | 15d → 13d | 200d → 500d |  | resources geol 2; geotech 2 → geol 2 |
| 19 | field data gathering | 2018-08-13 → 2018-08-16 (+3d) | 2018-09-04 → 2018-09-03 (-1d) | 15d → 13d | 200d → 500d | 26 → 16 | resources geol 3; geotech 3 → geotech 2 |
| 20 | evaluate model (report as PI of slope stab model) |  | 2018-08-21 → 2018-08-20 (-1d) |  |  |  |  |
| 21 | write report |  | 2018-08-28 → 2018-08-27 (-1d) |  |  |  |  |
| 22 | develop training materials |  | 2018-08-31 → 2018-08-30 (-1d) |  |  |  |  |
| 23 | conduct training |  | 2018-09-04 → 2018-09-03 (-1d) |  |  |  |  |
| 24 | **slope stability models (LEM2)** | 2018-07-26 → 2018-07-16 (-10d) | 2018-09-04 → 2018-09-03 (-1d) | 25d → 32d |  |  |  |
| 25 | review related literature | 2018-07-26 → 2018-07-16 (-10d) | 2018-08-02 → 2018-07-20 (-13d) |  | 10350d → 9500d |  |  |
| 26 | develop prototype | 2018-08-02 → 2018-07-23 (-10d) | 2018-08-09 → 2018-07-27 (-13d) |  |  |  |  |
| 27 | test model with monitoring data |  | 2018-08-16 → 2018-08-15 (-1d) |  | none → 500d |  |  |
| 30 | evaluate model (report as PI of slope stab model) |  | 2018-08-21 → 2018-08-20 (-1d) |  |  |  |  |
| 31 | write report |  | 2018-08-28 → 2018-08-27 (-1d) |  |  |  |  |
| 32 | develop training materials |  | 2018-08-31 → 2018-08-30 (-1d) |  |  |  |  |
| 33 | conduct training |  | 2018-09-04 → 2018-09-03 (-1d) |  |  |  |  |
| 34 | **runout model 1** |  | 2018-09-04 → 2018-09-03 (-1d) | 35d → 34d |  |  |  |
| 35 | review related literature |  | 2018-07-26 → 2018-07-25 (-1d) |  | 9350d → 9200d |  |  |
| 36 | develop prototype |  | 2018-08-09 → 2018-08-08 (-1d) |  |  |  |  |
| 37 | test model with monitoring data |  | 2018-08-16 → 2018-08-15 (-1d) |  |  |  |  |
| 38 | evaluate model (report as PI of runout model) |  | 2018-08-21 → 2018-08-20 (-1d) |  |  |  |  |
| 39 | write report |  | 2018-08-28 → 2018-08-27 (-1d) |  |  |  |  |
| 40 | develop training materials |  | 2018-08-31 → 2018-08-30 (-1d) |  |  |  |  |
| 41 | conduct training |  | 2018-09-04 → 2018-09-03 (-1d) |  |  |  |  |
| 42 | **runout model 2** |  | 2018-09-04 → 2018-09-03 (-1d) | 30d → 29d |  |  |  |
| 43 | review related literature |  | 2018-07-26 → 2018-07-25 (-1d) |  | 9850d → 9800d |  |  |
| 44 | develop prototype |  | 2018-08-09 → 2018-08-08 (-1d) |  |  |  |  |
| 45 | test model with monitoring data |  | 2018-08-16 → 2018-08-15 (-1d) |  |  |  |  |
| 46 | evaluate model (report as PI of runout model) |  | 2018-08-21 → 2018-08-20 (-1d) |  |  |  |  |
| 47 | write report |  | 2018-08-28 → 2018-08-27 (-1d) |  |  |  |  |
| 48 | develop training materials |  | 2018-08-31 → 2018-08-30 (-1d) |  |  |  |  |
| 49 | conduct training |  | 2018-09-04 → 2018-09-03 (-1d) |  |  |  |  |
| 50 | **threshold model 1** | 2018-06-12 → 2018-06-25 (+13d) | 2018-07-31 → 2018-08-07 (+7d) | 32d → 27d |  |  |  |
| 51 | review related literature | 2018-06-12 → 2018-06-25 (+13d) | 2018-06-19 → 2018-06-29 (+10d) |  | 7450d → 8300d |  |  |
| 52 | develop prototype | 2018-06-19 → 2018-07-02 (+13d) | 2018-07-12 → 2018-07-19 (+7d) | 17d → 14d |  |  |  |
| 53 | implement model alongside operations | 2018-07-12 → 2018-07-20 (+8d) | 2018-07-20 → 2018-07-27 (+7d) |  |  |  |  |
| 54 | evaluate model (report as PI of threshold model) | 2018-07-20 → 2018-07-30 (+10d) | 2018-07-23 → 2018-07-30 (+7d) |  |  |  |  |
| 55 | write report | 2018-07-23 → 2018-07-31 (+8d) | 2018-07-27 → 2018-08-03 (+7d) |  |  |  |  |
| 56 | develop training materials | 2018-07-27 → 2018-08-06 (+10d) | 2018-07-30 → 2018-08-06 (+7d) |  |  |  |  |
| 57 | conduct training | 2018-07-30 → 2018-08-07 (+8d) | 2018-07-31 → 2018-08-07 (+7d) |  |  |  |  |
| 58 | **threshold model 2** | 2018-06-12 → 2018-06-25 (+13d) | 2018-07-31 → 2018-08-07 (+7d) | 32d → 27d |  |  |  |
| 59 | review related literature | 2018-06-12 → 2018-06-25 (+13d) | 2018-06-19 → 2018-06-29 (+10d) |  | 7450d → 8300d |  |  |
| 60 | develop prototype | 2018-06-19 → 2018-07-02 (+13d) | 2018-07-12 → 2018-07-19 (+7d) | 17d → 14d |  |  |  |
| 61 | implement model alongside operations | 2018-07-12 → 2018-07-20 (+8d) | 2018-07-20 → 2018-07-27 (+7d) |  |  |  |  |
| 62 | evaluate model (report as PI of threshold model) | 2018-07-20 → 2018-07-30 (+10d) | 2018-07-23 → 2018-07-30 (+7d) |  |  |  |  |
| 63 | write report | 2018-07-23 → 2018-07-31 (+8d) | 2018-07-27 → 2018-08-03 (+7d) |  |  |  |  |
| 64 | develop training materials | 2018-07-27 → 2018-08-06 (+10d) | 2018-07-30 → 2018-08-06 (+7d) |  |  |  |  |
| 65 | conduct training | 2018-07-30 → 2018-08-07 (+8d) | 2018-07-31 → 2018-08-07 (+7d) |  |  |  |  |
| 66 | **threshold model 3** | 2018-06-12 → 2018-06-25 (+13d) | 2018-07-31 → 2018-08-07 (+7d) | 32d → 27d |  |  |  |
| 67 | review related literature | 2018-06-12 → 2018-06-25 (+13d) | 2018-06-19 → 2018-06-29 (+10d) |  | 7450d → 8300d |  |  |
| 68 | develop prototype | 2018-06-19 → 2018-07-02 (+13d) | 2018-07-12 → 2018-07-19 (+7d) | 17d → 14d |  |  |  |
| 69 | implement model alongside operations | 2018-07-12 → 2018-07-20 (+8d) | 2018-07-20 → 2018-07-27 (+7d) |  |  |  |  |
| 70 | evaluate model (report as PI of threshold model) | 2018-07-20 → 2018-07-30 (+10d) | 2018-07-23 → 2018-07-30 (+7d) |  |  |  |  |
| 71 | write report | 2018-07-23 → 2018-07-31 (+8d) | 2018-07-27 → 2018-08-03 (+7d) |  |  |  |  |
| 72 | develop training materials | 2018-07-27 → 2018-08-06 (+10d) | 2018-07-30 → 2018-08-06 (+7d) |  |  |  |  |

| ID | Task | Start | Finish | Duration | Total float | Other |
| --- | --- | --- | --- | --- | --- | --- |
| 73 | conduct training | 2018-07-30 → 2018-08-07 (+8d) | 2018-07-31 → 2018-08-07 (+7d) |  |  |  |
| 74 | **threshold model 4** | 2018-06-12 → 2018-06-25 (+13d) | 2018-07-31 → 2018-08-07 (+7d) | 32d → 27d |  |  |
| 75 | review related literature | 2018-06-12 → 2018-06-25 (+13d) | 2018-06-19 → 2018-06-29 (+10d) |  | 7450d → 8300d |  |
| 76 | develop prototype | 2018-06-19 → 2018-07-02 (+13d) | 2018-07-12 → 2018-07-19 (+7d) | 17d → 14d |  |  |
| 77 | implement model alongside operations | 2018-07-12 → 2018-07-20 (+8d) | 2018-07-20 → 2018-07-27 (+7d) |  |  |  |
| 78 | evaluate model (report as PI of threshold model) | 2018-07-20 → 2018-07-30 (+10d) | 2018-07-23 → 2018-07-30 (+7d) |  |  |  |
| 79 | write report | 2018-07-23 → 2018-07-31 (+8d) | 2018-07-27 → 2018-08-03 (+7d) |  |  |  |
| 80 | develop training materials | 2018-07-27 → 2018-08-06 (+10d) | 2018-07-30 → 2018-08-06 (+7d) |  |  |  |
| 81 | conduct training | 2018-07-30 → 2018-08-07 (+8d) | 2018-07-31 → 2018-08-07 (+7d) |  |  |  |
| 82 | **threshold model 5** | 2018-06-12 → 2018-06-25 (+13d) | 2018-07-31 → 2018-08-07 (+7d) | 32d → 27d |  |  |
| 83 | review related literature | 2018-06-12 → 2018-06-25 (+13d) | 2018-06-19 → 2018-06-29 (+10d) |  | 7450d → 8300d |  |
| 84 | develop prototype | 2018-06-19 → 2018-07-02 (+13d) | 2018-07-12 → 2018-07-19 (+7d) | 17d → 14d |  |  |
| 85 | implement model alongside operations | 2018-07-12 → 2018-07-20 (+8d) | 2018-07-20 → 2018-07-27 (+7d) |  |  |  |
| 86 | evaluate model (report as PI of threshold model) | 2018-07-20 → 2018-07-30 (+10d) | 2018-07-23 → 2018-07-30 (+7d) |  |  |  |
| 87 | write report | 2018-07-23 → 2018-07-31 (+8d) | 2018-07-27 → 2018-08-03 (+7d) |  |  |  |
| 88 | develop training materials | 2018-07-27 → 2018-08-06 (+10d) | 2018-07-30 → 2018-08-06 (+7d) |  |  |  |
| 89 | conduct training | 2018-07-30 → 2018-08-07 (+8d) | 2018-07-31 → 2018-08-07 (+7d) |  |  |  |
| 90 | **threshold model 6** | 2018-06-12 → 2018-06-25 (+13d) | 2018-07-31 → 2018-08-07 (+7d) | 32d → 27d |  |  |
| 91 | review related literature | 2018-06-12 → 2018-06-25 (+13d) | 2018-06-19 → 2018-06-29 (+10d) |  | 7450d → 8300d |  |
| 92 | develop prototype | 2018-06-19 → 2018-07-02 (+13d) | 2018-07-12 → 2018-07-19 (+7d) | 17d → 14d |  |  |
| 93 | implement model alongside operations | 2018-07-12 → 2018-07-20 (+8d) | 2018-07-20 → 2018-07-27 (+7d) |  |  |  |
| 94 | evaluate model (report as PI of threshold model) | 2018-07-20 → 2018-07-30 (+10d) | 2018-07-23 → 2018-07-30 (+7d) |  |  |  |
| 95 | write report | 2018-07-23 → 2018-07-31 (+8d) | 2018-07-27 → 2018-08-03 (+7d) |  |  |  |
| 96 | develop training materials | 2018-07-27 → 2018-08-06 (+10d) | 2018-07-30 → 2018-08-06 (+7d) |  |  |  |
| 97 | conduct training | 2018-07-30 → 2018-08-07 (+8d) | 2018-07-31 → 2018-08-07 (+7d) |  |  |  |
| 98 | develop threshold performance index | 2018-07-03 → 2018-07-12 (+9d) | 2018-07-20 → 2018-07-27 (+7d) | 13d → 12d | 8750d → 9300d |  |
| 99 | **methods report (C&V)** | 2018-06-19 → 2018-06-29 (+10d) | 2018-09-04 → 2018-09-03 (-1d) | 49d → 39d |  |  |
| 100 | **method 1** | 2018-06-19 → 2018-06-29 (+10d) | 2018-09-04 → 2018-09-03 (-1d) | 49d → 39d |  |  |
| 101 | evaluate C&V frameworks (explore REDAS as one of the frameworks/models) | 2018-06-19 → 2018-06-29 (+10d) | 2018-07-12 → 2018-07-18 (+6d) | 17d → 14d | 7750d → 8400d |  |
| 102 | development of C&V assessment modules | 2018-07-12 → 2018-07-19 (+7d) | 2018-08-03 → 2018-08-09 (+6d) |  |  |  |
| 103 | recommend C&V info system |  | 2018-09-04 → 2018-09-03 (-1d) |  | 1700d → 1100d |  |
| 104 | design database (linking to EWSL data storage and management)) | 2018-08-23 → 2018-08-24 (+1d) | 2018-08-31 → 2018-08-30 (-1d) | 6d → 5d | 2700d → 2200d |  |
| 105 | write report |  | 2018-09-04 → 2018-09-03 (-1d) |  |  |  |
| 106 | develop training materials | 2018-08-03 → 2018-08-10 (+7d) | 2018-08-28 → 2018-08-27 (-1d) | 17d → 12d |  |  |
| 107 | conduct training |  | 2018-09-04 → 2018-09-03 (-1d) |  |  |  |
| 108 | **method 2** | 2018-06-19 → 2018-06-29 (+10d) | 2018-09-04 → 2018-09-03 (-1d) | 49d → 39d |  |  |
| 109 | evaluate C&V frameworks (explore REDAS as one of the frameworks/models) | 2018-06-19 → 2018-06-29 (+10d) | 2018-07-12 → 2018-07-18 (+6d) | 17d → 14d | 7750d → 8400d |  |
| 110 | development of C&V assessment modules | 2018-07-12 → 2018-07-19 (+7d) | 2018-08-03 → 2018-08-09 (+6d) |  |  |  |
| 111 | recommend C&V info system |  | 2018-09-04 → 2018-09-03 (-1d) |  | 1700d → 1100d |  |
| 112 | design database (linking to EWSL data storage and management)) | 2018-08-23 → 2018-08-24 (+1d) | 2018-08-31 → 2018-08-30 (-1d) | 6d → 5d | 2700d → 2200d |  |
| 113 | write report |  | 2018-09-04 → 2018-09-03 (-1d) |  |  |  |
| 114 | develop training materials | 2018-08-03 → 2018-08-10 (+7d) | 2018-08-28 → 2018-08-27 (-1d) | 17d → 12d |  |  |
| 115 | conduct training |  | 2018-09-04 → 2018-09-03 (-1d) |  |  |  |
| 116 | **methods report (Risk)** | 2018-05-03 → 2018-05-16 (+13d) | 2018-09-04 → 2018-09-03 (-1d) | 77d → 70d |  |  |
| 117 | evaluate frameworks for risk | 2018-05-03 → 2018-05-16 (+13d) | 2018-05-28 → 2018-06-07 (+10d) |  | 4950d → 5600d |  |
| 118 | develop methods | 2018-05-28 → 2018-06-08 (+11d) | 2018-06-15 → 2018-06-25 (+10d) | 14d → 12d |  |  |
| 119 | write report | 2018-06-15 → 2018-06-26 (+11d) | 2018-06-19 → 2018-06-27 (+8d) |  |  |  |
| 120 | develop training materials | 2018-06-19 → 2018-06-28 (+9d) | 2018-07-03 → 2018-07-11 (+8d) |  |  |  |
| 121 | conduct training (NC 3) | 2018-07-03 → 2018-07-12 (+9d) | 2018-09-04 → 2018-09-03 (-1d) | 45d → 38d |  |  |
| 122 | **per site landslide risk reports (focus sites)** | 2018-06-19 → 2018-06-28 (+9d) | 2018-09-04 → 2018-09-03 (-1d) | 49d? → 41d? |  |  |
| 123 | integration of hazard, capacity, and vulnerability information | 2018-08-14 → 2018-08-20 (+6d) | 2018-09-04 → 2018-09-03 (-1d) | 15d → 11d |  |  |
| 124 | **per site hazard reports (all sites)** | 2018-07-04 → 2018-07-05 (+1d) | 2018-08-14 → 2018-08-17 (+3d) | 25d? → 29d? |  |  |
| 125 | conduct fieldwork (resurvey) | 2018-07-04 → 2018-07-05 (+1d) | 2018-08-08 → 2018-08-13 (+5d) |  | 9150d → 8700d | resources geol 6 → none |
| 126 | consolidate field notes | 2018-08-08 → 2018-08-14 (+6d) | 2018-08-09 → 2018-08-14 (+5d) |  |  | resources geol 6 → none |
| 127 | review and identify active sites | 2018-08-07 → 2018-08-13 (+6d) | 2018-08-08 → 2018-08-13 (+5d) |  | 11150d → 11100d | resources geol 6 → none |
| 128 | conduct quarterly survey (RTS/RTK/remap) | 2018-08-08 → 2018-08-14 (+6d) | 2018-08-09 → 2018-08-14 (+5d) |  |  | resources Surveyor 1 → none |
| 129 | analyze monitoring data (requires access to database) | 2018-08-09 → 2018-08-15 (+6d) | 2018-08-10 → 2018-08-15 (+5d) |  |  | resources geol 6 → none |
| 130 | update volume, depth, extent (using current models) | 2018-08-10 → 2018-08-16 (+6d) | 2018-08-13 → 2018-08-16 (+3d) |  |  | resources geol 6 → none |
| 131 | update thresholds with monitoring data and performance index | 2018-08-10 → 2018-08-16 (+6d) | 2018-08-13 → 2018-08-16 (+3d) |  | 11150d → 11400d | resources geol 6 → none |
| 132 | update per site hazard reports (updated maps as PI) | 2018-08-13 → 2018-08-17 (+4d) | 2018-08-14 → 2018-08-17 (+3d) |  |  | resources geol 6 → none |
| 133 | **per site capacity and vulnerability reports (2 focus sites, Mindanao)** | 2018-06-19 → 2018-06-28 (+9d) | 2018-08-14 → 2018-08-17 (+3d) | 35d → 31d |  |  |
| 134 | conduct data gathering | 2018-06-19 → 2018-06-28 (+9d) | 2018-07-10 → 2018-07-13 (+3d) | 15d → 12d | 7750d → 8300d |  |
| 135 | analyze data | 2018-07-10 → 2018-07-16 (+6d) | 2018-08-07 → 2018-08-10 (+3d) |  |  |  |
| 136 | update per site capacity and vulnerability reports | 2018-08-07 → 2018-08-13 (+6d) | 2018-08-14 → 2018-08-17 (+3d) |  |  |  |
| 137 | **"Alert protocol" -- essentually how risk knowledge informs early warning practice** | 2018-07-10 → 2018-07-13 (+3d) | 2018-08-20 → 2018-08-17 (-3d) | 26d → 23d |  |  |
| 138 | review of related literature | 2018-07-10 → 2018-07-13 (+3d) | 2018-07-30 → 2018-08-01 (+2d) |  | 9250d → 9400d |  |
| 139 | review and evaluate current alert protocol | 2018-07-30 → 2018-08-02 (+3d) | 2018-08-16 → 2018-08-15 (-1d) | 13d → 10d |  |  |
| 140 | recomend alert protocol |  | 2018-08-20 → 2018-08-17 (-3d) |  |  |  |
| 141 | **Early warning system for landslides** |  | 2018-09-04 → 2018-09-03 (-1d) | 128.5d? → 126d? |  |  |
| 142 | **Data gathering system** |  | 2018-09-04 → 2018-09-03 (-1d) | 128.5d → 126d |  |  |

| ID | Task | Start | Finish | Duration | Total float | Other |
| --- | --- | --- | --- | --- | --- | --- |
| 143 | **community reported data** |  | 2018-09-04 → 2018-09-03 (-1d) | 128.5d → 126d |  |  |
| 145 | improve means of gathering surficial data (including transmission) | 2018-07-05 → 2018-07-06 (+1d) | 2018-09-04 → 2018-09-03 (-1d) | 39d → 37d | 3900d → 3000d |  |
| 146 | develop on the ground validation of rainfall via sensors | 2018-07-05 → 2018-07-06 (+1d) | 2018-09-04 → 2018-09-03 (-1d) | 39d → 37d | 8850d → 8800d |  |
| 147 | **tilt** |  |  | 128d → 126d | 50d → none |  |
| 149 | characterize tilt sensor(angle range and accuracy of v3 tilt sensor) |  | 2018-02-20 → 2018-02-19 (-1d) | 9d → 8d | 12050d → 11900d |  |
| 153 | **manufacturing monitoring** |  |  | 128d → 126d | 50d → none |  |
| 155 | manufacture |  |  | 106d → 105d | -50d → none |  |
| 156 | troubleshoot manufacturing issues |  |  | 106d → 105d | 1250d → 1100d |  |
| 157 | evaluate sample boards |  |  | 12d → 10d | 50d → none |  |
| 160 | **soms** |  | 2018-05-14 → 2018-05-15 (+1d) |  | 7150d → 7000d |  |
| 166 | develop new soil moisture sensor (improve accuracy, packaging, coms) prototype |  | 2018-04-17 → 2018-04-18 (+1d) |  | 7050d → 7000d |  |
| 167 | deploy new soms | 2018-04-18 → 2018-04-19 (+1d) | 2018-04-24 → 2018-04-25 (+1d) |  | 6950d → 6700d |  |
| 168 | develop filter | 2018-04-25 → 2018-04-26 (+1d) | 2018-05-07 → 2018-05-08 (+1d) |  | 6950d → 7000d |  |
| 169 | implement filter | 2018-05-08 → 2018-05-09 (+1d) | 2018-05-14 → 2018-05-15 (+1d) |  | 7150d → 7000d |  |
| 170 | **uts-ext** |  | 2018-09-04 → 2018-09-03 (-1d) | 128.5d → 126d |  |  |
| 172 | char-dev-dep | 2018-04-25 → 2018-05-04 (+9d) | 2018-07-16 → 2018-07-24 (+8d) |  | 4650d → 5300d |  |
| 173 | develop filter | 2018-07-16 → 2018-07-25 (+9d) | 2018-08-21 → 2018-08-24 (+3d) | 26d → 23d |  |  |
| 174 | implement filter | 2018-08-21 → 2018-08-27 (+6d) | 2018-09-04 → 2018-09-03 (-1d) | 10d → 6d |  |  |
| 175 | **lidar-ext** |  | 2018-09-04 → 2018-09-03 (-1d) | 128.5d → 126d |  |  |
| 177 | char-dev-dep | 2018-04-25 → 2018-05-04 (+9d) | 2018-07-16 → 2018-07-24 (+8d) |  | 4650d → 5300d |  |
| 178 | develop filter | 2018-07-16 → 2018-07-25 (+9d) | 2018-08-21 → 2018-08-24 (+3d) | 26d → 23d |  |  |
| 179 | implement filter | 2018-08-21 → 2018-08-27 (+6d) | 2018-09-04 → 2018-09-03 (-1d) | 10d → 6d |  |  |
| 180 | **rain gauge** |  | 2018-09-04 → 2018-09-03 (-1d) | 128.5d → 126d |  |  |
| 182 | char-dev-dep | 2018-06-26 → 2018-07-04 (+8d) | 2018-08-09 → 2018-08-08 (-1d) | 32d → 26d | 8550d → 9000d |  |
| 183 | develop filter |  | 2018-08-28 → 2018-08-27 (-1d) |  |  |  |
| 184 | implement filter |  | 2018-09-04 → 2018-09-03 (-1d) |  |  |  |
| 185 | **piezometer** |  | 2018-09-04 → 2018-09-03 (-1d) | 128.5d → 126d |  |  |
| 187 | char-dev-dep | 2018-07-16 → 2018-07-20 (+4d) | 2018-08-13 → 2018-08-16 (+3d) |  | 9550d → 9900d |  |
| 188 | develop filter | 2018-08-13 → 2018-08-17 (+4d) | 2018-08-21 → 2018-08-24 (+3d) |  |  |  |
| 189 | implement filter | 2018-08-21 → 2018-08-27 (+6d) | 2018-09-04 → 2018-09-03 (-1d) | 10d → 6d |  |  |
| 190 | **gateway datalogger** |  | 2018-08-10 → 2018-08-09 (-1d) | 111.5d → 113d |  |  |
| 192 | char-dev-dep | 2018-06-11 → 2018-06-19 (+8d) | 2018-08-10 → 2018-08-09 (-1d) | 44d → 38d | 7750d → 8000d |  |
| 193 | **router datalogger** |  | 2018-09-04 → 2018-09-03 (-1d) | 128.5d → 126d |  |  |
| 195 | char-dev-dep | 2018-08-01 → 2018-08-09 (+8d) | 2018-09-04 → 2018-09-03 (-1d) | 24d → 18d | 10850d → 11000d |  |
| 196 | **sensor datalogger** |  | 2018-04-27 → 2018-04-30 (+3d) |  | 8050d → 7800d |  |
| 201 | **manufacturing monitoring** |  | 2018-04-27 → 2018-04-30 (+3d) |  | 8050d → 7800d |  |
| 203 | manufacture |  | 2018-04-20 → 2018-04-23 (+3d) |  | 8050d → 7900d |  |
| 204 | troubleshoot manufacturing issues |  | 2018-04-20 → 2018-04-23 (+3d) |  | 8550d → 8300d |  |
| 205 | evaluate sample boards | 2018-04-23 → 2018-04-24 (+1d) | 2018-04-27 → 2018-04-30 (+3d) |  | 8050d → 7800d |  |
| 206 | **stand alone datalogger** |  | 2018-08-10 → 2018-08-09 (-1d) | 111.5d → 113d |  |  |
| 208 | char-dev-dep | 2018-07-10 → 2018-07-13 (+3d) | 2018-08-10 → 2018-08-09 (-1d) | 23d → 20d | 9450d → 9400d |  |
| 209 | **SMS parsing system for new data structures** |  | 2018-09-04 → 2018-09-03 (-1d) | 17d → 15d |  |  |
| 210 | develop sms parsing system |  | 2018-09-04 → 2018-09-03 (-1d) | 17d → 15d |  | resources emb engr 9 → none |
| 211 | **Data storage and management system** | 2018-05-31 → 2018-06-15 (+15d) | 2018-08-02 → 2018-08-08 (+6d) | 40d → 35d |  |  |
| 212 | develop new structure for storage and management | 2018-05-31 → 2018-06-15 (+15d) | 2018-06-28 → 2018-07-10 (+12d) | 20d → 18d | 6950d → 7500d |  |
| 213 | develop automated backup | 2018-07-13 → 2018-07-20 (+7d) | 2018-07-26 → 2018-08-01 (+6d) |  | 1100d → 700d |  |
| 214 | recommend performance metrics | 2018-07-26 → 2018-08-02 (+7d) | 2018-08-02 → 2018-08-08 (+6d) |  |  |  |
| 215 | develop data access for risk assessment | 2018-06-28 → 2018-07-11 (+13d) | 2018-07-12 → 2018-07-19 (+7d) | 10d → 7d |  |  |
| 216 | **Data analysis system** |  | 2018-09-04 → 2018-09-03 (-1d) | 128.5d? → 126d? |  |  |
| 217 | **threshold scripts** | 2018-07-31 → 2018-08-08 (+8d) | 2018-08-01 → 2018-08-08 (+7d) |  |  |  |
| 218 | implement thresholds | 2018-07-31 → 2018-08-08 (+8d) | 2018-08-01 → 2018-08-08 (+7d) |  |  |  |
| 219 | **visualization scripts** |  | 2018-09-04 → 2018-09-03 (-1d) | 128.5d? → 126d? |  |  |
| 220 | research data visualization concepts (inc. hazard concepts) | 2018-07-18 → 2018-07-23 (+5d) | 2018-08-01 → 2018-08-08 (+7d) |  | 9850d → 10200d | resources data scientist 8 → none |
| 221 | develop new web charts | 2018-08-01 → 2018-08-09 (+8d) | 2018-09-04 → 2018-09-03 (-1d) | 24d → 18d |  | resources full stack dev 1 → eletech |
| 222 | improvement of existing web charts |  | 2018-09-04 → 2018-09-03 (-1d) |  | 12750d → 12500d | resources web dev 2 → full stack dev 2 |
| 223 | improvement of webchart generation |  | 2018-09-04 → 2018-09-03 (-1d) |  | 12750d → 12500d | resources web dev 2 → full stack dev 2 |
| 224 | provide initial performance metrics based on 2017 experience |  |  |  | 12750d → 12500d | resources full stack dev 1 → eletech |
| 225 | recommend performance metrics | 2018-08-01 → 2018-08-08 (+7d) | 2018-08-02 → 2018-08-08 (+6d) |  | 10750d → 11100d |  |
| 226 | draft process profile (recomm to automation integration) | 2018-08-08 → 2018-08-10 (+2d) | 2018-08-10 → 2018-08-13 (+3d) |  | 11250d → 11000d |  |
| 227 | **Dissemination system** |  | 2018-09-04 → 2018-09-03 (-1d) | 128.5d? → 126d? |  |  |
| 228 | **alert generation module** | 2018-08-01 → 2018-08-08 (+7d) | 2018-09-04 → 2018-09-03 (-1d) | 21d → 18d |  |  |
| 229 | create modularized infrastructure for different operational triggers |  | 2018-09-04 → 2018-09-03 (-1d) |  | 12350d → 12200d |  |
| 230 | create "special cases" tables (e.g., Puguis) | 2018-08-23 → 2018-08-24 (+1d) | 2018-08-31 → 2018-08-30 (-1d) | 6d → 5d | 12150d → 12000d |  |
| 231 | implement alert protocol (trigger to alert) revisions |  | 2018-09-04 → 2018-09-03 (-1d) |  |  |  |
| 232 | recommend performance metrics (in relation to automation) | 2018-08-01 → 2018-08-08 (+7d) | 2018-08-02 → 2018-08-08 (+6d) |  | 10750d → 11100d |  |
| 233 | draft process profile (recomm to automation integration) | 2018-08-08 → 2018-08-10 (+2d) | 2018-08-10 → 2018-08-13 (+3d) |  | 11250d → 11000d |  |
| 234 | **GSM module server** |  | 2018-08-10 → 2018-08-13 (+3d) | 111.5d? → 112d? | 1700d → 1400d |  |
| 235 | **develop new GSM module server features** |  | 2018-02-27 → 2018-02-26 (-1d) | 13d → 12d | 11550d → 11400d |  |
| 236 | develop power autonomy |  | 2018-02-27 → 2018-02-26 (-1d) | 14d → 13d | 9550d → 9800d |  |
| 237 | develop multiple gsm module hardware |  | 2018-02-27 → 2018-02-26 (-1d) | 14d → 13d | 11550d → 11400d |  |

| ID | Task | Start | Finish | Duration | Total float | Other |
| --- | --- | --- | --- | --- | --- | --- |
| 239 | recommend performance metrics (in relation to automation) | 2018-08-01 → 2018-08-08 (+7d) | 2018-08-02 → 2018-08-08 (+6d) |  | 10750d → 11100d |  |
| 240 | draft process profile (recomm to automation integration) | 2018-08-08 → 2018-08-10 (+2d) | 2018-08-10 → 2018-08-13 (+3d) |  | 11250d → 11000d |  |
| 241 | **chatterbox** | 2018-08-01 → 2018-08-08 (+7d) | 2018-09-04 → 2018-09-03 (-1d) | 21d? → 18d? |  |  |
| 242 | revise scripts for SMS generation and sending (automation?) | 2018-08-21 → 2018-08-27 (+6d) | 2018-09-04 → 2018-09-03 (-1d) | 10d → 6d | 11950d → 12100d | resources web dev 3 → full stack dev 3 |
| 243 | implement feature requests |  | 2018-09-04 → 2018-09-03 (-1d) |  | 12750d → 12500d | resources web dev 3 → full stack dev 3 |
| 244 | improve performance |  | 2018-09-04 → 2018-09-03 (-1d) |  | 12750d → 12500d | resources web dev 3 → full stack dev 3 |
| 245 | recommend performance metrics (in relation to automation) | 2018-08-01 → 2018-08-08 (+7d) | 2018-08-02 → 2018-08-08 (+6d) |  | 10750d → 11100d | resources web dev 3 → full stack dev 3 |
| 246 | draft process profile (recomm to automation integration) | 2018-08-08 → 2018-08-10 (+2d) | 2018-08-10 → 2018-08-13 (+3d) |  | 11250d → 11000d | resources web dev 3 → full stack dev 3 |
| 247 | **webcall** | 2018-05-11 → 2018-05-25 (+14d) | 2018-08-10 → 2018-08-13 (+3d) | 60d → 49d |  |  |
| 248 | acquire, implement hardware | 2018-05-11 → 2018-05-25 (+14d) | 2018-07-10 → 2018-07-16 (+6d) | 42d → 37d | 5850d → 6400d | resources web dev 4 → full stack dev 4 |
| 249 | develop/integrate software | 2018-07-10 → 2018-07-17 (+7d) | 2018-08-01 → 2018-08-07 (+6d) |  |  | resources web dev 4 → full stack dev 4 |
| 250 | recommend performance metrics (in relation to automation) | 2018-08-01 → 2018-08-08 (+7d) | 2018-08-02 → 2018-08-08 (+6d) |  |  | resources web dev 4 → full stack dev 4 |
| 251 | draft process profile (recomm to automation integration) | 2018-08-08 → 2018-08-10 (+2d) | 2018-08-10 → 2018-08-13 (+3d) |  | 400d → 100d | resources web dev 4 → full stack dev 4 |
| 252 | **bulletin generator** |  | 2018-09-04 → 2018-09-03 (-1d) | 128.5d? → 126d? |  |  |
| 253 | revise scripts for bulletin generation and sending (automation?) |  | 2018-09-04 → 2018-09-03 (-1d) |  | 12350d → 12200d | resources web dev 5 → none |
| 254 | implement feature requests |  |  |  | 12750d → 12500d | resources web dev 5 → none |
| 255 | improve performance |  | 2018-09-04 → 2018-09-03 (-1d) |  | 12750d → 12500d | resources web dev 5 → none |
| 256 | recommend performance metrics (in relation to automation) | 2018-08-01 → 2018-08-08 (+7d) | 2018-08-02 → 2018-08-08 (+6d) |  | 10750d → 11100d | resources web dev 5 → none |
| 257 | draft process profile (recomm to automation integration) | 2018-08-08 → 2018-08-10 (+2d) | 2018-08-10 → 2018-08-13 (+3d) |  | 11250d → 11000d | resources web dev 5 → none |
| 258 | **Local Info system (ISD)** | 2018-04-20 → 2018-05-10 (+20d) | 2018-09-04 → 2018-09-03 (-1d) | 86d → 74d |  |  |
| 259 | consolidate recommendations into ict specifications | 2018-04-20 → 2018-05-10 (+20d) | 2018-05-01 → 2018-05-18 (+17d) |  | 4350d → 5300d |  |
| 260 | use case testing | 2018-07-03 → 2018-07-12 (+9d) | 2018-09-04 → 2018-09-03 (-1d) | 45d → 38d | 4000d → 3400d |  |
| 261 | develop local codes updating system | 2018-08-10 → 2018-08-14 (+4d) | 2018-09-04 → 2018-09-03 (-1d) | 17d → 15d | 6500d → 5300d |  |
| 262 | port ews-l modules | 2018-05-01 → 2018-05-21 (+20d) | 2018-09-04 → 2018-09-03 (-1d) | 90d → 76d |  |  |
| 263 | **Automation integration system** |  | 2018-09-04 → 2018-09-03 (-1d) | 128.5d → 126d |  |  |
| 264 | automate recommended processes | 2018-08-10 → 2018-08-14 (+4d) | 2018-09-04 → 2018-09-03 (-1d) | 17d → 15d |  |  |
| 266 | **Performance monitoring system of central system** |  | 2018-09-04 → 2018-09-03 (-1d) | 128.5d? → 126d? |  |  |
| 267 | consolidate recommendations for performance metrics | 2018-08-02 → 2018-08-09 (+7d) | 2018-08-03 → 2018-08-09 (+6d) |  |  |  |
| 269 | **Performance monitoring system** | 2018-08-03 → 2018-08-10 (+7d) | 2018-09-04 → 2018-09-03 (-1d) | 19d? → 15d? |  |  |
| 270 | develop PMS backbone stable version | 2018-08-03 → 2018-08-10 (+7d) | 2018-08-28 → 2018-08-27 (-1d) | 17d → 12d |  |  |
| 271 | maintain PMS |  | 2018-08-29 → 2018-08-28 (-1d) |  |  | resources programmer 5 → none |
| 272 | develop agile PMS components |  | 2018-08-29 → 2018-08-28 (-1d) |  |  | resources programmer 6 → none |
| 273 | develop generic visualization charts |  | 2018-09-04 → 2018-09-03 (-1d) |  |  | resources web dev 5 → none |
| 275 | **Organized Local Early Warning Committee (LEWC)** | 2018-06-07 → 2018-06-21 (+14d) | 2018-09-04 → 2018-09-03 (-1d) | 57d → 46d |  |  |
| 276 | **LEWC org structure and mission/vision (47 sites)** | 2018-06-13 → 2018-06-22 (+9d) | 2018-09-04 → 2018-09-03 (-1d) | 53d → 44d |  |  |
| 277 | prepare modules | 2018-06-13 → 2018-06-22 (+9d) | 2018-07-03 → 2018-07-11 (+8d) |  | 7650d → 7900d |  |
| 278 | conduct training/ gather data | 2018-07-03 → 2018-07-12 (+9d) | 2018-09-04 → 2018-09-03 (-1d) | 45d → 38d |  |  |
| 279 | **Guidelines for community organizing (2 sites)** | 2018-06-07 → 2018-06-21 (+14d) | 2018-09-04 → 2018-09-03 (-1d) | 57d → 46d |  |  |
| 280 | develop methods for community organizing | 2018-06-07 → 2018-06-21 (+14d) | 2018-07-24 → 2018-08-01 (+8d) | 33d → 30d | 7250d → 8100d |  |
| 281 | gather data (fieldwork) | 2018-07-24 → 2018-08-02 (+9d) | 2018-08-14 → 2018-08-17 (+3d) | 15d → 12d |  |  |
| 282 | recommend activities for community organizing | 2018-08-14 → 2018-08-20 (+6d) | 2018-09-04 → 2018-09-03 (-1d) | 15d → 11d |  |  |
| 283 | **develop guidelines for institutionalization of LEWC (2 sites)** | 2018-06-07 → 2018-06-21 (+14d) | 2018-09-04 → 2018-09-03 (-1d) | 57d → 46d |  |  |
| 284 | develop methods for crafing guidelines | 2018-06-07 → 2018-06-21 (+14d) | 2018-07-24 → 2018-08-01 (+8d) | 33d → 30d | 7250d → 8100d |  |
| 285 | gather data (fieldwork) | 2018-07-24 → 2018-08-02 (+9d) | 2018-08-14 → 2018-08-17 (+3d) | 15d → 12d |  |  |
| 286 | develop guidelines for institutionalization of LEWC | 2018-08-14 → 2018-08-20 (+6d) | 2018-09-04 → 2018-09-03 (-1d) | 15d → 11d |  |  |
| 287 | **Guidelines for developing contingency plans for DSL (barangay level)** | 2018-07-11 → 2018-07-16 (+5d) | 2018-09-04 → 2018-09-03 (-1d) | 36d → 32d |  |  |
| 288 | review literature on contingency plans | 2018-07-11 → 2018-07-16 (+5d) | 2018-08-21 → 2018-08-20 (-1d) | 29d → 26d | 9350d → 9500d |  |
| 289 | draft guidelines for contingency plans |  | 2018-08-28 → 2018-08-27 (-1d) |  |  |  |
| 290 | approve guidelines for contingency plans |  | 2018-09-04 → 2018-09-03 (-1d) |  |  |  |
| 291 | **Operations manual** |  | 2018-09-04 → 2018-09-03 (-1d) |  |  |  |
| 292 | update EWS operations manual (1) |  | 2018-08-24 → 2018-08-23 (-1d) |  |  |  |
| 293 | update EWS operations manual (2) |  | 2018-08-30 → 2018-08-29 (-1d) |  |  |  |
| 294 | update EWS operations manual (3) |  | 2018-09-04 → 2018-09-03 (-1d) |  |  |  |
| 295 | **Early warning information** |  | 2018-09-04 → 2018-09-03 (-1d) | 128.5d? → 126d? |  |  |
| 296 | generate, review, and release EWI |  | 2018-09-04 → 2018-09-03 (-1d) |  | 12750d → 12500d |  |
| 297 | **EWI support** |  | 2018-09-04 → 2018-09-03 (-1d) | 128.5d? → 126d? |  |  |
| 298 | **operational systems** |  | 2018-09-04 → 2018-09-03 (-1d) |  |  |  |
| 299 | **sensors and dataloggers** |  | 2018-09-04 → 2018-09-03 (-1d) |  |  |  |
| 300 | replace defective sensors and loggers |  | 2018-09-04 → 2018-09-03 (-1d) |  | 12750d → 12500d |  |
| 301 | monitor sensor and datalogger health status |  | 2018-09-04 → 2018-09-03 (-1d) |  | 12750d → 12500d |  |
| 302 | track maintenance activities |  | 2018-09-04 → 2018-09-03 (-1d) |  | 12750d → 12500d |  |
| 303 | manage inventory |  | 2018-09-04 → 2018-09-03 (-1d) |  | 12750d → 12500d |  |
| 304 | track PLAA events |  | 2018-09-04 → 2018-09-03 (-1d) |  | 12750d → 12500d |  |
| 305 | track sensor events |  | 2018-09-04 → 2018-09-03 (-1d) |  | 12750d → 12500d |  |
| 306 | field-based maintenance |  | 2018-09-04 → 2018-09-03 (-1d) |  | 12750d → 12500d |  |
| 307 | **central server (software)** |  | 2018-09-04 → 2018-09-03 (-1d) |  |  |  |
| 308 | maintain data gathering system |  | 2018-09-04 → 2018-09-03 (-1d) |  | 12750d → 12500d | resources emb engr 9 → none |
| 309 | maintain data storage and management system |  | 2018-09-04 → 2018-09-03 (-1d) |  | 12750d → 12500d | resources emb engr 9 → none |
| 310 | maintain data analysis system |  | 2018-09-04 → 2018-09-03 (-1d) |  | 12750d → 12500d | resources programmer 5 → none |
| 311 | maintain info dissemination system |  | 2018-09-04 → 2018-09-03 (-1d) |  | 12750d → 12500d | resources emb engr 9 → none |

| ID | Task | Start | Finish | Duration | Total float | Other |
| --- | --- | --- | --- | --- | --- | --- |
| 312 | train staff for debugging | 2018-09-04 → 2018-09-03 (-1d) | 2018-09-04 → 2018-09-03 (-1d) |  | 12800d → 12550d | resources emb engr 9; programmer 5 → none |
| 313 | produce code and documentation standards |  | 2018-09-04 → 2018-09-03 (-1d) |  | 12750d → 12500d | resources programmer 5 → none |
| 314 | **updated database** |  | 2018-09-04 → 2018-09-03 (-1d) |  |  |  |
| 315 | maintain tables |  | 2018-09-04 → 2018-09-03 (-1d) |  | 12750d → 12500d | resources emb engr 9 → none |
| 316 | **parsed SMS** |  | 2018-09-04 → 2018-09-03 (-1d) |  |  |  |
| 317 | maintain SMS parsing |  | 2018-09-04 → 2018-09-03 (-1d) |  | 12750d → 12500d | resources emb engr 9 → none |
| 318 | **capable personnel for monitoring and early warning** |  | 2018-09-04 → 2018-09-03 (-1d) | 128.5d? → 126d? |  |  |
| 319 | **develop training materials** |  | 2018-09-03 → 2018-08-31 (-3d) |  |  |  |
| 320 | hazard monitoring |  | 2018-09-03 → 2018-08-31 (-3d) |  | 11050d → 10900d |  |
| 321 | analysis and validation |  | 2018-09-03 → 2018-08-31 (-3d) |  | 11050d → 10900d |  |
| 322 | sensor maintenance |  | 2018-09-03 → 2018-08-31 (-3d) |  | 12650d → 12400d |  |
| 323 | communications protocol |  | 2018-09-03 → 2018-08-31 (-3d) |  | 11050d → 10900d |  |
| 324 | **conduct EWS protocol trainings (internal)** |  | 2018-09-04 → 2018-09-03 (-1d) |  |  |  |
| 325 | hazard monitoring |  | 2018-09-04 → 2018-09-03 (-1d) |  |  |  |
| 326 | analysis and validation |  | 2018-09-04 → 2018-09-03 (-1d) |  |  |  |
| 327 | sensor maintenance |  | 2018-09-04 → 2018-09-03 (-1d) |  |  |  |
| 328 | communications protocol |  | 2018-09-04 → 2018-09-03 (-1d) |  |  |  |
| 329 | **conduct EWS protocol trainings (external)** |  | 2018-09-04 → 2018-09-03 (-1d) | 128.5d? → 126d? |  |  |
| 330 | combo training 1 (hazard monitoring, analysis, comm protocol) |  | 2018-02-21 → 2018-02-20 (-1d) | 9d → 8d | 11950d → 11800d |  |
| 331 | combo training 2 (hazard monitoring, analysis, comm protocol) |  | 2018-02-21 → 2018-02-20 (-1d) | 9d → 8d | 11950d → 11800d |  |
| 332 | combo training 3 (hazard monitoring, analysis, comm protocol) |  | 2018-02-21 → 2018-02-20 (-1d) | 9d → 8d | 11950d → 11800d |  |
| 333 | combo training n (hazard monitoring, analysis, comm protocol) |  | 2018-02-21 → 2018-02-20 (-1d) | 9d → 8d | 11950d → 11800d |  |
| 334 | sensor maintenance |  | 2018-09-04 → 2018-09-03 (-1d) |  | 12750d → 12500d |  |
| 335 | **Strategic communications** | 2018-08-07 → 2018-08-10 (+3d) | 2018-09-04 → 2018-09-03 (-1d) | 18d? → 15d? |  |  |
| 336 | research stakeholder info needs | 2018-08-07 → 2018-08-10 (+3d) | 2018-08-08 → 2018-08-10 (+2d) |  | 11150d → 11000d |  |
| 337 | research policy process |  | 2018-09-04 → 2018-09-03 (-1d) |  | 12750d → 12500d |  |
| 338 | develop strategic comm plan | 2018-08-08 → 2018-08-13 (+5d) | 2018-08-09 → 2018-08-13 (+4d) |  |  |  |
| 339 | **develop communication materials** | 2018-08-09 → 2018-08-14 (+5d) | 2018-09-04 → 2018-09-03 (-1d) | 18d? → 14d? |  |  |
| 340 | **website** | 2018-08-09 → 2018-08-14 (+5d) | 2018-09-04 → 2018-09-03 (-1d) | 18d? → 14d? |  |  |
| 341 | develop website content | 2018-08-09 → 2018-08-14 (+5d) | 2018-08-10 → 2018-08-14 (+4d) |  |  |  |
| 342 | design website | 2018-08-10 → 2018-08-15 (+5d) | 2018-08-13 → 2018-08-15 (+2d) |  |  |  |
| 343 | develop content management system (core) | 2018-08-13 → 2018-08-16 (+3d) | 2018-09-04 → 2018-09-03 (-1d) | 16d → 13d |  | resources web dev 1 → full stack dev 1 |
| 344 | develop non-website communications |  | 2018-09-04 → 2018-09-03 (-1d) |  | 12750d → 12500d |  |
| 345 | **MEAL system** |  | 2018-09-04 → 2018-09-03 (-1d) | 128.5d? → 126d? |  |  |
| 346 | sourcing of MEAL expert |  | 2018-02-20 → 2018-02-19 (-1d) | 9d → 8d | 2150d → 2800d |  |
| 347 | develop MEAL framework | 2018-03-28 → 2018-04-10 (+13d) | 2018-03-30 → 2018-04-11 (+12d) |  | 2050d → 2700d |  |
| 348 | develop MEAL plan | 2018-03-30 → 2018-04-12 (+13d) | 2018-04-05 → 2018-04-17 (+12d) |  |  |  |
| 349 | conduct training needs analysis | 2018-04-05 → 2018-04-18 (+13d) | 2018-04-06 → 2018-04-18 (+12d) |  | 9400d → 8400d |  |
| 350 | develop training plan | 2018-04-06 → 2018-04-19 (+13d) | 2018-04-10 → 2018-04-20 (+10d) |  | 9400d → 8300d |  |
| 351 | **monitoring mechanisms** |  | 2018-09-04 → 2018-09-03 (-1d) | 128.5d → 126d |  |  |
| 352 | **standard documentation and storage** |  | 2018-09-04 → 2018-09-03 (-1d) | 7d → 5d |  |  |
| 353 | design documentation templates and organization/structure |  | 2018-08-31 → 2018-08-30 (-1d) |  | 9000d → 8000d |  |
| 354 | design repository system |  | 2018-09-04 → 2018-09-03 (-1d) |  |  |  |
| 355 | **PLAA** |  | 2018-09-04 → 2018-09-03 (-1d) |  |  |  |
| 356 | review current PLAA vis-a-vis MEAL plan |  | 2018-09-03 → 2018-08-31 (-3d) |  | 9400d → 8400d |  |
| 357 | revise PLAA guidelines |  | 2018-09-04 → 2018-09-03 (-1d) |  |  |  |
| 358 | **EWS-QA** |  | 2018-09-04 → 2018-09-03 (-1d) | 128.5d → 126d |  |  |
| 359 | review current EWS-QA vis-a-vis MEAL plan |  | 2018-09-03 → 2018-08-31 (-3d) |  | 9400d → 8400d |  |
| 360 | revise EWS-QA guidelines |  | 2018-09-04 → 2018-09-03 (-1d) |  |  |  |
| 362 | **outcome-impact** |  | 2018-09-04 → 2018-09-03 (-1d) |  |  |  |
| 363 | review outcome-impact vis-a-vis MEAL plan |  | 2018-09-03 → 2018-08-31 (-3d) |  | 9400d → 8400d |  |
| 364 | revise outcome-impact |  | 2018-09-04 → 2018-09-03 (-1d) |  |  |  |
| 365 | **administrative process** |  | 2018-09-04 → 2018-09-03 (-1d) |  |  |  |
| 366 | review admin process trackers vis-a-vis MEAL plan |  | 2018-09-03 → 2018-08-31 (-3d) |  | 9400d → 8400d |  |
| 367 | revise admin process trackers |  | 2018-09-04 → 2018-09-03 (-1d) |  |  |  |
| 368 | **project output** |  | 2018-09-04 → 2018-09-03 (-1d) |  |  |  |
| 369 | develop team output tracker |  | 2018-08-31 → 2018-08-30 (-1d) |  | 9400d → 8400d |  |
| 370 | develop individual output tracker |  | 2018-09-03 → 2018-08-31 (-3d) |  |  |  |
| 371 | develop individual capacity tracker |  | 2018-09-04 → 2018-09-03 (-1d) |  |  |  |
| 372 | **stakeholder concerns** | 2018-09-04 → 2018-09-03 (-1d) | 2018-09-04 → 2018-09-03 (-1d) |  |  |  |
| 373 | develop stakeholder concerns tracker | 2018-09-04 → 2018-09-03 (-1d) | 2018-09-04 → 2018-09-03 (-1d) |  | 9650d → 8650d |  |
| 374 | **MEAL implem** | 2018-04-05 → 2018-04-18 (+13d) | 2018-09-04 → 2018-09-03 (-1d) | 97d? → 87d? |  |  |
| 375 | **EWS-QA** | 2018-04-05 → 2018-04-18 (+13d) | 2018-04-06 → 2018-04-18 (+12d) |  | 9600d → 8600d |  |
| 376 | **bimonthly** | 2018-04-05 → 2018-04-18 (+13d) | 2018-04-06 → 2018-04-18 (+12d) |  | 9600d → 8600d |  |
| 377 | gather, analyze, evaluate data | 2018-04-05 → 2018-04-18 (+13d) | 2018-04-06 → 2018-04-18 (+12d) |  | 9600d → 8600d |  |
| 378 | prepare for presentation (feedback sessions) | 2018-04-06 → 2018-04-18 (+12d) | 2018-04-06 → 2018-04-18 (+12d) |  | 9600d → 8600d |  |
| 379 | **quarterly** | 2018-04-05 → 2018-04-18 (+13d) | 2018-04-06 → 2018-04-18 (+12d) |  | 9600d → 8600d |  |
| 380 | gather, analyze, evaluate data | 2018-04-05 → 2018-04-18 (+13d) | 2018-04-06 → 2018-04-18 (+12d) |  | 9600d → 8600d |  |
| 381 | prepare for presentation (feedback sessions) | 2018-04-06 → 2018-04-18 (+12d) | 2018-04-06 → 2018-04-18 (+12d) |  | 9600d → 8600d |  |
| 382 | **annual** | 2018-04-05 → 2018-04-18 (+13d) | 2018-04-06 → 2018-04-18 (+12d) |  | 9600d → 8600d |  |

| ID | Task | Start | Finish | Duration | Total float |
| --- | --- | --- | --- | --- | --- |
| 383 | gather, analyze, evaluate data | 2018-04-05 → 2018-04-18 (+13d) | 2018-04-06 → 2018-04-18 (+12d) |  | 9600d → 8600d |
| 384 | prepare for presentation (feedback sessions) | 2018-04-06 → 2018-04-18 (+12d) | 2018-04-06 → 2018-04-18 (+12d) |  | 9600d → 8600d |
| 385 | **PLAA** | 2018-04-05 → 2018-04-18 (+13d) | 2018-09-04 → 2018-09-03 (-1d) | 97d? → 87d? |  |
| 386 | **site 1** | 2018-04-05 → 2018-04-18 (+13d) | 2018-05-01 → 2018-05-10 (+9d) | 18d → 14d |  |
| 387 | conduct sensor fieldwork - write report | 2018-04-05 → 2018-04-18 (+13d) | 2018-04-17 → 2018-04-26 (+9d) | 8d → 7d |  |
| 388 | conduct landslide fieldwork - write report | 2018-04-05 → 2018-04-18 (+13d) | 2018-04-26 → 2018-05-07 (+11d) | 15d → 14d |  |
| 389 | conduct community fieldwork - write report | 2018-04-05 → 2018-04-18 (+13d) | 2018-04-26 → 2018-05-07 (+11d) | 15d → 14d |  |
| 390 | review | 2018-04-26 → 2018-05-08 (+12d) | 2018-05-01 → 2018-05-10 (+9d) |  |  |
| 391 | **site 2** | 2018-05-01 → 2018-05-11 (+10d) | 2018-05-25 → 2018-05-31 (+6d) |  |  |
| 392 | conduct sensor fieldwork - write report | 2018-05-01 → 2018-05-11 (+10d) | 2018-05-11 → 2018-05-17 (+6d) | 6d → 5d |  |
| 393 | conduct landslide fieldwork - write report | 2018-05-01 → 2018-05-11 (+10d) | 2018-05-22 → 2018-05-28 (+6d) |  |  |
| 394 | conduct community fieldwork - write report | 2018-05-01 → 2018-05-11 (+10d) | 2018-05-22 → 2018-05-28 (+6d) |  |  |
| 395 | review | 2018-05-22 → 2018-05-29 (+7d) | 2018-05-25 → 2018-05-31 (+6d) |  |  |
| 396 | **site 3** | 2018-05-25 → 2018-06-01 (+7d) | 2018-06-20 → 2018-06-22 (+2d) | 16d → 14d |  |
| 397 | conduct sensor fieldwork - write report | 2018-05-25 → 2018-06-01 (+7d) | 2018-06-06 → 2018-06-11 (+5d) | 8d → 5d | 700d → 600d |
| 398 | conduct landslide fieldwork - write report | 2018-05-25 → 2018-06-01 (+7d) | 2018-06-15 → 2018-06-19 (+4d) | 13d → 11d |  |
| 399 | conduct community fieldwork - write report | 2018-05-25 → 2018-06-01 (+7d) | 2018-06-15 → 2018-06-19 (+4d) | 13d → 11d |  |
| 400 | review | 2018-06-15 → 2018-06-20 (+5d) | 2018-06-20 → 2018-06-22 (+2d) |  |  |
| 401 | **site 4** | 2018-06-20 → 2018-06-25 (+5d) | 2018-07-16 → 2018-07-13 (-3d) | 15d → 12d |  |
| 402 | conduct sensor fieldwork - write report | 2018-06-20 → 2018-06-25 (+5d) | 2018-07-02 → 2018-07-04 (+2d) | 8d → 6d |  |
| 403 | conduct landslide fieldwork - write report | 2018-06-20 → 2018-06-25 (+5d) | 2018-07-11 → 2018-07-10 (-1d) | 12d → 9d |  |
| 404 | conduct community fieldwork - write report | 2018-06-20 → 2018-06-25 (+5d) | 2018-07-11 → 2018-07-10 (-1d) | 12d → 9d |  |
| 405 | review |  | 2018-07-16 → 2018-07-13 (-3d) |  |  |
| 406 | **site 5** |  | 2018-08-09 → 2018-08-08 (-1d) | 17d → 16d |  |
| 407 | conduct sensor fieldwork - write report |  | 2018-07-26 → 2018-07-25 (-1d) |  |  |
| 408 | conduct landslide fieldwork - write report |  | 2018-08-06 → 2018-08-03 (-3d) |  |  |
| 409 | conduct community fieldwork - write report |  | 2018-08-06 → 2018-08-03 (-3d) |  |  |
| 410 | review |  | 2018-08-09 → 2018-08-08 (-1d) |  |  |
| 411 | **site 6** |  | 2018-09-04 → 2018-09-03 (-1d) | 18d → 17d |  |
| 412 | conduct sensor fieldwork - write report |  | 2018-08-21 → 2018-08-20 (-1d) |  | 700d → 600d |
| 413 | conduct landslide fieldwork - write report |  | 2018-08-30 → 2018-08-29 (-1d) |  |  |
| 414 | conduct community fieldwork - write report |  | 2018-08-30 → 2018-08-29 (-1d) |  |  |
| 415 | review |  | 2018-09-04 → 2018-09-03 (-1d) |  |  |
| 416 | synthesis (across sites) | 2018-04-05 → 2018-04-18 (+13d) | 2018-04-06 → 2018-04-18 (+12d) |  | 9600d → 8600d |
| 417 | **outcome-impact** | 2018-04-05 → 2018-04-18 (+13d) | 2018-04-06 → 2018-04-18 (+12d) |  | 9600d → 8600d |
| 418 | **activity series 1** | 2018-04-05 → 2018-04-18 (+13d) | 2018-04-06 → 2018-04-18 (+12d) |  | 9600d → 8600d |
| 419 | gather data | 2018-04-05 → 2018-04-18 (+13d) | 2018-04-06 → 2018-04-18 (+12d) |  | 9600d → 8600d |
| 420 | analyze, evaluate data | 2018-04-05 → 2018-04-18 (+13d) | 2018-04-06 → 2018-04-18 (+12d) |  | 9600d → 8600d |
| 421 | provide recommendations | 2018-04-05 → 2018-04-18 (+13d) | 2018-04-06 → 2018-04-18 (+12d) |  | 9600d → 8600d |
| 422 | **project output** | 2018-04-05 → 2018-04-18 (+13d) | 2018-04-06 → 2018-04-18 (+12d) |  | 9600d → 8600d |
| 423 | **activity series 1** | 2018-04-05 → 2018-04-18 (+13d) | 2018-04-06 → 2018-04-18 (+12d) |  | 9600d → 8600d |
| 424 | gather data | 2018-04-05 → 2018-04-18 (+13d) | 2018-04-06 → 2018-04-18 (+12d) |  | 9600d → 8600d |
| 425 | analyze, evaluate data | 2018-04-05 → 2018-04-18 (+13d) | 2018-04-06 → 2018-04-18 (+12d) |  | 9600d → 8600d |
| 426 | provide recommendations | 2018-04-05 → 2018-04-18 (+13d) | 2018-04-06 → 2018-04-18 (+12d) |  | 9600d → 8600d |
| 427 | **stakeholder concerns** | 2018-04-05 → 2018-04-18 (+13d) | 2018-04-06 → 2018-04-18 (+12d) |  | 9600d → 8600d |
| 428 | **activity series 1** | 2018-04-05 → 2018-04-18 (+13d) | 2018-04-06 → 2018-04-18 (+12d) |  | 9600d → 8600d |
| 429 | gather data | 2018-04-05 → 2018-04-18 (+13d) | 2018-04-06 → 2018-04-18 (+12d) |  | 9600d → 8600d |
| 430 | analyze, evaluate data | 2018-04-05 → 2018-04-18 (+13d) | 2018-04-06 → 2018-04-18 (+12d) |  | 9600d → 8600d |
| 431 | provide recommendations | 2018-04-05 → 2018-04-18 (+13d) | 2018-04-06 → 2018-04-18 (+12d) |  | 9600d → 8600d |
| 432 | **admin process** | 2018-04-05 → 2018-04-18 (+13d) | 2018-04-06 → 2018-04-18 (+12d) |  | 9600d → 8600d |
| 433 | **activity series 1** | 2018-04-05 → 2018-04-18 (+13d) | 2018-04-06 → 2018-04-18 (+12d) |  | 9600d → 8600d |
| 434 | gather data | 2018-04-05 → 2018-04-18 (+13d) | 2018-04-06 → 2018-04-18 (+12d) |  | 9600d → 8600d |
| 435 | analyze, evaluate data | 2018-04-05 → 2018-04-18 (+13d) | 2018-04-06 → 2018-04-18 (+12d) |  | 9600d → 8600d |
| 436 | provide recommendations | 2018-04-05 → 2018-04-18 (+13d) | 2018-04-06 → 2018-04-18 (+12d) |  | 9600d → 8600d |

## Version 4 (saved 2018-01-08)

Note of the change: resolved entries with one-to-many activity:resource under Landslide risk information; add C-V dependency on Risk in methods

Last finish 2018-09-03 → 2018-09-05 (+2d).

Added:

| ID | Task | Duration | Start | Finish | Predecessors | Constraint | Resources |
| --- | --- | --- | --- | --- | --- | --- | --- |
| 30 | field data gathering | 13d | 2018-08-01 | 2018-08-17 | 27, 28 | as late as possible | geotech 3 |

Changed:

| ID | Task | Start | Finish | Duration | Total float | Predecessors | Other |
| --- | --- | --- | --- | --- | --- | --- | --- |
| 1 | **Landslide risk information** | 2018-05-16 → 2018-05-18 (+2d) | 2018-09-03 → 2018-09-05 (+2d) | 70d? → 69d? |  |  |  |
| 2 | **methods report (Hazards)** | 2018-06-25 → 2018-06-27 (+2d) | 2018-09-03 → 2018-09-05 (+2d) |  |  |  |  |
| 3 | MoMs | 2018-09-03 → 2018-09-05 (+2d) | 2018-09-03 → 2018-09-05 (+2d) |  |  |  |  |
| 4 | study surficial displacement behaviour | 2018-09-03 → 2018-09-05 (+2d) | 2018-09-03 → 2018-09-05 (+2d) |  |  |  |  |
| 5 | **slope stability models (FEM)** | 2018-07-10 → 2018-07-04 (-6d) | 2018-09-03 → 2018-09-05 (+2d) | 36d → 42d |  |  |  |
| 6 | review related literature | 2018-07-10 → 2018-07-04 (-6d) | 2018-07-18 → 2018-07-12 (-6d) |  | 9100d → 8600d |  |  |
| 7 | develop prototype | 2018-07-19 → 2018-07-13 (-6d) | 2018-07-25 → 2018-07-19 (-6d) |  |  |  |  |
| 8 | test model with monitoring data | 2018-07-26 → 2018-07-20 (-6d) | 2018-08-14 → 2018-08-08 (-6d) |  |  |  |  |
| 9 | field data gathering | 2018-08-02 → 2018-08-09 (+7d) | 2018-08-14 → 2018-08-16 (+2d) |  | 500d → none | 7 → 7, 8 | resources geol 1; geotech 1 → geol 1 |
| 10 | field data gathering | 2018-08-16 → 2018-08-09 (-7d) | 2018-09-03 → 2018-08-16 (-18d) | 13d → 6d | 500d → none | 17 → 7, 8 | resources geol 2 → geotech 1 |
| 11 | evaluate model (report as PI of slope stab model) | 2018-08-15 → 2018-08-17 (+2d) | 2018-08-20 → 2018-08-22 (+2d) |  |  | 8, 9 → 8, 9, 10 |  |
| 12 | write report | 2018-08-21 → 2018-08-23 (+2d) | 2018-08-27 → 2018-08-29 (+2d) |  |  |  |  |
| 13 | develop training materials | 2018-08-28 → 2018-08-30 (+2d) | 2018-08-30 → 2018-09-03 (+4d) |  |  |  |  |
| 14 | conduct training | 2018-08-31 → 2018-09-04 (+4d) | 2018-09-03 → 2018-09-05 (+2d) |  |  |  |  |
| 15 | **slope stability models (LEM1)** | 2018-07-26 → 2018-07-11 (-15d) | 2018-09-03 → 2018-09-05 (+2d) | 24d → 37d |  |  |  |
| 16 | review related literature | 2018-07-26 → 2018-07-11 (-15d) | 2018-08-01 → 2018-07-17 (-15d) |  | 10300d → 9100d |  |  |
| 17 | develop prototype | 2018-08-02 → 2018-07-18 (-15d) | 2018-08-08 → 2018-07-24 (-15d) |  |  |  |  |
| 18 | test model with monitoring data | 2018-08-09 → 2018-07-25 (-15d) | 2018-08-15 → 2018-07-31 (-15d) |  |  |  |  |
| 19 | field data gathering | 2018-08-16 → 2018-08-01 (-15d) | 2018-09-03 → 2018-08-17 (-17d) |  | 500d → none | 17 → 17, 18 | resources geotech 2 → geol 2 |
| 20 | field data gathering | 2018-07-30 → 2018-08-01 (+2d) | 2018-09-03 → 2018-08-17 (-17d) | 26d → 13d |  | 27 → 17, 18 | resources geol 3 → geotech 2 |
| 21 | evaluate model (report as PI of slope stab model) | 2018-08-16 → 2018-08-20 (+4d) | 2018-08-20 → 2018-08-22 (+2d) |  |  | 18 → 18, 19, 20 |  |
| 22 | write report | 2018-08-21 → 2018-08-23 (+2d) | 2018-08-27 → 2018-08-29 (+2d) |  |  |  |  |
| 23 | develop training materials | 2018-08-28 → 2018-08-30 (+2d) | 2018-08-30 → 2018-09-03 (+4d) |  |  |  |  |
| 24 | conduct training | 2018-08-31 → 2018-09-04 (+4d) | 2018-09-03 → 2018-09-05 (+2d) |  |  |  |  |
| 25 | **slope stability models (LEM2)** | 2018-07-16 → 2018-07-11 (-5d) | 2018-09-03 → 2018-09-05 (+2d) | 32d → 37d |  |  |  |
| 26 | review related literature | 2018-07-16 → 2018-07-11 (-5d) | 2018-07-20 → 2018-07-17 (-3d) |  | 9500d → 9100d |  |  |
| 27 | develop prototype | 2018-07-23 → 2018-07-18 (-5d) | 2018-07-27 → 2018-07-24 (-3d) |  |  |  |  |
| 28 | test model with monitoring data | 2018-08-09 → 2018-07-25 (-15d) | 2018-08-15 → 2018-07-31 (-15d) |  | 500d → none |  |  |
| 29 | field data gathering | 2018-08-16 → 2018-08-01 (-15d) | 2018-09-03 → 2018-08-17 (-17d) |  | 1200d → none | 27 → 27, 28 | resources geotech 3 → geol 3 |
| 31 | evaluate model (report as PI of slope stab model) | 2018-08-16 → 2018-08-20 (+4d) | 2018-08-20 → 2018-08-22 (+2d) |  |  | 28 → 28, 29, 30 |  |
| 32 | write report | 2018-08-21 → 2018-08-23 (+2d) | 2018-08-27 → 2018-08-29 (+2d) |  |  |  |  |
| 33 | develop training materials | 2018-08-28 → 2018-08-30 (+2d) | 2018-08-30 → 2018-09-03 (+4d) |  |  |  |  |
| 34 | conduct training | 2018-08-31 → 2018-09-04 (+4d) | 2018-09-03 → 2018-09-05 (+2d) |  |  |  |  |
| 35 | **runout model 1** | 2018-07-12 → 2018-07-16 (+4d) | 2018-09-03 → 2018-09-05 (+2d) | 34d → 32d |  |  |  |
| 36 | review related literature | 2018-07-12 → 2018-07-16 (+4d) | 2018-07-25 → 2018-07-27 (+2d) |  | 9200d → 9300d |  |  |
| 37 | develop prototype | 2018-07-26 → 2018-07-30 (+4d) | 2018-08-08 → 2018-08-10 (+2d) |  |  |  |  |
| 38 | test model with monitoring data | 2018-08-09 → 2018-08-13 (+4d) | 2018-08-15 → 2018-08-17 (+2d) |  |  |  |  |
| 39 | evaluate model (report as PI of runout model) | 2018-08-16 → 2018-08-20 (+4d) | 2018-08-20 → 2018-08-22 (+2d) |  |  |  |  |
| 40 | write report | 2018-08-21 → 2018-08-23 (+2d) | 2018-08-27 → 2018-08-29 (+2d) |  |  |  |  |
| 41 | develop training materials | 2018-08-28 → 2018-08-30 (+2d) | 2018-08-30 → 2018-09-03 (+4d) |  |  |  |  |
| 42 | conduct training | 2018-08-31 → 2018-09-04 (+4d) | 2018-09-03 → 2018-09-05 (+2d) |  |  |  |  |
| 43 | **runout model 2** | 2018-07-19 → 2018-07-23 (+4d) | 2018-09-03 → 2018-09-05 (+2d) | 29d → 27d |  |  |  |
| 44 | review related literature | 2018-07-19 → 2018-07-23 (+4d) | 2018-07-25 → 2018-07-27 (+2d) |  | 9800d → 9900d |  |  |
| 45 | develop prototype | 2018-07-26 → 2018-07-30 (+4d) | 2018-08-08 → 2018-08-10 (+2d) |  |  |  |  |
| 46 | test model with monitoring data | 2018-08-09 → 2018-08-13 (+4d) | 2018-08-15 → 2018-08-17 (+2d) |  |  |  |  |
| 47 | evaluate model (report as PI of runout model) | 2018-08-16 → 2018-08-20 (+4d) | 2018-08-20 → 2018-08-22 (+2d) |  |  |  |  |
| 48 | write report | 2018-08-21 → 2018-08-23 (+2d) | 2018-08-27 → 2018-08-29 (+2d) |  |  |  |  |
| 49 | develop training materials | 2018-08-28 → 2018-08-30 (+2d) | 2018-08-30 → 2018-09-03 (+4d) |  |  |  |  |
| 50 | conduct training | 2018-08-31 → 2018-09-04 (+4d) | 2018-09-03 → 2018-09-05 (+2d) |  |  |  |  |
| 51 | **threshold model 1** | 2018-06-25 → 2018-06-27 (+2d) | 2018-08-07 → 2018-08-09 (+2d) | 27d → 26d |  |  |  |
| 52 | review related literature | 2018-06-25 → 2018-06-27 (+2d) | 2018-06-29 → 2018-07-03 (+4d) |  | 8300d → 8400d |  |  |
| 53 | develop prototype | 2018-07-02 → 2018-07-04 (+2d) | 2018-07-19 → 2018-07-23 (+4d) |  |  |  |  |
| 54 | implement model alongside operations | 2018-07-20 → 2018-07-24 (+4d) | 2018-07-27 → 2018-07-31 (+4d) |  |  |  |  |
| 55 | evaluate model (report as PI of threshold model) | 2018-07-30 → 2018-08-01 (+2d) | 2018-07-30 → 2018-08-01 (+2d) |  |  |  |  |
| 56 | write report | 2018-07-31 → 2018-08-02 (+2d) | 2018-08-03 → 2018-08-07 (+4d) |  |  |  |  |
| 57 | develop training materials | 2018-08-06 → 2018-08-08 (+2d) | 2018-08-06 → 2018-08-08 (+2d) |  |  |  |  |
| 58 | conduct training | 2018-08-07 → 2018-08-09 (+2d) | 2018-08-07 → 2018-08-09 (+2d) |  |  |  |  |
| 59 | **threshold model 2** | 2018-06-25 → 2018-06-27 (+2d) | 2018-08-07 → 2018-08-09 (+2d) | 27d → 26d |  |  |  |
| 60 | review related literature | 2018-06-25 → 2018-06-27 (+2d) | 2018-06-29 → 2018-07-03 (+4d) |  | 8300d → 8400d |  |  |
| 61 | develop prototype | 2018-07-02 → 2018-07-04 (+2d) | 2018-07-19 → 2018-07-23 (+4d) |  |  |  |  |
| 62 | implement model alongside operations | 2018-07-20 → 2018-07-24 (+4d) | 2018-07-27 → 2018-07-31 (+4d) |  |  |  |  |
| 63 | evaluate model (report as PI of threshold model) | 2018-07-30 → 2018-08-01 (+2d) | 2018-07-30 → 2018-08-01 (+2d) |  |  |  |  |
| 64 | write report | 2018-07-31 → 2018-08-02 (+2d) | 2018-08-03 → 2018-08-07 (+4d) |  |  |  |  |
| 65 | develop training materials | 2018-08-06 → 2018-08-08 (+2d) | 2018-08-06 → 2018-08-08 (+2d) |  |  |  |  |
| 66 | conduct training | 2018-08-07 → 2018-08-09 (+2d) | 2018-08-07 → 2018-08-09 (+2d) |  |  |  |  |
| 67 | **threshold model 3** | 2018-06-25 → 2018-06-27 (+2d) | 2018-08-07 → 2018-08-09 (+2d) | 27d → 26d |  |  |  |
| 68 | review related literature | 2018-06-25 → 2018-06-27 (+2d) | 2018-06-29 → 2018-07-03 (+4d) |  | 8300d → 8400d |  |  |
| 69 | develop prototype | 2018-07-02 → 2018-07-04 (+2d) | 2018-07-19 → 2018-07-23 (+4d) |  |  |  |  |
| 70 | implement model alongside operations | 2018-07-20 → 2018-07-24 (+4d) | 2018-07-27 → 2018-07-31 (+4d) |  |  |  |  |
| 71 | evaluate model (report as PI of threshold model) | 2018-07-30 → 2018-08-01 (+2d) | 2018-07-30 → 2018-08-01 (+2d) |  |  |  |  |

| ID | Task | Start | Finish | Duration | Total float | Predecessors |
| --- | --- | --- | --- | --- | --- | --- |
| 72 | write report | 2018-07-31 → 2018-08-02 (+2d) | 2018-08-03 → 2018-08-07 (+4d) |  |  |  |
| 73 | develop training materials | 2018-08-06 → 2018-08-08 (+2d) | 2018-08-06 → 2018-08-08 (+2d) |  |  |  |
| 74 | conduct training | 2018-08-07 → 2018-08-09 (+2d) | 2018-08-07 → 2018-08-09 (+2d) |  |  |  |
| 75 | **threshold model 4** | 2018-06-25 → 2018-06-27 (+2d) | 2018-08-07 → 2018-08-09 (+2d) | 27d → 26d |  |  |
| 76 | review related literature | 2018-06-25 → 2018-06-27 (+2d) | 2018-06-29 → 2018-07-03 (+4d) |  | 8300d → 8400d |  |
| 77 | develop prototype | 2018-07-02 → 2018-07-04 (+2d) | 2018-07-19 → 2018-07-23 (+4d) |  |  |  |
| 78 | implement model alongside operations | 2018-07-20 → 2018-07-24 (+4d) | 2018-07-27 → 2018-07-31 (+4d) |  |  |  |
| 79 | evaluate model (report as PI of threshold model) | 2018-07-30 → 2018-08-01 (+2d) | 2018-07-30 → 2018-08-01 (+2d) |  |  |  |
| 80 | write report | 2018-07-31 → 2018-08-02 (+2d) | 2018-08-03 → 2018-08-07 (+4d) |  |  |  |
| 81 | develop training materials | 2018-08-06 → 2018-08-08 (+2d) | 2018-08-06 → 2018-08-08 (+2d) |  |  |  |
| 82 | conduct training | 2018-08-07 → 2018-08-09 (+2d) | 2018-08-07 → 2018-08-09 (+2d) |  |  |  |
| 83 | **threshold model 5** | 2018-06-25 → 2018-06-27 (+2d) | 2018-08-07 → 2018-08-09 (+2d) | 27d → 26d |  |  |
| 84 | review related literature | 2018-06-25 → 2018-06-27 (+2d) | 2018-06-29 → 2018-07-03 (+4d) |  | 8300d → 8400d |  |
| 85 | develop prototype | 2018-07-02 → 2018-07-04 (+2d) | 2018-07-19 → 2018-07-23 (+4d) |  |  |  |
| 86 | implement model alongside operations | 2018-07-20 → 2018-07-24 (+4d) | 2018-07-27 → 2018-07-31 (+4d) |  |  |  |
| 87 | evaluate model (report as PI of threshold model) | 2018-07-30 → 2018-08-01 (+2d) | 2018-07-30 → 2018-08-01 (+2d) |  |  |  |
| 88 | write report | 2018-07-31 → 2018-08-02 (+2d) | 2018-08-03 → 2018-08-07 (+4d) |  |  |  |
| 89 | develop training materials | 2018-08-06 → 2018-08-08 (+2d) | 2018-08-06 → 2018-08-08 (+2d) |  |  |  |
| 90 | conduct training | 2018-08-07 → 2018-08-09 (+2d) | 2018-08-07 → 2018-08-09 (+2d) |  |  |  |
| 91 | **threshold model 6** | 2018-06-25 → 2018-06-27 (+2d) | 2018-08-07 → 2018-08-09 (+2d) | 27d → 26d |  |  |
| 92 | review related literature | 2018-06-25 → 2018-06-27 (+2d) | 2018-06-29 → 2018-07-03 (+4d) |  | 8300d → 8400d |  |
| 93 | develop prototype | 2018-07-02 → 2018-07-04 (+2d) | 2018-07-19 → 2018-07-23 (+4d) |  |  |  |
| 94 | implement model alongside operations | 2018-07-20 → 2018-07-24 (+4d) | 2018-07-27 → 2018-07-31 (+4d) |  |  |  |
| 95 | evaluate model (report as PI of threshold model) | 2018-07-30 → 2018-08-01 (+2d) | 2018-07-30 → 2018-08-01 (+2d) |  |  |  |
| 96 | write report | 2018-07-31 → 2018-08-02 (+2d) | 2018-08-03 → 2018-08-07 (+4d) |  |  |  |
| 97 | develop training materials | 2018-08-06 → 2018-08-08 (+2d) | 2018-08-06 → 2018-08-08 (+2d) |  |  |  |
| 98 | conduct training | 2018-08-07 → 2018-08-09 (+2d) | 2018-08-07 → 2018-08-09 (+2d) |  |  |  |
| 99 | develop threshold performance index | 2018-07-12 → 2018-07-16 (+4d) | 2018-07-27 → 2018-07-31 (+4d) |  | 9300d → 9400d |  |
| 100 | **methods report (C&V)** | 2018-06-29 → 2018-07-03 (+4d) | 2018-09-03 → 2018-09-05 (+2d) |  |  |  |
| 101 | **method 1** | 2018-06-29 → 2018-07-03 (+4d) | 2018-09-03 → 2018-09-05 (+2d) |  |  |  |
| 102 | evaluate C&V frameworks (explore REDAS as one of the frameworks/models) | 2018-06-29 → 2018-07-03 (+4d) | 2018-07-18 → 2018-07-20 (+2d) |  | 8400d → 8500d |  |
| 103 | development of C&V assessment modules | 2018-07-19 → 2018-07-23 (+4d) | 2018-08-09 → 2018-08-13 (+4d) |  |  |  |
| 104 | recommend C&V info system | 2018-08-28 → 2018-08-30 (+2d) | 2018-09-03 → 2018-09-05 (+2d) |  | 1100d → 900d |  |
| 105 | design database (linking to EWSL data storage and management)) | 2018-08-24 → 2018-08-28 (+4d) | 2018-08-30 → 2018-09-03 (+4d) |  | 2200d → 2100d |  |
| 106 | write report | 2018-08-31 → 2018-09-04 (+4d) | 2018-09-03 → 2018-09-05 (+2d) |  |  |  |
| 107 | develop training materials | 2018-08-10 → 2018-08-14 (+4d) | 2018-08-27 → 2018-08-29 (+2d) |  |  |  |
| 108 | conduct training | 2018-08-28 → 2018-08-30 (+2d) | 2018-09-03 → 2018-09-05 (+2d) |  |  |  |
| 109 | **method 2** | 2018-06-29 → 2018-07-03 (+4d) | 2018-09-03 → 2018-09-05 (+2d) |  |  |  |
| 110 | evaluate C&V frameworks (explore REDAS as one of the frameworks/models) | 2018-06-29 → 2018-07-03 (+4d) | 2018-07-18 → 2018-07-20 (+2d) |  | 8400d → 100d | none → 120 |
| 111 | development of C&V assessment modules | 2018-07-19 → 2018-07-23 (+4d) | 2018-08-09 → 2018-08-13 (+4d) |  |  |  |
| 112 | recommend C&V info system | 2018-08-28 → 2018-08-30 (+2d) | 2018-09-03 → 2018-09-05 (+2d) |  | 1100d → 900d |  |
| 113 | design database (linking to EWSL data storage and management)) | 2018-08-24 → 2018-08-28 (+4d) | 2018-08-30 → 2018-09-03 (+4d) |  | 2200d → 2100d |  |
| 114 | write report | 2018-08-31 → 2018-09-04 (+4d) | 2018-09-03 → 2018-09-05 (+2d) |  |  |  |
| 115 | develop training materials | 2018-08-10 → 2018-08-14 (+4d) | 2018-08-27 → 2018-08-29 (+2d) |  |  |  |
| 116 | conduct training | 2018-08-28 → 2018-08-30 (+2d) | 2018-09-03 → 2018-09-05 (+2d) |  |  |  |
| 117 | **methods report (Risk)** | 2018-05-16 → 2018-05-18 (+2d) | 2018-09-03 → 2018-09-05 (+2d) | 70d → 69d |  |  |
| 118 | evaluate frameworks for risk | 2018-05-16 → 2018-05-18 (+2d) | 2018-06-07 → 2018-06-11 (+4d) |  | 5600d → 5700d |  |
| 119 | develop methods | 2018-06-08 → 2018-06-12 (+4d) | 2018-06-25 → 2018-06-27 (+2d) |  |  |  |
| 120 | write report | 2018-06-26 → 2018-06-28 (+2d) | 2018-06-27 → 2018-06-29 (+2d) |  |  |  |
| 121 | develop training materials | 2018-06-28 → 2018-07-02 (+4d) | 2018-07-11 → 2018-07-13 (+2d) |  |  |  |
| 122 | conduct training (NC 3) | 2018-07-12 → 2018-07-16 (+4d) | 2018-09-03 → 2018-09-05 (+2d) |  |  |  |
| 123 | **per site landslide risk reports (focus sites)** | 2018-06-28 → 2018-07-02 (+4d) | 2018-09-03 → 2018-09-05 (+2d) | 41d? → 40d? |  |  |
| 124 | integration of hazard, capacity, and vulnerability information | 2018-08-20 → 2018-08-22 (+2d) | 2018-09-03 → 2018-09-05 (+2d) |  |  |  |
| 125 | **per site hazard reports (all sites)** | 2018-07-05 → 2018-07-09 (+4d) | 2018-08-17 → 2018-08-21 (+4d) |  |  |  |
| 126 | conduct fieldwork (resurvey) | 2018-07-05 → 2018-07-09 (+4d) | 2018-08-13 → 2018-08-15 (+2d) |  | 8700d → 8800d |  |
| 127 | consolidate field notes | 2018-08-14 → 2018-08-16 (+2d) | 2018-08-14 → 2018-08-16 (+2d) |  |  |  |
| 128 | review and identify active sites | 2018-08-13 → 2018-08-15 (+2d) | 2018-08-13 → 2018-08-15 (+2d) |  | 11100d → 11200d |  |
| 129 | conduct quarterly survey (RTS/RTK/remap) | 2018-08-14 → 2018-08-16 (+2d) | 2018-08-14 → 2018-08-16 (+2d) |  |  |  |
| 130 | analyze monitoring data (requires access to database) | 2018-08-15 → 2018-08-17 (+2d) | 2018-08-15 → 2018-08-17 (+2d) |  |  |  |
| 131 | update volume, depth, extent (using current models) | 2018-08-16 → 2018-08-20 (+4d) | 2018-08-16 → 2018-08-20 (+4d) |  |  |  |
| 132 | update thresholds with monitoring data and performance index | 2018-08-16 → 2018-08-20 (+4d) | 2018-08-16 → 2018-08-20 (+4d) |  | 11400d → 11500d |  |
| 133 | update per site hazard reports (updated maps as PI) | 2018-08-17 → 2018-08-21 (+4d) | 2018-08-17 → 2018-08-21 (+4d) |  |  |  |
| 134 | **per site capacity and vulnerability reports (2 focus sites, Mindanao)** | 2018-06-28 → 2018-07-02 (+4d) | 2018-08-17 → 2018-08-21 (+4d) | 31d → 32d |  |  |
| 135 | conduct data gathering | 2018-06-28 → 2018-07-02 (+4d) | 2018-07-13 → 2018-07-17 (+4d) |  | 8300d → 8400d |  |
| 136 | analyze data | 2018-07-16 → 2018-07-18 (+2d) | 2018-08-10 → 2018-08-14 (+4d) |  |  |  |
| 137 | update per site capacity and vulnerability reports | 2018-08-13 → 2018-08-15 (+2d) | 2018-08-17 → 2018-08-21 (+4d) |  |  |  |
| 138 | **"Alert protocol" -- essentually how risk knowledge informs early warning practice** | 2018-07-13 → 2018-07-17 (+4d) | 2018-08-17 → 2018-08-21 (+4d) |  |  |  |
| 139 | review of related literature | 2018-07-13 → 2018-07-17 (+4d) | 2018-08-01 → 2018-08-03 (+2d) |  | 9400d → 9500d |  |
| 140 | review and evaluate current alert protocol | 2018-08-02 → 2018-08-06 (+4d) | 2018-08-15 → 2018-08-17 (+2d) |  |  |  |
| 141 | recomend alert protocol | 2018-08-16 → 2018-08-20 (+4d) | 2018-08-17 → 2018-08-21 (+4d) |  |  |  |

| ID | Task | Start | Finish | Duration | Total float |
| --- | --- | --- | --- | --- | --- |
| 142 | **Early warning system for landslides** | 2018-02-08 → 2018-02-09 (+1d) | 2018-09-03 → 2018-09-05 (+2d) |  |  |
| 143 | **Data gathering system** | 2018-02-08 → 2018-02-09 (+1d) | 2018-09-03 → 2018-09-05 (+2d) |  |  |
| 144 | **community reported data** | 2018-02-08 → 2018-02-09 (+1d) | 2018-09-03 → 2018-09-05 (+2d) |  |  |
| 145 | provide initial performance metrics based on 2017 experience | 2018-02-08 → 2018-02-09 (+1d) | 2018-02-08 → 2018-02-09 (+1d) |  |  |
| 146 | improve means of gathering surficial data (including transmission) |  | 2018-09-03 → 2018-09-05 (+2d) |  |  |
| 147 | develop on the ground validation of rainfall via sensors |  | 2018-09-03 → 2018-09-05 (+2d) |  |  |
| 148 | **tilt** | 2018-02-08 → 2018-02-09 (+1d) | 2018-09-03 → 2018-09-05 (+2d) |  |  |
| 149 | provide initial performance metrics based on 2017 experience | 2018-02-08 → 2018-02-09 (+1d) | 2018-02-08 → 2018-02-09 (+1d) |  |  |
| 150 | characterize tilt sensor(angle range and accuracy of v3 tilt sensor) | 2018-02-08 → 2018-02-09 (+1d) | 2018-02-19 → 2018-02-20 (+1d) |  | 11900d → 11700d |
| 151 | develop tilt sensor feature 1(improve angle range, accuracy,packaging,coms) | 2018-02-08 → 2018-02-09 (+1d) | 2018-03-13 → 2018-03-14 (+1d) |  | 10600d → 10700d |
| 152 | develop tilt sensor feature 2(improve angle range, accuracy,packaging,coms) | 2018-02-08 → 2018-02-09 (+1d) | 2018-03-13 → 2018-03-14 (+1d) |  | 10600d → 10700d |
| 153 | prepare manufacturing documents (project to phivolcs --admin heavy task ito) | 2018-02-08 → 2018-02-09 (+1d) | 2018-03-13 → 2018-03-14 (+1d) |  | 10600d → 10700d |
| 154 | **manufacturing monitoring** | 2018-02-08 → 2018-02-09 (+1d) | 2018-09-03 → 2018-09-05 (+2d) |  |  |
| 155 | develop functionality tests | 2018-02-08 → 2018-02-09 (+1d) | 2018-02-22 → 2018-02-23 (+1d) |  | none → -100d |
| 156 | manufacture | 2018-02-23 → 2018-02-26 (+3d) | 2018-08-16 → 2018-08-17 (+1d) |  | none → -100d |
| 157 | troubleshoot manufacturing issues | 2018-02-23 → 2018-02-26 (+3d) | 2018-08-16 → 2018-08-17 (+1d) |  |  |
| 158 | evaluate sample boards | 2018-08-17 → 2018-08-20 (+3d) | 2018-09-03 → 2018-09-05 (+2d) |  |  |
| 159 | develop and implement filters | 2018-02-08 → 2018-02-09 (+1d) | 2018-02-20 → 2018-02-21 (+1d) |  | 11800d → 11900d |
| 160 | deployment of new tilt sensors | 2018-02-08 → 2018-02-09 (+1d) | 2018-02-14 → 2018-02-15 (+1d) |  | 12200d → 12300d |
| 161 | **soms** | 2018-02-08 → 2018-02-09 (+1d) | 2018-05-15 → 2018-05-17 (+2d) | 56d → 57d |  |
| 162 | provide initial performance metrics based on 2017 experience | 2018-02-08 → 2018-02-09 (+1d) | 2018-02-08 → 2018-02-09 (+1d) |  |  |
| 163 | soms characterization 1 (gravimetric site-specific) | 2018-02-08 → 2018-02-09 (+1d) | 2018-03-13 → 2018-03-14 (+1d) |  | 10600d → 10700d |
| 164 | soms characterization 2 (borehole infiltration versus non-borehole infiltration) | 2018-02-08 → 2018-02-09 (+1d) | 2018-02-22 → 2018-02-23 (+1d) |  |  |
| 165 | soms characterization 3 (rainfall-soil moisture correlation with visual water infiltration) | 2018-02-08 → 2018-02-09 (+1d) | 2018-02-14 → 2018-02-15 (+1d) |  | 12200d → 12300d |
| 166 | improve soms probe and its orientation | 2018-02-08 → 2018-02-09 (+1d) | 2018-03-13 → 2018-03-14 (+1d) |  | 6900d → 6800d |
| 167 | develop new soil moisture sensor (improve accuracy, packaging, coms) prototype | 2018-03-14 → 2018-03-15 (+1d) | 2018-04-18 → 2018-04-19 (+1d) |  | 7000d → 7100d |
| 168 | deploy new soms | 2018-04-19 → 2018-04-20 (+1d) | 2018-04-25 → 2018-04-26 (+1d) |  | 6700d → 6800d |
| 169 | develop filter | 2018-04-26 → 2018-04-27 (+1d) | 2018-05-08 → 2018-05-10 (+2d) |  | 7000d → 7100d |
| 170 | implement filter | 2018-05-09 → 2018-05-11 (+2d) | 2018-05-15 → 2018-05-17 (+2d) |  |  |
| 171 | **uts-ext** | 2018-02-08 → 2018-02-09 (+1d) | 2018-09-03 → 2018-09-05 (+2d) |  |  |
| 172 | provide initial performance metrics based on 2017 experience | 2018-02-08 → 2018-02-09 (+1d) | 2018-02-08 → 2018-02-09 (+1d) |  |  |
| 173 | char-dev-dep | 2018-05-04 → 2018-05-08 (+4d) | 2018-07-24 → 2018-07-26 (+2d) |  | 5300d → 5400d |
| 174 | develop filter | 2018-07-25 → 2018-07-27 (+2d) | 2018-08-24 → 2018-08-28 (+4d) |  |  |
| 175 | implement filter | 2018-08-27 → 2018-08-29 (+2d) | 2018-09-03 → 2018-09-05 (+2d) |  |  |
| 176 | **lidar-ext** | 2018-02-08 → 2018-02-09 (+1d) | 2018-09-03 → 2018-09-05 (+2d) |  |  |
| 177 | provide initial performance metrics based on 2017 experience | 2018-02-08 → 2018-02-09 (+1d) | 2018-02-08 → 2018-02-09 (+1d) |  |  |
| 178 | char-dev-dep | 2018-05-04 → 2018-05-08 (+4d) | 2018-07-24 → 2018-07-26 (+2d) |  | 5300d → 5400d |
| 179 | develop filter | 2018-07-25 → 2018-07-27 (+2d) | 2018-08-24 → 2018-08-28 (+4d) |  |  |
| 180 | implement filter | 2018-08-27 → 2018-08-29 (+2d) | 2018-09-03 → 2018-09-05 (+2d) |  |  |
| 181 | **rain gauge** | 2018-02-08 → 2018-02-09 (+1d) | 2018-09-03 → 2018-09-05 (+2d) |  |  |
| 182 | provide initial performance metrics based on 2017 experience | 2018-02-08 → 2018-02-09 (+1d) | 2018-02-08 → 2018-02-09 (+1d) |  |  |
| 183 | char-dev-dep | 2018-07-04 → 2018-07-06 (+2d) | 2018-08-08 → 2018-08-10 (+2d) |  |  |
| 184 | develop filter | 2018-08-09 → 2018-08-13 (+4d) | 2018-08-27 → 2018-08-29 (+2d) |  |  |
| 185 | implement filter | 2018-08-28 → 2018-08-30 (+2d) | 2018-09-03 → 2018-09-05 (+2d) |  |  |
| 186 | **piezometer** | 2018-02-08 → 2018-02-09 (+1d) | 2018-09-03 → 2018-09-05 (+2d) |  |  |
| 187 | provide initial performance metrics based on 2017 experience | 2018-02-08 → 2018-02-09 (+1d) | 2018-02-08 → 2018-02-09 (+1d) |  |  |
| 188 | char-dev-dep | 2018-07-20 → 2018-07-24 (+4d) | 2018-08-16 → 2018-08-20 (+4d) |  | 9900d → 10000d |
| 189 | develop filter | 2018-08-17 → 2018-08-21 (+4d) | 2018-08-24 → 2018-08-28 (+4d) |  |  |
| 190 | implement filter | 2018-08-27 → 2018-08-29 (+2d) | 2018-09-03 → 2018-09-05 (+2d) |  |  |
| 191 | **gateway datalogger** | 2018-02-08 → 2018-02-09 (+1d) |  | 113d → 111d | none → 100d |
| 192 | provide initial performance metrics based on 2017 experience | 2018-02-08 → 2018-02-09 (+1d) | 2018-02-08 → 2018-02-09 (+1d) |  |  |
| 194 | **router datalogger** | 2018-02-08 → 2018-02-09 (+1d) | 2018-09-03 → 2018-09-05 (+2d) |  |  |
| 195 | provide initial performance metrics based on 2017 experience | 2018-02-08 → 2018-02-09 (+1d) | 2018-02-08 → 2018-02-09 (+1d) |  |  |
| 196 | char-dev-dep | 2018-08-09 → 2018-08-13 (+4d) | 2018-09-03 → 2018-09-05 (+2d) |  | 11000d → 10900d |
| 197 | **sensor datalogger** | 2018-02-08 → 2018-02-09 (+1d) |  | 48d → 47d |  |
| 198 | provide initial performance metrics based on 2017 experience | 2018-02-08 → 2018-02-09 (+1d) | 2018-02-08 → 2018-02-09 (+1d) |  |  |
| 199 | develop sensor datalogger feature 1( rtc, low-power, xbee interface, bluetooth interface) | 2018-02-08 → 2018-02-09 (+1d) | 2018-02-22 → 2018-02-23 (+1d) |  |  |
| 200 | develop sensor datalogger feature 2( rtc, low-power, xbee interface, bluetooth interface) | 2018-02-08 → 2018-02-09 (+1d) | 2018-02-22 → 2018-02-23 (+1d) |  |  |
| 201 | prepare manufacturing documents | 2018-02-08 → 2018-02-09 (+1d) | 2018-03-13 → 2018-03-14 (+1d) |  | 10600d → 10700d |
| 202 | **manufacturing monitoring** | 2018-02-08 → 2018-02-09 (+1d) |  | 48d → 47d |  |
| 203 | develop functionality tests | 2018-02-08 → 2018-02-09 (+1d) | 2018-02-12 → 2018-02-13 (+1d) |  | 7800d → 8100d |
| 204 | manufacture | 2018-02-13 → 2018-02-14 (+1d) |  |  | 7900d → 8000d |
| 205 | troubleshoot manufacturing issues | 2018-02-13 → 2018-02-14 (+1d) |  |  |  |
| 207 | **stand alone datalogger** | 2018-02-08 → 2018-02-09 (+1d) |  | 113d → 111d | none → 100d |
| 208 | provide initial performance metrics based on 2017 experience | 2018-02-08 → 2018-02-09 (+1d) | 2018-02-08 → 2018-02-09 (+1d) |  |  |
| 210 | **SMS parsing system for new data structures** |  | 2018-09-03 → 2018-09-05 (+2d) | 15d → 17d |  |
| 211 | develop sms parsing system |  | 2018-09-03 → 2018-09-05 (+2d) |  | none → 200d |
| 212 | **Data storage and management system** | 2018-06-15 → 2018-06-19 (+4d) | 2018-08-08 → 2018-08-10 (+2d) | 35d → 33d |  |
| 213 | develop new structure for storage and management | 2018-06-15 → 2018-06-19 (+4d) | 2018-07-10 → 2018-07-12 (+2d) |  | 7500d → 7700d |
| 214 | develop automated backup | 2018-07-20 → 2018-07-24 (+4d) | 2018-08-01 → 2018-08-03 (+2d) |  |  |

| ID | Task | Start | Finish | Duration | Total float |
| --- | --- | --- | --- | --- | --- |
| 215 | recommend performance metrics | 2018-08-02 → 2018-08-06 (+4d) | 2018-08-08 → 2018-08-10 (+2d) |  |  |
| 216 | develop data access for risk assessment | 2018-07-11 → 2018-07-13 (+2d) | 2018-07-19 → 2018-07-23 (+4d) |  |  |
| 217 | **Data analysis system** | 2018-02-08 → 2018-02-09 (+1d) | 2018-09-03 → 2018-09-05 (+2d) |  |  |
| 218 | **threshold scripts** | 2018-08-08 → 2018-08-10 (+2d) | 2018-08-08 → 2018-08-10 (+2d) |  |  |
| 219 | implement thresholds | 2018-08-08 → 2018-08-10 (+2d) | 2018-08-08 → 2018-08-10 (+2d) |  |  |
| 220 | **visualization scripts** | 2018-02-08 → 2018-02-09 (+1d) | 2018-09-03 → 2018-09-05 (+2d) |  |  |
| 221 | research data visualization concepts (inc. hazard concepts) | 2018-07-23 → 2018-07-25 (+2d) | 2018-08-08 → 2018-08-10 (+2d) |  |  |
| 222 | develop new web charts | 2018-08-09 → 2018-08-13 (+4d) | 2018-09-03 → 2018-09-05 (+2d) |  |  |
| 223 | improvement of existing web charts | 2018-09-03 → 2018-09-05 (+2d) | 2018-09-03 → 2018-09-05 (+2d) |  |  |
| 224 | improvement of webchart generation | 2018-09-03 → 2018-09-05 (+2d) | 2018-09-03 → 2018-09-05 (+2d) |  |  |
| 225 | provide initial performance metrics based on 2017 experience | 2018-02-08 → 2018-02-09 (+1d) | 2018-02-08 → 2018-02-09 (+1d) |  |  |
| 226 | recommend performance metrics | 2018-08-08 → 2018-08-10 (+2d) | 2018-08-08 → 2018-08-10 (+2d) |  |  |
| 227 | draft process profile (recomm to automation integration) | 2018-08-10 → 2018-08-14 (+4d) | 2018-08-13 → 2018-08-15 (+2d) |  | 11000d → 11100d |
| 228 | **Dissemination system** | 2018-02-08 → 2018-02-09 (+1d) | 2018-09-03 → 2018-09-05 (+2d) |  |  |
| 229 | **alert generation module** | 2018-08-08 → 2018-08-10 (+2d) | 2018-09-03 → 2018-09-05 (+2d) | 18d → 17d |  |
| 230 | create modularized infrastructure for different operational triggers | 2018-08-28 → 2018-08-30 (+2d) | 2018-09-03 → 2018-09-05 (+2d) |  | 12200d → 12300d |
| 231 | create "special cases" tables (e.g., Puguis) | 2018-08-24 → 2018-08-28 (+4d) | 2018-08-30 → 2018-09-03 (+4d) |  | 12000d → 12100d |
| 232 | implement alert protocol (trigger to alert) revisions | 2018-08-31 → 2018-09-04 (+4d) | 2018-09-03 → 2018-09-05 (+2d) |  |  |
| 233 | recommend performance metrics (in relation to automation) | 2018-08-08 → 2018-08-10 (+2d) | 2018-08-08 → 2018-08-10 (+2d) |  |  |
| 234 | draft process profile (recomm to automation integration) | 2018-08-10 → 2018-08-14 (+4d) | 2018-08-13 → 2018-08-15 (+2d) |  | 11000d → 11100d |
| 235 | **GSM module server** | 2018-02-08 → 2018-02-09 (+1d) | 2018-08-13 → 2018-08-15 (+2d) | 112d? → 113d? |  |
| 236 | **develop new GSM module server features** | 2018-02-08 → 2018-02-09 (+1d) | 2018-02-26 → 2018-02-27 (+1d) |  | 11400d → 11200d |
| 237 | develop power autonomy | 2018-02-08 → 2018-02-09 (+1d) | 2018-02-26 → 2018-02-27 (+1d) |  |  |
| 238 | develop multiple gsm module hardware | 2018-02-08 → 2018-02-09 (+1d) | 2018-02-26 → 2018-02-27 (+1d) |  | 11400d → 11200d |
| 239 | implement new feature requests | 2018-02-08 → 2018-02-09 (+1d) | 2018-02-08 → 2018-02-09 (+1d) |  |  |
| 240 | recommend performance metrics (in relation to automation) | 2018-08-08 → 2018-08-10 (+2d) | 2018-08-08 → 2018-08-10 (+2d) |  |  |
| 241 | draft process profile (recomm to automation integration) | 2018-08-10 → 2018-08-14 (+4d) | 2018-08-13 → 2018-08-15 (+2d) |  | 11000d → 11100d |
| 242 | **chatterbox** | 2018-08-08 → 2018-08-10 (+2d) | 2018-09-03 → 2018-09-05 (+2d) | 18d? → 17d? |  |
| 243 | revise scripts for SMS generation and sending (automation?) | 2018-08-27 → 2018-08-29 (+2d) | 2018-09-03 → 2018-09-05 (+2d) |  |  |
| 244 | implement feature requests | 2018-09-03 → 2018-09-05 (+2d) | 2018-09-03 → 2018-09-05 (+2d) |  |  |
| 245 | improve performance | 2018-09-03 → 2018-09-05 (+2d) | 2018-09-03 → 2018-09-05 (+2d) |  |  |
| 246 | recommend performance metrics (in relation to automation) | 2018-08-08 → 2018-08-10 (+2d) | 2018-08-08 → 2018-08-10 (+2d) |  |  |
| 247 | draft process profile (recomm to automation integration) | 2018-08-10 → 2018-08-14 (+4d) | 2018-08-13 → 2018-08-15 (+2d) |  | 11000d → 11100d |
| 248 | **webcall** | 2018-05-25 → 2018-05-29 (+4d) | 2018-08-13 → 2018-08-15 (+2d) |  |  |
| 249 | acquire, implement hardware | 2018-05-25 → 2018-05-29 (+4d) | 2018-07-16 → 2018-07-18 (+2d) |  | 6400d → 6600d |
| 250 | develop/integrate software | 2018-07-17 → 2018-07-19 (+2d) | 2018-08-07 → 2018-08-09 (+2d) |  |  |
| 251 | recommend performance metrics (in relation to automation) | 2018-08-08 → 2018-08-10 (+2d) | 2018-08-08 → 2018-08-10 (+2d) |  |  |
| 252 | draft process profile (recomm to automation integration) | 2018-08-10 → 2018-08-14 (+4d) | 2018-08-13 → 2018-08-15 (+2d) |  |  |
| 253 | **bulletin generator** | 2018-02-08 → 2018-02-09 (+1d) | 2018-09-03 → 2018-09-05 (+2d) |  |  |
| 254 | revise scripts for bulletin generation and sending (automation?) | 2018-08-28 → 2018-08-30 (+2d) | 2018-09-03 → 2018-09-05 (+2d) |  | 12200d → 12300d |
| 255 | implement feature requests | 2018-02-08 → 2018-02-09 (+1d) | 2018-02-08 → 2018-02-09 (+1d) |  |  |
| 256 | improve performance | 2018-09-03 → 2018-09-05 (+2d) | 2018-09-03 → 2018-09-05 (+2d) |  |  |
| 257 | recommend performance metrics (in relation to automation) | 2018-08-08 → 2018-08-10 (+2d) | 2018-08-08 → 2018-08-10 (+2d) |  |  |
| 258 | draft process profile (recomm to automation integration) | 2018-08-10 → 2018-08-14 (+4d) | 2018-08-13 → 2018-08-15 (+2d) |  | 11000d → 11100d |
| 259 | **Local Info system (ISD)** | 2018-05-10 → 2018-05-14 (+4d) | 2018-09-03 → 2018-09-05 (+2d) | 74d → 72d |  |
| 260 | consolidate recommendations into ict specifications | 2018-05-10 → 2018-05-14 (+4d) | 2018-05-18 → 2018-05-22 (+4d) |  | 5300d → 5400d |
| 261 | use case testing | 2018-07-12 → 2018-07-16 (+4d) | 2018-09-03 → 2018-09-05 (+2d) |  | 3400d → 3300d |
| 262 | develop local codes updating system | 2018-08-14 → 2018-08-16 (+2d) | 2018-09-03 → 2018-09-05 (+2d) |  | 5300d → 5100d |
| 263 | port ews-l modules | 2018-05-21 → 2018-05-23 (+2d) | 2018-09-03 → 2018-09-05 (+2d) |  |  |
| 264 | **Automation integration system** | 2018-02-08 → 2018-02-09 (+1d) | 2018-09-03 → 2018-09-05 (+2d) |  |  |
| 265 | automate recommended processes | 2018-08-14 → 2018-08-16 (+2d) | 2018-09-03 → 2018-09-05 (+2d) |  |  |
| 266 | recommend performance metrics | 2018-02-08 → 2018-02-09 (+1d) | 2018-02-09 → 2018-02-12 (+3d) |  |  |
| 267 | **Performance monitoring system of central system** | 2018-02-08 → 2018-02-09 (+1d) | 2018-09-03 → 2018-09-05 (+2d) |  |  |
| 268 | consolidate recommendations for performance metrics | 2018-08-09 → 2018-08-13 (+4d) | 2018-08-09 → 2018-08-13 (+4d) |  |  |
| 269 | develop performance targets | 2018-02-08 → 2018-02-09 (+1d) | 2018-02-08 → 2018-02-09 (+1d) |  |  |
| 270 | **Performance monitoring system** | 2018-08-10 → 2018-08-14 (+4d) | 2018-09-03 → 2018-09-05 (+2d) | 15d? → 13d? |  |
| 271 | develop PMS backbone stable version | 2018-08-10 → 2018-08-14 (+4d) | 2018-08-27 → 2018-08-29 (+2d) |  |  |
| 272 | maintain PMS | 2018-08-28 → 2018-08-30 (+2d) | 2018-08-28 → 2018-08-30 (+2d) |  |  |
| 273 | develop agile PMS components | 2018-08-28 → 2018-08-30 (+2d) | 2018-08-28 → 2018-08-30 (+2d) |  |  |
| 274 | develop generic visualization charts | 2018-08-28 → 2018-08-30 (+2d) | 2018-09-03 → 2018-09-05 (+2d) |  |  |
| 275 | establish baseline | 2018-02-08 → 2018-02-09 (+1d) | 2018-02-08 → 2018-02-09 (+1d) |  |  |
| 276 | **Organized Local Early Warning Committee (LEWC)** | 2018-06-21 → 2018-06-25 (+4d) | 2018-09-03 → 2018-09-05 (+2d) | 46d → 44d |  |
| 277 | **LEWC org structure and mission/vision (47 sites)** | 2018-06-22 → 2018-06-26 (+4d) | 2018-09-03 → 2018-09-05 (+2d) | 44d → 42d |  |
| 278 | prepare modules | 2018-06-22 → 2018-06-26 (+4d) | 2018-07-11 → 2018-07-13 (+2d) |  | 7900d → 8000d |
| 279 | conduct training/ gather data | 2018-07-12 → 2018-07-16 (+4d) | 2018-09-03 → 2018-09-05 (+2d) |  |  |
| 280 | **Guidelines for community organizing (2 sites)** | 2018-06-21 → 2018-06-25 (+4d) | 2018-09-03 → 2018-09-05 (+2d) | 46d → 44d |  |
| 281 | develop methods for community organizing | 2018-06-21 → 2018-06-25 (+4d) | 2018-08-01 → 2018-08-03 (+2d) |  | 8100d → 8200d |
| 282 | gather data (fieldwork) | 2018-08-02 → 2018-08-06 (+4d) | 2018-08-17 → 2018-08-21 (+4d) |  |  |
| 283 | recommend activities for community organizing | 2018-08-20 → 2018-08-22 (+2d) | 2018-09-03 → 2018-09-05 (+2d) |  |  |
| 284 | **develop guidelines for institutionalization of LEWC (2 sites)** | 2018-06-21 → 2018-06-25 (+4d) | 2018-09-03 → 2018-09-05 (+2d) | 46d → 44d |  |

| ID | Task | Start | Finish | Duration | Total float |
| --- | --- | --- | --- | --- | --- |
| 285 | develop methods for crafing guidelines | 2018-06-21 → 2018-06-25 (+4d) | 2018-08-01 → 2018-08-03 (+2d) |  | 8100d → 8200d |
| 286 | gather data (fieldwork) | 2018-08-02 → 2018-08-06 (+4d) | 2018-08-17 → 2018-08-21 (+4d) |  |  |
| 287 | develop guidelines for institutionalization of LEWC | 2018-08-20 → 2018-08-22 (+2d) | 2018-09-03 → 2018-09-05 (+2d) |  |  |
| 288 | **Guidelines for developing contingency plans for DSL (barangay level)** | 2018-07-16 → 2018-07-18 (+2d) | 2018-09-03 → 2018-09-05 (+2d) |  |  |
| 289 | review literature on contingency plans | 2018-07-16 → 2018-07-18 (+2d) | 2018-08-20 → 2018-08-22 (+2d) |  | 9500d → 9600d |
| 290 | draft guidelines for contingency plans | 2018-08-21 → 2018-08-23 (+2d) | 2018-08-27 → 2018-08-29 (+2d) |  |  |
| 291 | approve guidelines for contingency plans | 2018-08-28 → 2018-08-30 (+2d) | 2018-09-03 → 2018-09-05 (+2d) |  |  |
| 292 | **Operations manual** | 2018-08-20 → 2018-08-22 (+2d) | 2018-09-03 → 2018-09-05 (+2d) |  |  |
| 293 | update EWS operations manual (1) | 2018-08-20 → 2018-08-22 (+2d) | 2018-08-23 → 2018-08-27 (+4d) |  |  |
| 294 | update EWS operations manual (2) | 2018-08-24 → 2018-08-28 (+4d) | 2018-08-29 → 2018-08-31 (+2d) |  |  |
| 295 | update EWS operations manual (3) | 2018-08-30 → 2018-09-03 (+4d) | 2018-09-03 → 2018-09-05 (+2d) |  |  |
| 296 | **Early warning information** | 2018-02-08 → 2018-02-09 (+1d) | 2018-09-03 → 2018-09-05 (+2d) |  |  |
| 297 | generate, review, and release EWI | 2018-09-03 → 2018-09-05 (+2d) | 2018-09-03 → 2018-09-05 (+2d) |  |  |
| 298 | **EWI support** | 2018-02-08 → 2018-02-09 (+1d) | 2018-09-03 → 2018-09-05 (+2d) |  |  |
| 299 | **operational systems** | 2018-09-03 → 2018-09-05 (+2d) | 2018-09-03 → 2018-09-05 (+2d) |  |  |
| 300 | **sensors and dataloggers** | 2018-09-03 → 2018-09-05 (+2d) | 2018-09-03 → 2018-09-05 (+2d) |  |  |
| 301 | replace defective sensors and loggers | 2018-09-03 → 2018-09-05 (+2d) | 2018-09-03 → 2018-09-05 (+2d) |  |  |
| 302 | monitor sensor and datalogger health status | 2018-09-03 → 2018-09-05 (+2d) | 2018-09-03 → 2018-09-05 (+2d) |  |  |
| 303 | track maintenance activities | 2018-09-03 → 2018-09-05 (+2d) | 2018-09-03 → 2018-09-05 (+2d) |  |  |
| 304 | manage inventory | 2018-09-03 → 2018-09-05 (+2d) | 2018-09-03 → 2018-09-05 (+2d) |  |  |
| 305 | track PLAA events | 2018-09-03 → 2018-09-05 (+2d) | 2018-09-03 → 2018-09-05 (+2d) |  |  |
| 306 | track sensor events | 2018-09-03 → 2018-09-05 (+2d) | 2018-09-03 → 2018-09-05 (+2d) |  |  |
| 307 | field-based maintenance | 2018-09-03 → 2018-09-05 (+2d) | 2018-09-03 → 2018-09-05 (+2d) |  |  |
| 308 | **central server (software)** | 2018-09-03 → 2018-09-05 (+2d) | 2018-09-03 → 2018-09-05 (+2d) |  |  |
| 309 | maintain data gathering system | 2018-09-03 → 2018-09-05 (+2d) | 2018-09-03 → 2018-09-05 (+2d) |  |  |
| 310 | maintain data storage and management system | 2018-09-03 → 2018-09-05 (+2d) | 2018-09-03 → 2018-09-05 (+2d) |  |  |
| 311 | maintain data analysis system | 2018-09-03 → 2018-09-05 (+2d) | 2018-09-03 → 2018-09-05 (+2d) |  |  |
| 312 | maintain info dissemination system | 2018-09-03 → 2018-09-05 (+2d) | 2018-09-03 → 2018-09-05 (+2d) |  |  |
| 313 | train staff for debugging | 2018-09-03 → 2018-09-05 (+2d) | 2018-09-03 → 2018-09-05 (+2d) |  |  |
| 314 | produce code and documentation standards | 2018-09-03 → 2018-09-05 (+2d) | 2018-09-03 → 2018-09-05 (+2d) |  |  |
| 315 | **updated database** | 2018-09-03 → 2018-09-05 (+2d) | 2018-09-03 → 2018-09-05 (+2d) |  |  |
| 316 | maintain tables | 2018-09-03 → 2018-09-05 (+2d) | 2018-09-03 → 2018-09-05 (+2d) |  |  |
| 317 | **parsed SMS** | 2018-09-03 → 2018-09-05 (+2d) | 2018-09-03 → 2018-09-05 (+2d) |  |  |
| 318 | maintain SMS parsing | 2018-09-03 → 2018-09-05 (+2d) | 2018-09-03 → 2018-09-05 (+2d) |  |  |
| 319 | **capable personnel for monitoring and early warning** | 2018-02-08 → 2018-02-09 (+1d) | 2018-09-03 → 2018-09-05 (+2d) |  |  |
| 320 | **develop training materials** | 2018-08-06 → 2018-08-08 (+2d) | 2018-08-31 → 2018-09-04 (+4d) | 17d? → 19d? |  |
| 321 | hazard monitoring | 2018-08-06 → 2018-08-08 (+2d) | 2018-08-31 → 2018-09-04 (+4d) |  | 10900d → 11000d |
| 322 | analysis and validation | 2018-08-06 → 2018-08-08 (+2d) | 2018-08-31 → 2018-09-04 (+4d) |  | 10900d → 11000d |
| 323 | sensor maintenance | 2018-08-31 → 2018-09-04 (+4d) | 2018-08-31 → 2018-09-04 (+4d) |  |  |
| 324 | communications protocol | 2018-08-06 → 2018-08-08 (+2d) | 2018-08-31 → 2018-09-04 (+4d) |  | 10900d → 11000d |
| 325 | **conduct EWS protocol trainings (internal)** | 2018-09-03 → 2018-09-05 (+2d) | 2018-09-03 → 2018-09-05 (+2d) |  |  |
| 326 | hazard monitoring | 2018-09-03 → 2018-09-05 (+2d) | 2018-09-03 → 2018-09-05 (+2d) |  |  |
| 327 | analysis and validation | 2018-09-03 → 2018-09-05 (+2d) | 2018-09-03 → 2018-09-05 (+2d) |  |  |
| 328 | sensor maintenance | 2018-09-03 → 2018-09-05 (+2d) | 2018-09-03 → 2018-09-05 (+2d) |  |  |
| 329 | communications protocol | 2018-09-03 → 2018-09-05 (+2d) | 2018-09-03 → 2018-09-05 (+2d) |  |  |
| 330 | **conduct EWS protocol trainings (external)** | 2018-02-08 → 2018-02-09 (+1d) | 2018-09-03 → 2018-09-05 (+2d) |  |  |
| 331 | combo training 1 (hazard monitoring, analysis, comm protocol) | 2018-02-08 → 2018-02-09 (+1d) | 2018-02-20 → 2018-02-21 (+1d) |  | 11800d → 11900d |
| 332 | combo training 2 (hazard monitoring, analysis, comm protocol) | 2018-02-08 → 2018-02-09 (+1d) | 2018-02-20 → 2018-02-21 (+1d) |  | 11800d → 11900d |
| 333 | combo training 3 (hazard monitoring, analysis, comm protocol) | 2018-02-08 → 2018-02-09 (+1d) | 2018-02-20 → 2018-02-21 (+1d) |  | 11800d → 11900d |
| 334 | combo training n (hazard monitoring, analysis, comm protocol) | 2018-02-08 → 2018-02-09 (+1d) | 2018-02-20 → 2018-02-21 (+1d) |  | 11800d → 11900d |
| 335 | sensor maintenance | 2018-09-03 → 2018-09-05 (+2d) | 2018-09-03 → 2018-09-05 (+2d) |  |  |
| 336 | **Strategic communications** | 2018-08-10 → 2018-08-14 (+4d) | 2018-09-03 → 2018-09-05 (+2d) | 15d? → 13d? |  |
| 337 | research stakeholder info needs | 2018-08-10 → 2018-08-14 (+4d) | 2018-08-10 → 2018-08-14 (+4d) |  | 11000d → 11100d |
| 338 | research policy process | 2018-09-03 → 2018-09-05 (+2d) | 2018-09-03 → 2018-09-05 (+2d) |  |  |
| 339 | develop strategic comm plan | 2018-08-13 → 2018-08-15 (+2d) | 2018-08-13 → 2018-08-15 (+2d) |  |  |
| 340 | **develop communication materials** | 2018-08-14 → 2018-08-16 (+2d) | 2018-09-03 → 2018-09-05 (+2d) |  |  |
| 341 | **website** | 2018-08-14 → 2018-08-16 (+2d) | 2018-09-03 → 2018-09-05 (+2d) |  |  |
| 342 | develop website content | 2018-08-14 → 2018-08-16 (+2d) | 2018-08-14 → 2018-08-16 (+2d) |  |  |
| 343 | design website | 2018-08-15 → 2018-08-17 (+2d) | 2018-08-15 → 2018-08-17 (+2d) |  |  |
| 344 | develop content management system (core) | 2018-08-16 → 2018-08-20 (+4d) | 2018-09-03 → 2018-09-05 (+2d) |  |  |
| 345 | develop non-website communications | 2018-09-03 → 2018-09-05 (+2d) | 2018-09-03 → 2018-09-05 (+2d) |  |  |
| 346 | **MEAL system** | 2018-02-08 → 2018-02-09 (+1d) | 2018-09-03 → 2018-09-05 (+2d) |  |  |
| 347 | sourcing of MEAL expert | 2018-02-08 → 2018-02-09 (+1d) | 2018-02-19 → 2018-02-20 (+1d) |  | 2800d → 2700d |
| 348 | develop MEAL framework | 2018-04-10 → 2018-04-12 (+2d) | 2018-04-11 → 2018-04-13 (+2d) |  |  |
| 349 | develop MEAL plan | 2018-04-12 → 2018-04-16 (+4d) | 2018-04-17 → 2018-04-19 (+2d) |  |  |
| 350 | conduct training needs analysis | 2018-04-18 → 2018-04-20 (+2d) | 2018-04-18 → 2018-04-20 (+2d) |  | 8400d → 8300d |
| 351 | develop training plan | 2018-04-19 → 2018-04-23 (+4d) | 2018-04-20 → 2018-04-24 (+4d) |  | 8300d → 8100d |
| 352 | **monitoring mechanisms** | 2018-02-08 → 2018-02-09 (+1d) | 2018-09-03 → 2018-09-05 (+2d) |  |  |
| 353 | **standard documentation and storage** | 2018-08-24 → 2018-08-28 (+4d) | 2018-09-03 → 2018-09-05 (+2d) | 5d → 4d |  |
| 354 | design documentation templates and organization/structure | 2018-08-24 → 2018-08-28 (+4d) | 2018-08-30 → 2018-09-03 (+4d) |  |  |

| ID | Task | Start | Finish | Duration | Total float |
| --- | --- | --- | --- | --- | --- |
| 355 | design repository system | 2018-08-31 → 2018-09-04 (+4d) | 2018-09-03 → 2018-09-05 (+2d) |  |  |
| 356 | **PLAA** | 2018-08-30 → 2018-09-03 (+4d) | 2018-09-03 → 2018-09-05 (+2d) |  |  |
| 357 | review current PLAA vis-a-vis MEAL plan | 2018-08-30 → 2018-09-03 (+4d) | 2018-08-31 → 2018-09-04 (+4d) |  | 8400d → 8200d |
| 358 | revise PLAA guidelines | 2018-09-03 → 2018-09-05 (+2d) | 2018-09-03 → 2018-09-05 (+2d) |  |  |
| 359 | **EWS-QA** | 2018-02-08 → 2018-02-09 (+1d) | 2018-09-03 → 2018-09-05 (+2d) |  |  |
| 360 | review current EWS-QA vis-a-vis MEAL plan | 2018-08-30 → 2018-09-03 (+4d) | 2018-08-31 → 2018-09-04 (+4d) |  | 8400d → 8200d |
| 361 | revise EWS-QA guidelines | 2018-09-03 → 2018-09-05 (+2d) | 2018-09-03 → 2018-09-05 (+2d) |  |  |
| 362 | revise tools for data gathering | 2018-02-08 → 2018-02-09 (+1d) | 2018-02-09 → 2018-02-12 (+3d) |  |  |
| 363 | **outcome-impact** | 2018-08-30 → 2018-09-03 (+4d) | 2018-09-03 → 2018-09-05 (+2d) |  |  |
| 364 | review outcome-impact vis-a-vis MEAL plan | 2018-08-30 → 2018-09-03 (+4d) | 2018-08-31 → 2018-09-04 (+4d) |  | 8400d → 8200d |
| 365 | revise outcome-impact | 2018-09-03 → 2018-09-05 (+2d) | 2018-09-03 → 2018-09-05 (+2d) |  |  |
| 366 | **administrative process** | 2018-08-30 → 2018-09-03 (+4d) | 2018-09-03 → 2018-09-05 (+2d) |  |  |
| 367 | review admin process trackers vis-a-vis MEAL plan | 2018-08-30 → 2018-09-03 (+4d) | 2018-08-31 → 2018-09-04 (+4d) |  | 8400d → 8200d |
| 368 | revise admin process trackers | 2018-09-03 → 2018-09-05 (+2d) | 2018-09-03 → 2018-09-05 (+2d) |  |  |
| 369 | **project output** | 2018-08-30 → 2018-09-03 (+4d) | 2018-09-03 → 2018-09-05 (+2d) |  |  |
| 370 | develop team output tracker | 2018-08-30 → 2018-09-03 (+4d) | 2018-08-30 → 2018-09-03 (+4d) |  | 8400d → 8300d |
| 371 | develop individual output tracker | 2018-08-31 → 2018-09-04 (+4d) | 2018-08-31 → 2018-09-04 (+4d) |  |  |
| 372 | develop individual capacity tracker | 2018-09-03 → 2018-09-05 (+2d) | 2018-09-03 → 2018-09-05 (+2d) |  |  |
| 373 | **stakeholder concerns** | 2018-09-03 → 2018-09-05 (+2d) | 2018-09-03 → 2018-09-05 (+2d) |  |  |
| 374 | develop stakeholder concerns tracker | 2018-09-03 → 2018-09-05 (+2d) | 2018-09-03 → 2018-09-05 (+2d) |  | 8650d → 8550d |
| 375 | **MEAL implem** | 2018-04-18 → 2018-04-20 (+2d) | 2018-09-03 → 2018-09-05 (+2d) | 87d? → 86d? |  |
| 376 | **EWS-QA** | 2018-04-18 → 2018-04-20 (+2d) | 2018-04-18 → 2018-04-20 (+2d) |  | 8600d → 8500d |
| 377 | **bimonthly** | 2018-04-18 → 2018-04-20 (+2d) | 2018-04-18 → 2018-04-20 (+2d) |  | 8600d → 8500d |
| 378 | gather, analyze, evaluate data | 2018-04-18 → 2018-04-20 (+2d) | 2018-04-18 → 2018-04-20 (+2d) |  | 8600d → 8500d |
| 379 | prepare for presentation (feedback sessions) | 2018-04-18 → 2018-04-20 (+2d) | 2018-04-18 → 2018-04-20 (+2d) |  | 8600d → 8500d |
| 380 | **quarterly** | 2018-04-18 → 2018-04-20 (+2d) | 2018-04-18 → 2018-04-20 (+2d) |  | 8600d → 8500d |
| 381 | gather, analyze, evaluate data | 2018-04-18 → 2018-04-20 (+2d) | 2018-04-18 → 2018-04-20 (+2d) |  | 8600d → 8500d |
| 382 | prepare for presentation (feedback sessions) | 2018-04-18 → 2018-04-20 (+2d) | 2018-04-18 → 2018-04-20 (+2d) |  | 8600d → 8500d |
| 383 | **annual** | 2018-04-18 → 2018-04-20 (+2d) | 2018-04-18 → 2018-04-20 (+2d) |  | 8600d → 8500d |
| 384 | gather, analyze, evaluate data | 2018-04-18 → 2018-04-20 (+2d) | 2018-04-18 → 2018-04-20 (+2d) |  | 8600d → 8500d |
| 385 | prepare for presentation (feedback sessions) | 2018-04-18 → 2018-04-20 (+2d) | 2018-04-18 → 2018-04-20 (+2d) |  | 8600d → 8500d |
| 386 | **PLAA** | 2018-04-18 → 2018-04-20 (+2d) | 2018-09-03 → 2018-09-05 (+2d) | 87d? → 86d? |  |
| 387 | **site 1** | 2018-04-18 → 2018-04-20 (+2d) | 2018-05-10 → 2018-05-14 (+4d) |  |  |
| 388 | conduct sensor fieldwork - write report | 2018-04-18 → 2018-04-20 (+2d) | 2018-04-26 → 2018-04-30 (+4d) |  | 700d → 500d |
| 389 | conduct landslide fieldwork - write report | 2018-04-18 → 2018-04-20 (+2d) | 2018-05-07 → 2018-05-09 (+2d) | 14d → 13d |  |
| 390 | conduct community fieldwork - write report | 2018-04-18 → 2018-04-20 (+2d) | 2018-05-07 → 2018-05-09 (+2d) | 14d → 13d |  |
| 391 | review | 2018-05-08 → 2018-05-10 (+2d) | 2018-05-10 → 2018-05-14 (+4d) |  |  |
| 392 | **site 2** | 2018-05-11 → 2018-05-15 (+4d) | 2018-05-31 → 2018-06-04 (+4d) |  |  |
| 393 | conduct sensor fieldwork - write report | 2018-05-11 → 2018-05-15 (+4d) | 2018-05-17 → 2018-05-21 (+4d) |  |  |
| 394 | conduct landslide fieldwork - write report | 2018-05-11 → 2018-05-15 (+4d) | 2018-05-28 → 2018-05-30 (+2d) |  |  |
| 395 | conduct community fieldwork - write report | 2018-05-11 → 2018-05-15 (+4d) | 2018-05-28 → 2018-05-30 (+2d) |  |  |
| 396 | review | 2018-05-29 → 2018-05-31 (+2d) | 2018-05-31 → 2018-06-04 (+4d) |  |  |
| 397 | **site 3** | 2018-06-01 → 2018-06-05 (+4d) | 2018-06-22 → 2018-06-26 (+4d) | 14d → 16d |  |
| 398 | conduct sensor fieldwork - write report | 2018-06-01 → 2018-06-05 (+4d) | 2018-06-11 → 2018-06-13 (+2d) | 5d → 7d |  |
| 399 | conduct landslide fieldwork - write report | 2018-06-01 → 2018-06-05 (+4d) | 2018-06-19 → 2018-06-21 (+2d) | 11d → 13d |  |
| 400 | conduct community fieldwork - write report | 2018-06-01 → 2018-06-05 (+4d) | 2018-06-19 → 2018-06-21 (+2d) | 11d → 13d |  |
| 401 | review | 2018-06-20 → 2018-06-22 (+2d) | 2018-06-22 → 2018-06-26 (+4d) |  |  |
| 402 | **site 4** | 2018-06-25 → 2018-06-27 (+2d) | 2018-07-13 → 2018-07-17 (+4d) |  |  |
| 403 | conduct sensor fieldwork - write report | 2018-06-25 → 2018-06-27 (+2d) | 2018-07-04 → 2018-07-06 (+2d) | 6d → 5d |  |
| 404 | conduct landslide fieldwork - write report | 2018-06-25 → 2018-06-27 (+2d) | 2018-07-10 → 2018-07-12 (+2d) |  |  |
| 405 | conduct community fieldwork - write report | 2018-06-25 → 2018-06-27 (+2d) | 2018-07-10 → 2018-07-12 (+2d) |  |  |
| 406 | review | 2018-07-11 → 2018-07-13 (+2d) | 2018-07-13 → 2018-07-17 (+4d) |  |  |
| 407 | **site 5** | 2018-07-16 → 2018-07-18 (+2d) | 2018-08-08 → 2018-08-10 (+2d) | 16d → 15d |  |
| 408 | conduct sensor fieldwork - write report | 2018-07-16 → 2018-07-18 (+2d) | 2018-07-25 → 2018-07-27 (+2d) |  | 700d → 600d |
| 409 | conduct landslide fieldwork - write report | 2018-07-16 → 2018-07-18 (+2d) | 2018-08-03 → 2018-08-07 (+4d) |  |  |
| 410 | conduct community fieldwork - write report | 2018-07-16 → 2018-07-18 (+2d) | 2018-08-03 → 2018-08-07 (+4d) |  |  |
| 411 | review | 2018-08-06 → 2018-08-08 (+2d) | 2018-08-08 → 2018-08-10 (+2d) |  |  |
| 412 | **site 6** | 2018-08-09 → 2018-08-13 (+4d) | 2018-09-03 → 2018-09-05 (+2d) | 17d → 15d |  |
| 413 | conduct sensor fieldwork - write report | 2018-08-09 → 2018-08-13 (+4d) | 2018-08-20 → 2018-08-22 (+2d) |  |  |
| 414 | conduct landslide fieldwork - write report | 2018-08-09 → 2018-08-13 (+4d) | 2018-08-29 → 2018-08-31 (+2d) | 15d → 14d |  |
| 415 | conduct community fieldwork - write report | 2018-08-09 → 2018-08-13 (+4d) | 2018-08-29 → 2018-08-31 (+2d) | 15d → 14d |  |
| 416 | review | 2018-08-30 → 2018-09-03 (+4d) | 2018-09-03 → 2018-09-05 (+2d) |  |  |
| 417 | synthesis (across sites) | 2018-04-18 → 2018-04-20 (+2d) | 2018-04-18 → 2018-04-20 (+2d) |  | 8600d → 8500d |
| 418 | **outcome-impact** | 2018-04-18 → 2018-04-20 (+2d) | 2018-04-18 → 2018-04-20 (+2d) |  | 8600d → 8500d |
| 419 | **activity series 1** | 2018-04-18 → 2018-04-20 (+2d) | 2018-04-18 → 2018-04-20 (+2d) |  | 8600d → 8500d |
| 420 | gather data | 2018-04-18 → 2018-04-20 (+2d) | 2018-04-18 → 2018-04-20 (+2d) |  | 8600d → 8500d |
| 421 | analyze, evaluate data | 2018-04-18 → 2018-04-20 (+2d) | 2018-04-18 → 2018-04-20 (+2d) |  | 8600d → 8500d |
| 422 | provide recommendations | 2018-04-18 → 2018-04-20 (+2d) | 2018-04-18 → 2018-04-20 (+2d) |  | 8600d → 8500d |
| 423 | **project output** | 2018-04-18 → 2018-04-20 (+2d) | 2018-04-18 → 2018-04-20 (+2d) |  | 8600d → 8500d |
| 424 | **activity series 1** | 2018-04-18 → 2018-04-20 (+2d) | 2018-04-18 → 2018-04-20 (+2d) |  | 8600d → 8500d |

| ID | Task | Start | Finish | Total float |
| --- | --- | --- | --- | --- |
| 425 | gather data | 2018-04-18 → 2018-04-20 (+2d) | 2018-04-18 → 2018-04-20 (+2d) | 8600d → 8500d |
| 426 | analyze, evaluate data | 2018-04-18 → 2018-04-20 (+2d) | 2018-04-18 → 2018-04-20 (+2d) | 8600d → 8500d |
| 427 | provide recommendations | 2018-04-18 → 2018-04-20 (+2d) | 2018-04-18 → 2018-04-20 (+2d) | 8600d → 8500d |
| 428 | **stakeholder concerns** | 2018-04-18 → 2018-04-20 (+2d) | 2018-04-18 → 2018-04-20 (+2d) | 8600d → 8500d |
| 429 | **activity series 1** | 2018-04-18 → 2018-04-20 (+2d) | 2018-04-18 → 2018-04-20 (+2d) | 8600d → 8500d |
| 430 | gather data | 2018-04-18 → 2018-04-20 (+2d) | 2018-04-18 → 2018-04-20 (+2d) | 8600d → 8500d |
| 431 | analyze, evaluate data | 2018-04-18 → 2018-04-20 (+2d) | 2018-04-18 → 2018-04-20 (+2d) | 8600d → 8500d |
| 432 | provide recommendations | 2018-04-18 → 2018-04-20 (+2d) | 2018-04-18 → 2018-04-20 (+2d) | 8600d → 8500d |
| 433 | **admin process** | 2018-04-18 → 2018-04-20 (+2d) | 2018-04-18 → 2018-04-20 (+2d) | 8600d → 8500d |
| 434 | **activity series 1** | 2018-04-18 → 2018-04-20 (+2d) | 2018-04-18 → 2018-04-20 (+2d) | 8600d → 8500d |
| 435 | gather data | 2018-04-18 → 2018-04-20 (+2d) | 2018-04-18 → 2018-04-20 (+2d) | 8600d → 8500d |
| 436 | analyze, evaluate data | 2018-04-18 → 2018-04-20 (+2d) | 2018-04-18 → 2018-04-20 (+2d) | 8600d → 8500d |
| 437 | provide recommendations | 2018-04-18 → 2018-04-20 (+2d) | 2018-04-18 → 2018-04-20 (+2d) | 8600d → 8500d |

## Version 5 (saved 2018-01-08)

Note of the change: update landslide hazard assessment per sites, incorporating 3 types of surveys from SS, although these still need predecessors and resources

Last finish 2018-09-05 → 2018-09-11 (+6d).

Added:

| ID | Task | Duration | Start | Finish | Predecessors | Constraint | Resources |
| --- | --- | --- | --- | --- | --- | --- | --- |
| 132 | **per site hazard reports (5 sites)** | 4d | 2018-02-09 | 2018-02-14 |  |  |  |
| 136 | analyze monitoring data (requires access to database) | 2d | 2018-02-09 | 2018-02-12 |  |  |  |
| 137 | update volume, depth, extent (using current models) | 1d | 2018-02-09 | 2018-02-09 |  |  |  |
| 138 | update thresholds with monitoring data and performance index | 2d | 2018-02-09 | 2018-02-12 |  |  |  |
| 139 | update per site hazard reports (updated maps as PI) | 3d | 2018-02-09 | 2018-02-13 |  |  |  |
| 140 | per site capacity and vulnerability reports (focus sites) | 2d | 2018-02-09 | 2018-02-12 |  |  |  |
| 142 | **per site hazard reports (50-11-5=34)** | 2d | 2018-02-09 | 2018-02-12 |  |  |  |
| 143 | analyze monitoring data (requires access to database) | 1d | 2018-02-09 | 2018-02-09 |  |  |  |
| 144 | update volume, depth, extent (using current models) | 1d | 2018-02-09 | 2018-02-09 |  |  |  |
| 145 | update thresholds with monitoring data and performance index | 1d | 2018-02-09 | 2018-02-09 |  |  |  |
| 146 | update per site hazard reports (updated maps as PI) | 2d | 2018-02-09 | 2018-02-12 |  |  |  |
| 147 | per site capacity and vulnerability reports (focus sites) | 1d | 2018-02-09 | 2018-02-09 |  |  |  |
| 154 | **per site capacity and vulnerability report (SITE 2, Mindanao)** | 121d | 2018-02-09 | 2018-08-30 |  |  |  |
| 156 | conduct data gathering | 11d | 2018-07-17 | 2018-07-31 |  | as late as possible | social scientist 1 |
| 159 | **per site capacity and vulnerability report (SITE 2, Mindanao)** | 121d | 2018-02-09 | 2018-08-30 |  |  |  |
| 160 | conduct data gathering | 11d | 2018-07-06 | 2018-07-20 |  | as late as possible |  |
| 161 | conduct data gathering | 11d | 2018-07-06 | 2018-07-20 |  | as late as possible | social scientist 2 |
| 162 | analyze data | 20d | 2018-07-23 | 2018-08-23 | 161, 160 | as late as possible |  |
| 163 | update per site capacity and vulnerability reports | 5d | 2018-08-24 | 2018-08-30 | 162 | as late as possible |  |

Changed:

| ID | Task | Start | Finish | Duration | Total float |
| --- | --- | --- | --- | --- | --- |
| 1 | **Landslide risk information** | 2018-05-18 → 2018-02-09 (-98d) | 2018-09-05 → 2018-09-10 (+5d) | 69d? → 125d? |  |
| 2 | **methods report (Hazards)** | 2018-06-27 → 2018-02-09 (-138d) | 2018-09-05 → 2018-09-10 (+5d) | 44d? → 125d? |  |
| 3 | MoMs | 2018-09-05 → 2018-09-10 (+5d) | 2018-09-05 → 2018-09-10 (+5d) |  | 12500d → 12400d |
| 4 | study surficial displacement behaviour | 2018-09-05 → 2018-09-10 (+5d) | 2018-09-05 → 2018-09-10 (+5d) |  | 12500d → 12400d |
| 5 | **slope stability models (FEM)** | 2018-07-04 → 2018-02-09 (-145d) | 2018-09-05 → 2018-09-10 (+5d) | 42d → 125d |  |
| 6 | review related literature | 2018-07-04 → 2018-07-12 (+8d) | 2018-07-12 → 2018-07-20 (+8d) |  | 8600d → 9100d |
| 7 | develop prototype | 2018-07-13 → 2018-07-23 (+10d) | 2018-07-19 → 2018-07-27 (+8d) |  |  |
| 8 | test model with monitoring data | 2018-07-20 → 2018-07-30 (+10d) | 2018-08-08 → 2018-08-13 (+5d) | 14d → 11d |  |
| 9 | field data gathering | 2018-08-09 → 2018-08-14 (+5d) | 2018-08-16 → 2018-08-21 (+5d) |  |  |
| 10 | field data gathering | 2018-08-09 → 2018-08-14 (+5d) | 2018-08-16 → 2018-08-21 (+5d) |  |  |
| 11 | evaluate model (report as PI of slope stab model) | 2018-08-17 → 2018-08-22 (+5d) | 2018-08-22 → 2018-08-27 (+5d) |  |  |
| 12 | write report | 2018-08-23 → 2018-08-28 (+5d) | 2018-08-29 → 2018-09-03 (+5d) |  |  |
| 13 | develop training materials | 2018-08-30 → 2018-09-04 (+5d) | 2018-09-03 → 2018-09-06 (+3d) |  |  |
| 14 | conduct training | 2018-09-04 → 2018-09-07 (+3d) | 2018-09-05 → 2018-09-10 (+5d) |  |  |
| 15 | **slope stability models (LEM1)** | 2018-07-11 → 2018-02-09 (-152d) | 2018-09-05 → 2018-09-10 (+5d) | 37d → 125d |  |
| 16 | review related literature | 2018-07-11 → 2018-07-16 (+5d) | 2018-07-17 → 2018-07-20 (+3d) |  | 9100d → 9300d |
| 17 | develop prototype | 2018-07-18 → 2018-07-23 (+5d) | 2018-07-24 → 2018-07-27 (+3d) |  |  |
| 18 | test model with monitoring data | 2018-07-25 → 2018-07-30 (+5d) | 2018-07-31 → 2018-08-03 (+3d) |  |  |
| 19 | field data gathering | 2018-08-01 → 2018-08-06 (+5d) | 2018-08-17 → 2018-08-22 (+5d) |  |  |
| 20 | field data gathering | 2018-08-01 → 2018-08-06 (+5d) | 2018-08-17 → 2018-08-22 (+5d) |  |  |
| 21 | evaluate model (report as PI of slope stab model) | 2018-08-20 → 2018-08-23 (+3d) | 2018-08-22 → 2018-08-27 (+5d) |  |  |
| 22 | write report | 2018-08-23 → 2018-08-28 (+5d) | 2018-08-29 → 2018-09-03 (+5d) |  |  |
| 23 | develop training materials | 2018-08-30 → 2018-09-04 (+5d) | 2018-09-03 → 2018-09-06 (+3d) |  |  |
| 24 | conduct training | 2018-09-04 → 2018-09-07 (+3d) | 2018-09-05 → 2018-09-10 (+5d) |  |  |
| 25 | **slope stability models (LEM2)** | 2018-07-11 → 2018-02-09 (-152d) | 2018-09-05 → 2018-09-10 (+5d) | 37d → 125d |  |
| 26 | review related literature | 2018-07-11 → 2018-07-16 (+5d) | 2018-07-17 → 2018-07-20 (+3d) |  | 9100d → 9300d |
| 27 | develop prototype | 2018-07-18 → 2018-07-23 (+5d) | 2018-07-24 → 2018-07-27 (+3d) |  |  |
| 28 | test model with monitoring data | 2018-07-25 → 2018-07-30 (+5d) | 2018-07-31 → 2018-08-03 (+3d) |  |  |
| 29 | field data gathering | 2018-08-01 → 2018-08-06 (+5d) | 2018-08-17 → 2018-08-22 (+5d) |  |  |
| 30 | field data gathering | 2018-08-01 → 2018-08-06 (+5d) | 2018-08-17 → 2018-08-22 (+5d) |  |  |
| 31 | evaluate model (report as PI of slope stab model) | 2018-08-20 → 2018-08-23 (+3d) | 2018-08-22 → 2018-08-27 (+5d) |  |  |
| 32 | write report | 2018-08-23 → 2018-08-28 (+5d) | 2018-08-29 → 2018-09-03 (+5d) |  |  |
| 33 | develop training materials | 2018-08-30 → 2018-09-04 (+5d) | 2018-09-03 → 2018-09-06 (+3d) |  |  |
| 34 | conduct training | 2018-09-04 → 2018-09-07 (+3d) | 2018-09-05 → 2018-09-10 (+5d) |  |  |
| 35 | **runout model 1** | 2018-07-16 → 2018-02-09 (-157d) | 2018-09-05 → 2018-09-10 (+5d) | 32d → 125d |  |
| 36 | review related literature | 2018-07-16 → 2018-07-19 (+3d) | 2018-07-27 → 2018-08-01 (+5d) |  | 9300d → 9500d |
| 37 | develop prototype | 2018-07-30 → 2018-08-02 (+3d) | 2018-08-10 → 2018-08-15 (+5d) |  |  |
| 38 | test model with monitoring data | 2018-08-13 → 2018-08-16 (+3d) | 2018-08-17 → 2018-08-22 (+5d) |  |  |
| 39 | evaluate model (report as PI of runout model) | 2018-08-20 → 2018-08-23 (+3d) | 2018-08-22 → 2018-08-27 (+5d) |  |  |
| 40 | write report | 2018-08-23 → 2018-08-28 (+5d) | 2018-08-29 → 2018-09-03 (+5d) |  |  |
| 41 | develop training materials | 2018-08-30 → 2018-09-04 (+5d) | 2018-09-03 → 2018-09-06 (+3d) |  |  |
| 42 | conduct training | 2018-09-04 → 2018-09-07 (+3d) | 2018-09-05 → 2018-09-10 (+5d) |  |  |
| 43 | **runout model 2** | 2018-07-23 → 2018-02-09 (-164d) | 2018-09-05 → 2018-09-10 (+5d) | 27d → 125d |  |
| 44 | review related literature | 2018-07-23 → 2018-07-26 (+3d) | 2018-07-27 → 2018-08-01 (+5d) |  | 9900d → 10100d |
| 45 | develop prototype | 2018-07-30 → 2018-08-02 (+3d) | 2018-08-10 → 2018-08-15 (+5d) |  |  |
| 46 | test model with monitoring data | 2018-08-13 → 2018-08-16 (+3d) | 2018-08-17 → 2018-08-22 (+5d) |  |  |
| 47 | evaluate model (report as PI of runout model) | 2018-08-20 → 2018-08-23 (+3d) | 2018-08-22 → 2018-08-27 (+5d) |  |  |
| 48 | write report | 2018-08-23 → 2018-08-28 (+5d) | 2018-08-29 → 2018-09-03 (+5d) |  |  |
| 49 | develop training materials | 2018-08-30 → 2018-09-04 (+5d) | 2018-09-03 → 2018-09-06 (+3d) |  |  |
| 50 | conduct training | 2018-09-04 → 2018-09-07 (+3d) | 2018-09-05 → 2018-09-10 (+5d) |  |  |
| 51 | **threshold model 1** | 2018-06-27 → 2018-02-09 (-138d) | 2018-08-09 → 2018-08-21 (+12d) | 26d → 115d |  |
| 52 | review related literature | 2018-06-27 → 2018-07-09 (+12d) | 2018-07-03 → 2018-07-13 (+10d) |  | 8400d → 8800d |
| 53 | develop prototype | 2018-07-04 → 2018-07-16 (+12d) | 2018-07-23 → 2018-08-02 (+10d) |  |  |
| 54 | implement model alongside operations | 2018-07-24 → 2018-08-03 (+10d) | 2018-07-31 → 2018-08-10 (+10d) |  |  |
| 55 | evaluate model (report as PI of threshold model) | 2018-08-01 → 2018-08-13 (+12d) | 2018-08-01 → 2018-08-13 (+12d) |  |  |
| 56 | write report | 2018-08-02 → 2018-08-14 (+12d) | 2018-08-07 → 2018-08-17 (+10d) |  |  |
| 57 | develop training materials | 2018-08-08 → 2018-08-20 (+12d) | 2018-08-08 → 2018-08-20 (+12d) |  |  |
| 58 | conduct training | 2018-08-09 → 2018-08-21 (+12d) | 2018-08-09 → 2018-08-21 (+12d) |  |  |
| 59 | **threshold model 2** | 2018-06-27 → 2018-02-09 (-138d) | 2018-08-09 → 2018-08-21 (+12d) | 26d → 115d |  |
| 60 | review related literature | 2018-06-27 → 2018-07-09 (+12d) | 2018-07-03 → 2018-07-13 (+10d) |  | 8400d → 8800d |
| 61 | develop prototype | 2018-07-04 → 2018-07-16 (+12d) | 2018-07-23 → 2018-08-02 (+10d) |  |  |
| 62 | implement model alongside operations | 2018-07-24 → 2018-08-03 (+10d) | 2018-07-31 → 2018-08-10 (+10d) |  |  |
| 63 | evaluate model (report as PI of threshold model) | 2018-08-01 → 2018-08-13 (+12d) | 2018-08-01 → 2018-08-13 (+12d) |  |  |
| 64 | write report | 2018-08-02 → 2018-08-14 (+12d) | 2018-08-07 → 2018-08-17 (+10d) |  |  |
| 65 | develop training materials | 2018-08-08 → 2018-08-20 (+12d) | 2018-08-08 → 2018-08-20 (+12d) |  |  |
| 66 | conduct training | 2018-08-09 → 2018-08-21 (+12d) | 2018-08-09 → 2018-08-21 (+12d) |  |  |
| 67 | **threshold model 3** | 2018-06-27 → 2018-02-09 (-138d) | 2018-08-09 → 2018-08-21 (+12d) | 26d → 115d |  |
| 68 | review related literature | 2018-06-27 → 2018-07-09 (+12d) | 2018-07-03 → 2018-07-13 (+10d) |  | 8400d → 8800d |
| 69 | develop prototype | 2018-07-04 → 2018-07-16 (+12d) | 2018-07-23 → 2018-08-02 (+10d) |  |  |
| 70 | implement model alongside operations | 2018-07-24 → 2018-08-03 (+10d) | 2018-07-31 → 2018-08-10 (+10d) |  |  |

| ID | Task | Start | Finish | Duration | Total float | Predecessors | Other |
| --- | --- | --- | --- | --- | --- | --- | --- |
| 71 | evaluate model (report as PI of threshold model) | 2018-08-01 → 2018-08-13 (+12d) | 2018-08-01 → 2018-08-13 (+12d) |  |  |  |  |
| 72 | write report | 2018-08-02 → 2018-08-14 (+12d) | 2018-08-07 → 2018-08-17 (+10d) |  |  |  |  |
| 73 | develop training materials | 2018-08-08 → 2018-08-20 (+12d) | 2018-08-08 → 2018-08-20 (+12d) |  |  |  |  |
| 74 | conduct training | 2018-08-09 → 2018-08-21 (+12d) | 2018-08-09 → 2018-08-21 (+12d) |  |  |  |  |
| 75 | **threshold model 4** | 2018-06-27 → 2018-02-09 (-138d) | 2018-08-09 → 2018-08-21 (+12d) | 26d → 115d |  |  |  |
| 76 | review related literature | 2018-06-27 → 2018-07-09 (+12d) | 2018-07-03 → 2018-07-13 (+10d) |  | 8400d → 8800d |  |  |
| 77 | develop prototype | 2018-07-04 → 2018-07-16 (+12d) | 2018-07-23 → 2018-08-02 (+10d) |  |  |  |  |
| 78 | implement model alongside operations | 2018-07-24 → 2018-08-03 (+10d) | 2018-07-31 → 2018-08-10 (+10d) |  |  |  |  |
| 79 | evaluate model (report as PI of threshold model) | 2018-08-01 → 2018-08-13 (+12d) | 2018-08-01 → 2018-08-13 (+12d) |  |  |  |  |
| 80 | write report | 2018-08-02 → 2018-08-14 (+12d) | 2018-08-07 → 2018-08-17 (+10d) |  |  |  |  |
| 81 | develop training materials | 2018-08-08 → 2018-08-20 (+12d) | 2018-08-08 → 2018-08-20 (+12d) |  |  |  |  |
| 82 | conduct training | 2018-08-09 → 2018-08-21 (+12d) | 2018-08-09 → 2018-08-21 (+12d) |  |  |  |  |
| 83 | **threshold model 5** | 2018-06-27 → 2018-02-09 (-138d) | 2018-08-09 → 2018-08-21 (+12d) | 26d → 115d |  |  |  |
| 84 | review related literature | 2018-06-27 → 2018-07-09 (+12d) | 2018-07-03 → 2018-07-13 (+10d) |  | 8400d → 8800d |  |  |
| 85 | develop prototype | 2018-07-04 → 2018-07-16 (+12d) | 2018-07-23 → 2018-08-02 (+10d) |  |  |  |  |
| 86 | implement model alongside operations | 2018-07-24 → 2018-08-03 (+10d) | 2018-07-31 → 2018-08-10 (+10d) |  |  |  |  |
| 87 | evaluate model (report as PI of threshold model) | 2018-08-01 → 2018-08-13 (+12d) | 2018-08-01 → 2018-08-13 (+12d) |  |  |  |  |
| 88 | write report | 2018-08-02 → 2018-08-14 (+12d) | 2018-08-07 → 2018-08-17 (+10d) |  |  |  |  |
| 89 | develop training materials | 2018-08-08 → 2018-08-20 (+12d) | 2018-08-08 → 2018-08-20 (+12d) |  |  |  |  |
| 90 | conduct training | 2018-08-09 → 2018-08-21 (+12d) | 2018-08-09 → 2018-08-21 (+12d) |  |  |  |  |
| 91 | **threshold model 6** | 2018-06-27 → 2018-02-09 (-138d) | 2018-08-09 → 2018-08-21 (+12d) | 26d → 115d |  |  |  |
| 92 | review related literature | 2018-06-27 → 2018-07-09 (+12d) | 2018-07-03 → 2018-07-13 (+10d) |  | 8400d → 8800d |  |  |
| 93 | develop prototype | 2018-07-04 → 2018-07-16 (+12d) | 2018-07-23 → 2018-08-02 (+10d) |  |  |  |  |
| 94 | implement model alongside operations | 2018-07-24 → 2018-08-03 (+10d) | 2018-07-31 → 2018-08-10 (+10d) |  |  |  |  |
| 95 | evaluate model (report as PI of threshold model) | 2018-08-01 → 2018-08-13 (+12d) | 2018-08-01 → 2018-08-13 (+12d) |  |  |  |  |
| 96 | write report | 2018-08-02 → 2018-08-14 (+12d) | 2018-08-07 → 2018-08-17 (+10d) |  |  |  |  |
| 97 | develop training materials | 2018-08-08 → 2018-08-20 (+12d) | 2018-08-08 → 2018-08-20 (+12d) |  |  |  |  |
| 98 | conduct training | 2018-08-09 → 2018-08-21 (+12d) | 2018-08-09 → 2018-08-21 (+12d) |  |  |  |  |
| 99 | develop threshold performance index | 2018-07-16 → 2018-07-26 (+10d) | 2018-07-31 → 2018-08-10 (+10d) |  | 9400d → 9800d |  |  |
| 100 | **methods report (C&V)** | 2018-07-03 → 2018-02-09 (-144d) | 2018-09-05 → 2018-09-10 (+5d) | 39d → 125d |  |  |  |
| 101 | **method 1** | 2018-07-03 → 2018-02-09 (-144d) | 2018-09-05 → 2018-09-10 (+5d) | 39d → 125d |  |  |  |
| 102 | evaluate C&V frameworks (explore REDAS as one of the frameworks/models) | 2018-07-03 → 2018-07-13 (+10d) | 2018-07-20 → 2018-08-01 (+12d) |  | 8500d → 9200d |  |  |
| 103 | development of C&V assessment modules | 2018-07-23 → 2018-08-02 (+10d) | 2018-08-13 → 2018-08-20 (+7d) | 16d → 13d |  |  |  |
| 104 | recommend C&V info system | 2018-08-30 → 2018-09-04 (+5d) | 2018-09-05 → 2018-09-10 (+5d) |  | 900d → 700d |  |  |
| 105 | design database (linking to EWSL data storage and management)) | 2018-08-28 → 2018-08-31 (+3d) | 2018-09-03 → 2018-09-06 (+3d) |  | 2100d → 1600d |  |  |
| 106 | write report | 2018-09-04 → 2018-09-07 (+3d) | 2018-09-05 → 2018-09-10 (+5d) |  |  |  |  |
| 107 | develop training materials | 2018-08-14 → 2018-08-21 (+7d) | 2018-08-29 → 2018-09-03 (+5d) | 12d → 10d |  |  |  |
| 108 | conduct training | 2018-08-30 → 2018-09-04 (+5d) | 2018-09-05 → 2018-09-10 (+5d) |  |  |  |  |
| 109 | **method 2** | 2018-07-03 → 2018-07-13 (+10d) | 2018-09-05 → 2018-09-10 (+5d) | 39d → 34d |  |  |  |
| 110 | evaluate C&V frameworks (explore REDAS as one of the frameworks/models) | 2018-07-03 → 2018-07-13 (+10d) | 2018-07-20 → 2018-08-01 (+12d) |  | 100d → none |  |  |
| 111 | development of C&V assessment modules | 2018-07-23 → 2018-08-02 (+10d) | 2018-08-13 → 2018-08-20 (+7d) | 16d → 13d |  |  |  |
| 112 | recommend C&V info system | 2018-08-30 → 2018-09-04 (+5d) | 2018-09-05 → 2018-09-10 (+5d) |  | 900d → 700d |  |  |
| 113 | design database (linking to EWSL data storage and management)) | 2018-08-28 → 2018-08-31 (+3d) | 2018-09-03 → 2018-09-06 (+3d) |  | 2100d → 1600d |  |  |
| 114 | write report | 2018-09-04 → 2018-09-07 (+3d) | 2018-09-05 → 2018-09-10 (+5d) |  |  |  |  |
| 115 | develop training materials | 2018-08-14 → 2018-08-21 (+7d) | 2018-08-29 → 2018-09-03 (+5d) | 12d → 10d |  |  |  |
| 116 | conduct training | 2018-08-30 → 2018-09-04 (+5d) | 2018-09-05 → 2018-09-10 (+5d) |  |  |  |  |
| 117 | **methods report (Risk)** | 2018-05-18 → 2018-02-09 (-98d) | 2018-09-05 → 2018-09-10 (+5d) | 69d → 125d |  |  |  |
| 118 | evaluate frameworks for risk | 2018-05-18 → 2018-06-05 (+18d) | 2018-06-11 → 2018-06-22 (+11d) | 17d → 14d | 5700d → 6700d |  |  |
| 119 | develop methods | 2018-06-12 → 2018-06-25 (+13d) | 2018-06-27 → 2018-07-10 (+13d) |  |  |  |  |
| 120 | write report | 2018-06-28 → 2018-07-11 (+13d) | 2018-06-29 → 2018-07-12 (+13d) |  |  |  |  |
| 121 | develop training materials | 2018-07-02 → 2018-07-17 (+15d) | 2018-07-13 → 2018-07-30 (+17d) |  | none → 200d |  |  |
| 122 | conduct training (NC 3) | 2018-07-16 → 2018-07-31 (+15d) | 2018-09-05 → 2018-09-10 (+5d) | 38d → 30d |  |  |  |
| 123 | **per site landslide risk reports (focus sites)** | 2018-07-02 → 2018-02-09 (-143d) | 2018-09-05 → 2018-09-10 (+5d) | 40d? → 125d |  |  |  |
| 124 | integration of hazard, capacity, and vulnerability information | 2018-08-22 → 2018-08-31 (+9d) | 2018-09-05 → 2018-09-10 (+5d) | 11d → 7d |  | 119, 131, 158 → 119, 158, 163 |  |
| 125 | **per site hazard reports (rts/rtk) total=11sites** | 2018-07-09 → 2018-02-09 (-150d) | 2018-08-21 → 2018-03-19 (-155d) | 29d? → 23d | none → 10200d |  | was named per site hazard reports (all sites) |
| 126 | consolidate field notes | 2018-08-16 → 2018-02-09 (-188d) | 2018-08-16 → 2018-02-14 (-183d) | 1d? → 4d | none → 10500d | 133 → none | constraint as late as possible → none |
| 127 | conduct quarterly survey (RTS/RTK/remap) | 2018-08-16 → 2018-02-15 (-182d) | 2018-08-16 → 2018-03-05 (-164d) | 1d? → 12d | none → 10400d | 135 → 126 | constraint as late as possible → none |
| 128 | analyze monitoring data (requires access to database) | 2018-08-17 → 2018-03-06 (-164d) | 2018-08-17 → 2018-03-07 (-163d) | 1d? → 2d | none → 10500d | 126, 127 → 127 | constraint as late as possible → none |
| 129 | update volume, depth, extent (using current models) | 2018-08-20 → 2018-03-08 (-165d) | 2018-08-20 → 2018-03-09 (-164d) | 1d? → 2d | none → 10800d |  | constraint as late as possible → none |
| 130 | update thresholds with monitoring data and performance index | 2018-08-20 → 2018-03-08 (-165d) | 2018-08-20 → 2018-03-09 (-164d) | 1d? → 2d | 11500d → 10400d | none → 128 | constraint as late as possible → none |
| 131 | update per site hazard reports (updated maps as PI) | 2018-08-21 → 2018-03-12 (-162d) | 2018-08-21 → 2018-03-19 (-155d) | 1d? → 6d | none → 10200d | 130, 129 → 130 | constraint as late as possible → none |
| 133 | conduct fieldwork (resurvey) | 2018-07-09 → 2018-02-09 (-150d) | 2018-08-15 → 2018-02-14 (-182d) | 25d → 4d | 8800d → 12200d |  | constraint as late as possible → none |
| 134 | consolidate field notes | 2018-07-02 → 2018-02-09 (-143d) | 2018-08-21 → 2018-02-09 (-193d) | 32d → 1d | none → 12400d |  | was named per site capacity and vulnerability reports (2 focus sites, Mindanao) |
| 135 | review and identify active sites | 2018-08-15 → 2018-02-09 (-187d) | 2018-08-15 → 2018-02-09 (-187d) | 1d? → 0.5d | 11200d → 12450d |  | constraint as late as possible → none |
| 155 | conduct data gathering | 2018-07-02 → 2018-07-17 (+15d) | 2018-07-17 → 2018-07-31 (+14d) | 12d → 11d | 8400d → 9400d |  |  |
| 157 | analyze data | 2018-07-18 → 2018-08-01 (+14d) | 2018-08-14 → 2018-08-23 (+9d) | 20d → 17d |  | 155 → 155, 156 |  |
| 158 | update per site capacity and vulnerability reports | 2018-08-15 → 2018-08-24 (+9d) | 2018-08-21 → 2018-08-30 (+9d) |  |  |  |  |
| 164 | **"Alert protocol" -- essentually how risk knowledge informs early warning practice** | 2018-07-17 → 2018-02-09 (-158d) | 2018-08-21 → 2018-08-24 (+3d) | 23d → 118d |  |  |  |
| 165 | review of related literature | 2018-07-17 → 2018-07-20 (+3d) | 2018-08-03 → 2018-08-08 (+5d) |  | 9500d → 9700d |  |  |
| 166 | review and evaluate current alert protocol | 2018-08-06 → 2018-08-09 (+3d) | 2018-08-17 → 2018-08-22 (+5d) |  |  |  |  |

| ID | Task | Start | Finish | Duration | Total float | Predecessors | Other |
| --- | --- | --- | --- | --- | --- | --- | --- |
| 167 | recomend alert protocol | 2018-08-20 → 2018-08-23 (+3d) | 2018-08-21 → 2018-08-24 (+3d) |  |  |  |  |
| 168 | **Early warning system for landslides** |  | 2018-09-05 → 2018-09-11 (+6d) |  | none → -100d |  |  |
| 169 | **Data gathering system** |  | 2018-09-05 → 2018-09-10 (+5d) | 126d → 125d |  |  |  |
| 170 | **community reported data** |  | 2018-09-05 → 2018-08-14 (-22d) | 126d → 111d | none → 1400d |  |  |
| 172 | improve means of gathering surficial data (including transmission) | 2018-07-06 → 2018-07-10 (+4d) | 2018-09-05 → 2018-09-10 (+5d) |  | 3000d → 1400d |  |  |
| 173 | develop on the ground validation of rainfall via sensors | 2018-07-06 → 2018-07-10 (+4d) | 2018-09-05 → 2018-09-10 (+5d) |  |  |  |  |
| 174 | **tilt** |  | 2018-09-05 → 2018-09-10 (+5d) | 126d → 125d |  |  |  |
| 176 | characterize tilt sensor(angle range and accuracy of v3 tilt sensor) |  | 2018-02-20 → 2018-02-19 (-1d) | 8d → 7d | 11700d → 11900d |  |  |
| 180 | **manufacturing monitoring** |  | 2018-09-05 → 2018-09-10 (+5d) | 126d → 125d |  |  |  |
| 182 | manufacture |  | 2018-08-17 → 2018-08-21 (+4d) |  | -100d → 100d |  |  |
| 183 | troubleshoot manufacturing issues |  | 2018-08-17 → 2018-08-21 (+4d) |  | 1100d → 1000d |  |  |
| 184 | evaluate sample boards | 2018-08-20 → 2018-08-22 (+2d) | 2018-09-05 → 2018-09-10 (+5d) |  |  |  |  |
| 187 | **soms** |  | 2018-05-17 → 2018-05-14 (-3d) | 57d → 54d | 7000d → 7100d |  |  |
| 193 | develop new soil moisture sensor (improve accuracy, packaging, coms) prototype |  | 2018-04-19 → 2018-04-18 (-1d) |  | 7100d → 7200d |  |  |
| 194 | deploy new soms | 2018-04-20 → 2018-04-19 (-1d) | 2018-04-26 → 2018-04-25 (-1d) |  | 6800d → 7200d |  |  |
| 195 | develop filter | 2018-04-27 → 2018-04-26 (-1d) | 2018-05-10 → 2018-05-07 (-3d) | 9d → 6d | 7100d → 7300d |  |  |
| 196 | implement filter | 2018-05-11 → 2018-05-08 (-3d) | 2018-05-17 → 2018-05-14 (-3d) |  | 7000d → 7100d |  |  |
| 197 | **uts-ext** |  | 2018-09-05 → 2018-09-10 (+5d) | 126d → 125d |  |  |  |
| 199 | char-dev-dep | 2018-05-08 → 2018-05-30 (+22d) | 2018-07-26 → 2018-08-09 (+14d) | 58d → 52d | 5400d → 6500d |  |  |
| 200 | develop filter | 2018-07-27 → 2018-08-10 (+14d) | 2018-08-28 → 2018-09-05 (+8d) | 23d → 19d |  |  |  |
| 201 | implement filter | 2018-08-29 → 2018-09-06 (+8d) | 2018-09-05 → 2018-09-10 (+5d) | 6d → 3d |  |  |  |
| 202 | **lidar-ext** |  | 2018-09-05 → 2018-09-10 (+5d) | 126d → 125d |  |  |  |
| 204 | char-dev-dep | 2018-05-08 → 2018-05-30 (+22d) | 2018-07-26 → 2018-08-09 (+14d) | 58d → 52d | 5400d → 6500d |  |  |
| 205 | develop filter | 2018-07-27 → 2018-08-10 (+14d) | 2018-08-28 → 2018-09-05 (+8d) | 23d → 19d |  |  |  |
| 206 | implement filter | 2018-08-29 → 2018-09-06 (+8d) | 2018-09-05 → 2018-09-10 (+5d) | 6d → 3d |  |  |  |
| 207 | **rain gauge** |  | 2018-09-05 → 2018-09-10 (+5d) | 126d → 125d |  |  |  |
| 209 | char-dev-dep |  | 2018-08-09 → 2018-08-17 (+8d) | 20d → 26d | 9600d → 9200d |  | resources emb engr 7 → emb engr 5 |
| 210 | develop filter | 2018-08-13 → 2018-08-20 (+7d) | 2018-08-29 → 2018-09-03 (+5d) | 13d → 11d |  | 214 → 209 |  |
| 211 | implement filter | 2018-08-30 → 2018-09-04 (+5d) | 2018-09-05 → 2018-09-10 (+5d) |  |  |  |  |
| 212 | **piezometer** |  | 2018-09-05 → 2018-09-10 (+5d) | 126d → 125d |  |  |  |
| 214 | char-dev-dep | 2018-07-06 → 2018-08-08 (+33d) | 2018-08-10 → 2018-08-29 (+19d) | 26d → 16d | 9000d → 10600d |  | resources emb engr 5 → emb engr 6 |
| 215 | develop filter | 2018-08-21 → 2018-08-30 (+9d) | 2018-08-28 → 2018-09-05 (+8d) | 6d → 5d |  | 219 → 214 |  |
| 216 | implement filter | 2018-08-29 → 2018-09-06 (+8d) | 2018-09-05 → 2018-09-10 (+5d) | 6d → 3d |  |  |  |
| 217 | **gateway datalogger** |  | 2018-08-09 → 2018-03-26 (-136d) | 111d → 28d | 100d → 8600d |  |  |
| 219 | char-dev-dep | 2018-07-24 → 2018-07-02 (-22d) | 2018-08-20 → 2018-08-14 (-6d) | 20d → 32d | 10000d → 8300d |  | resources emb engr 6 → emb engr 7 |
| 220 | **router datalogger** |  | 2018-09-05 → 2018-02-27 (-190d) | 126d → 12d | none → 11300d |  |  |
| 222 | char-dev-dep | 2018-06-19 → 2018-08-23 (+65d) | 2018-08-09 → 2018-09-10 (+32d) | 38d → 13d | 7900d → 11300d |  |  |
| 223 | **sensor datalogger** |  | 2018-04-30 → 2018-04-27 (-3d) |  |  |  |  |
| 228 | **manufacturing monitoring** |  | 2018-04-30 → 2018-04-27 (-3d) |  |  |  |  |
| 230 | manufacture |  | 2018-04-23 → 2018-04-20 (-3d) |  | 8000d → 7900d |  |  |
| 231 | troubleshoot manufacturing issues |  | 2018-04-23 → 2018-04-20 (-3d) |  |  |  |  |
| 232 | evaluate sample boards | 2018-04-24 → 2018-04-23 (-1d) | 2018-04-30 → 2018-04-27 (-3d) |  |  |  |  |
| 233 | **stand alone datalogger** |  | 2018-08-09 → 2018-03-05 (-157d) | 111d → 14d | 100d → 10000d |  |  |
| 235 | char-dev-dep | 2018-08-13 → 2018-07-23 (-21d) | 2018-09-05 → 2018-08-14 (-22d) | 18d → 17d | 10900d → 9700d |  |  |
| 236 | **SMS parsing system for new data structures** | 2018-08-10 → 2018-08-15 (+5d) | 2018-09-05 → 2018-09-11 (+6d) | 17d → 15d | none → -100d |  |  |
| 237 | develop sms parsing system | 2018-08-10 → 2018-08-15 (+5d) | 2018-09-05 → 2018-09-10 (+5d) |  | 200d → -100d | 222, 209 → 219, 235 |  |
| 238 | **Data storage and management system** | 2018-06-19 → 2018-02-09 (-130d) | 2018-08-10 → 2018-08-17 (+7d) | 33d → 114d |  |  |  |
| 239 | develop new structure for storage and management | 2018-06-19 → 2018-06-28 (+9d) | 2018-07-12 → 2018-07-18 (+6d) | 18d → 15d | 7700d → 8100d |  |  |
| 240 | develop automated backup | 2018-07-24 → 2018-07-31 (+7d) | 2018-08-03 → 2018-08-10 (+7d) |  | 700d → 500d |  |  |
| 241 | recommend performance metrics | 2018-08-06 → 2018-08-13 (+7d) | 2018-08-10 → 2018-08-17 (+7d) |  |  |  |  |
| 242 | develop data access for risk assessment | 2018-07-13 → 2018-07-19 (+6d) | 2018-07-23 → 2018-07-27 (+4d) |  |  |  |  |
| 243 | **Data analysis system** |  | 2018-09-05 → 2018-09-10 (+5d) | 126d? → 125d? |  |  |  |
| 244 | **threshold scripts** | 2018-08-10 → 2018-08-22 (+12d) | 2018-08-10 → 2018-08-22 (+12d) |  |  |  |  |
| 245 | implement thresholds | 2018-08-10 → 2018-08-22 (+12d) | 2018-08-10 → 2018-08-22 (+12d) |  |  |  |  |
| 246 | **visualization scripts** |  | 2018-09-05 → 2018-09-10 (+5d) | 126d? → 125d? |  |  |  |
| 247 | research data visualization concepts (inc. hazard concepts) | 2018-07-25 → 2018-08-08 (+14d) | 2018-08-10 → 2018-08-22 (+12d) |  | 10200d → 10600d |  |  |
| 248 | develop new web charts | 2018-08-13 → 2018-08-23 (+10d) | 2018-09-05 → 2018-09-10 (+5d) | 18d → 13d |  |  |  |
| 249 | improvement of existing web charts | 2018-09-05 → 2018-09-10 (+5d) | 2018-09-05 → 2018-09-10 (+5d) |  | 12500d → 12400d |  |  |
| 250 | improvement of webchart generation | 2018-09-05 → 2018-09-10 (+5d) | 2018-09-05 → 2018-09-10 (+5d) |  | 12500d → 12400d |  |  |
| 252 | recommend performance metrics | 2018-08-10 → 2018-08-17 (+7d) | 2018-08-10 → 2018-08-17 (+7d) |  | 11100d → 11300d |  |  |
| 253 | draft process profile (recomm to automation integration) | 2018-08-14 → 2018-08-24 (+10d) | 2018-08-15 → 2018-08-27 (+12d) |  | 11100d → 11700d |  |  |
| 254 | **Dissemination system** |  | 2018-09-05 → 2018-09-10 (+5d) | 126d? → 125d? |  |  |  |
| 255 | **alert generation module** | 2018-08-10 → 2018-02-09 (-182d) | 2018-09-05 → 2018-09-10 (+5d) | 17d → 125d |  |  |  |
| 256 | create modularized infrastructure for different operational triggers | 2018-08-30 → 2018-09-04 (+5d) | 2018-09-05 → 2018-09-10 (+5d) |  | 12300d → 12100d |  |  |
| 257 | create "special cases" tables (e.g., Puguis) | 2018-08-28 → 2018-08-31 (+3d) | 2018-09-03 → 2018-09-06 (+3d) |  |  |  |  |
| 258 | implement alert protocol (trigger to alert) revisions | 2018-09-04 → 2018-09-07 (+3d) | 2018-09-05 → 2018-09-10 (+5d) |  |  |  |  |
| 259 | recommend performance metrics (in relation to automation) | 2018-08-10 → 2018-08-17 (+7d) | 2018-08-10 → 2018-08-17 (+7d) |  | 11100d → 11300d |  |  |
| 260 | draft process profile (recomm to automation integration) | 2018-08-14 → 2018-08-24 (+10d) | 2018-08-15 → 2018-08-27 (+12d) |  | 11100d → 11700d |  |  |
| 261 | **GSM module server** |  | 2018-08-15 → 2018-02-26 (-170d) | 113d? → 11d? | 1400d → 11400d |  |  |
| 262 | **develop new GSM module server features** |  | 2018-02-27 → 2018-02-26 (-1d) | 12d → 11d | 11200d → 11400d |  |  |

| ID | Task | Start | Finish | Duration | Total float |
| --- | --- | --- | --- | --- | --- |
| 263 | develop power autonomy |  | 2018-02-27 → 2018-02-26 (-1d) | 13d → 12d | 9800d → 10300d |
| 264 | develop multiple gsm module hardware |  | 2018-02-27 → 2018-02-26 (-1d) | 13d → 12d | 11200d → 11400d |
| 266 | recommend performance metrics (in relation to automation) | 2018-08-10 → 2018-08-17 (+7d) | 2018-08-10 → 2018-08-17 (+7d) |  | 11100d → 11300d |
| 267 | draft process profile (recomm to automation integration) | 2018-08-14 → 2018-08-24 (+10d) | 2018-08-15 → 2018-08-27 (+12d) |  | 11100d → 11700d |
| 268 | **chatterbox** | 2018-08-10 → 2018-02-09 (-182d) | 2018-09-05 → 2018-02-13 (-204d) | 17d? → 3d? | none → 12300d |
| 269 | revise scripts for SMS generation and sending (automation?) | 2018-08-29 → 2018-09-06 (+8d) | 2018-09-05 → 2018-09-10 (+5d) | 6d → 3d | 12100d → 12300d |
| 270 | implement feature requests | 2018-09-05 → 2018-09-10 (+5d) | 2018-09-05 → 2018-09-10 (+5d) |  | 12500d → 12400d |
| 271 | improve performance | 2018-09-05 → 2018-09-10 (+5d) | 2018-09-05 → 2018-09-10 (+5d) |  | 12500d → 12400d |
| 272 | recommend performance metrics (in relation to automation) | 2018-08-10 → 2018-08-17 (+7d) | 2018-08-10 → 2018-08-17 (+7d) |  | 11100d → 11300d |
| 273 | draft process profile (recomm to automation integration) | 2018-08-14 → 2018-08-24 (+10d) | 2018-08-15 → 2018-08-27 (+12d) |  | 11100d → 11700d |
| 274 | **webcall** | 2018-05-29 → 2018-02-09 (-109d) | 2018-08-15 → 2018-08-21 (+6d) | 49d → 115d | none → 400d |
| 275 | acquire, implement hardware | 2018-05-29 → 2018-06-18 (+20d) | 2018-07-18 → 2018-07-30 (+12d) | 37d → 31d | 6600d → 7600d |
| 276 | develop/integrate software | 2018-07-19 → 2018-07-31 (+12d) | 2018-08-09 → 2018-08-16 (+7d) | 16d → 13d |  |
| 277 | recommend performance metrics (in relation to automation) | 2018-08-10 → 2018-08-17 (+7d) | 2018-08-10 → 2018-08-17 (+7d) |  |  |
| 278 | draft process profile (recomm to automation integration) | 2018-08-14 → 2018-08-24 (+10d) | 2018-08-15 → 2018-08-27 (+12d) |  | 100d → 400d |
| 279 | **bulletin generator** |  | 2018-09-05 → 2018-02-15 (-202d) | 126d? → 5d? | none → 12100d |
| 280 | revise scripts for bulletin generation and sending (automation?) | 2018-08-30 → 2018-09-04 (+5d) | 2018-09-05 → 2018-09-10 (+5d) |  | 12300d → 12100d |
| 282 | improve performance | 2018-09-05 → 2018-09-10 (+5d) | 2018-09-05 → 2018-09-10 (+5d) |  | 12500d → 12400d |
| 283 | recommend performance metrics (in relation to automation) | 2018-08-10 → 2018-08-17 (+7d) | 2018-08-10 → 2018-08-17 (+7d) |  | 11100d → 11300d |
| 284 | draft process profile (recomm to automation integration) | 2018-08-14 → 2018-08-24 (+10d) | 2018-08-15 → 2018-08-27 (+12d) |  | 11100d → 11700d |
| 285 | **Local Info system (ISD)** | 2018-05-14 → 2018-02-09 (-94d) | 2018-09-05 → 2018-09-10 (+5d) | 72d → 125d |  |
| 286 | consolidate recommendations into ict specifications | 2018-05-14 → 2018-06-06 (+23d) | 2018-05-22 → 2018-06-14 (+23d) |  | 5400d → 6800d |
| 287 | use case testing | 2018-07-16 → 2018-07-31 (+15d) | 2018-09-05 → 2018-09-10 (+5d) | 38d → 30d | 3300d → 2400d |
| 288 | develop local codes updating system | 2018-08-16 → 2018-08-28 (+12d) | 2018-09-05 → 2018-09-10 (+5d) | 15d → 10d | 5100d → 4100d |
| 289 | port ews-l modules | 2018-05-23 → 2018-06-15 (+23d) | 2018-09-05 → 2018-09-10 (+5d) | 76d → 62d |  |
| 290 | **Automation integration system** |  | 2018-09-05 → 2018-09-10 (+5d) | 126d → 125d |  |
| 291 | automate recommended processes | 2018-08-16 → 2018-08-28 (+12d) | 2018-09-05 → 2018-09-10 (+5d) | 15d → 10d |  |
| 293 | **Performance monitoring system of central system** |  | 2018-09-05 → 2018-09-10 (+5d) | 126d? → 125d? |  |
| 294 | consolidate recommendations for performance metrics | 2018-08-13 → 2018-08-20 (+7d) | 2018-08-13 → 2018-08-20 (+7d) |  |  |
| 296 | **Performance monitoring system** | 2018-08-14 → 2018-08-21 (+7d) | 2018-09-05 → 2018-09-10 (+5d) | 13d? → 11d? |  |
| 297 | develop PMS backbone stable version | 2018-08-14 → 2018-08-21 (+7d) | 2018-08-29 → 2018-09-03 (+5d) | 12d → 10d |  |
| 298 | maintain PMS | 2018-08-30 → 2018-09-04 (+5d) | 2018-08-30 → 2018-09-04 (+5d) |  |  |
| 299 | develop agile PMS components | 2018-08-30 → 2018-09-04 (+5d) | 2018-08-30 → 2018-09-04 (+5d) |  |  |
| 300 | develop generic visualization charts | 2018-08-30 → 2018-09-04 (+5d) | 2018-09-05 → 2018-09-10 (+5d) |  |  |
| 302 | **Organized Local Early Warning Committee (LEWC)** | 2018-06-25 → 2018-02-09 (-136d) | 2018-09-05 → 2018-09-10 (+5d) | 44d → 125d |  |
| 303 | **LEWC org structure and mission/vision (47 sites)** | 2018-06-26 → 2018-02-09 (-137d) | 2018-09-05 → 2018-09-10 (+5d) | 42d → 125d |  |
| 304 | prepare modules | 2018-06-26 → 2018-07-11 (+15d) | 2018-07-13 → 2018-07-30 (+17d) |  | 8000d → 9000d |
| 305 | conduct training/ gather data | 2018-07-16 → 2018-07-31 (+15d) | 2018-09-05 → 2018-09-10 (+5d) | 38d → 30d |  |
| 306 | **Guidelines for community organizing (2 sites)** | 2018-06-25 → 2018-02-09 (-136d) | 2018-09-05 → 2018-09-10 (+5d) | 44d → 125d |  |
| 307 | develop methods for community organizing | 2018-06-25 → 2018-07-06 (+11d) | 2018-08-03 → 2018-08-16 (+13d) |  | 8200d → 8700d |
| 308 | gather data (fieldwork) | 2018-08-06 → 2018-08-17 (+11d) | 2018-08-21 → 2018-08-30 (+9d) | 12d → 10d |  |
| 309 | recommend activities for community organizing | 2018-08-22 → 2018-08-31 (+9d) | 2018-09-05 → 2018-09-10 (+5d) | 11d → 7d |  |
| 310 | **develop guidelines for institutionalization of LEWC (2 sites)** | 2018-06-25 → 2018-02-09 (-136d) | 2018-09-05 → 2018-09-10 (+5d) | 44d → 125d |  |
| 311 | develop methods for crafing guidelines | 2018-06-25 → 2018-07-06 (+11d) | 2018-08-03 → 2018-08-16 (+13d) |  | 8200d → 8700d |
| 312 | gather data (fieldwork) | 2018-08-06 → 2018-08-17 (+11d) | 2018-08-21 → 2018-08-30 (+9d) | 12d → 10d |  |
| 313 | develop guidelines for institutionalization of LEWC | 2018-08-22 → 2018-08-31 (+9d) | 2018-09-05 → 2018-09-10 (+5d) | 11d → 7d |  |
| 314 | **Guidelines for developing contingency plans for DSL (barangay level)** | 2018-07-18 → 2018-02-09 (-159d) | 2018-09-05 → 2018-09-10 (+5d) | 32d → 125d |  |
| 315 | review literature on contingency plans | 2018-07-18 → 2018-07-27 (+9d) | 2018-08-22 → 2018-08-27 (+5d) | 26d → 22d | 9600d → 10100d |
| 316 | draft guidelines for contingency plans | 2018-08-23 → 2018-08-28 (+5d) | 2018-08-29 → 2018-09-03 (+5d) |  |  |
| 317 | approve guidelines for contingency plans | 2018-08-30 → 2018-09-04 (+5d) | 2018-09-05 → 2018-09-10 (+5d) |  |  |
| 318 | **Operations manual** | 2018-08-22 → 2018-08-27 (+5d) | 2018-09-05 → 2018-09-10 (+5d) | 10d → 8d |  |
| 319 | update EWS operations manual (1) | 2018-08-22 → 2018-08-27 (+5d) | 2018-08-27 → 2018-08-30 (+3d) |  |  |
| 320 | update EWS operations manual (2) | 2018-08-28 → 2018-08-31 (+3d) | 2018-08-31 → 2018-09-05 (+5d) |  |  |
| 321 | update EWS operations manual (3) | 2018-09-03 → 2018-09-06 (+3d) | 2018-09-05 → 2018-09-10 (+5d) |  |  |
| 322 | **Early warning information** |  | 2018-09-05 → 2018-09-10 (+5d) | 126d? → 125d? |  |
| 323 | generate, review, and release EWI | 2018-09-05 → 2018-09-10 (+5d) | 2018-09-05 → 2018-09-10 (+5d) |  | 12500d → 12400d |
| 324 | **EWI support** |  | 2018-09-05 → 2018-09-10 (+5d) | 126d? → 125d? |  |
| 325 | **operational systems** | 2018-09-05 → 2018-02-09 (-208d) | 2018-09-05 → 2018-02-09 (-208d) |  | none → 12400d |
| 326 | **sensors and dataloggers** | 2018-09-05 → 2018-02-09 (-208d) | 2018-09-05 → 2018-02-09 (-208d) |  | none → 12400d |
| 327 | replace defective sensors and loggers | 2018-09-05 → 2018-09-10 (+5d) | 2018-09-05 → 2018-09-10 (+5d) |  | 12500d → 12400d |
| 328 | monitor sensor and datalogger health status | 2018-09-05 → 2018-09-10 (+5d) | 2018-09-05 → 2018-09-10 (+5d) |  | 12500d → 12400d |
| 329 | track maintenance activities | 2018-09-05 → 2018-09-10 (+5d) | 2018-09-05 → 2018-09-10 (+5d) |  | 12500d → 12400d |
| 330 | manage inventory | 2018-09-05 → 2018-09-10 (+5d) | 2018-09-05 → 2018-09-10 (+5d) |  | 12500d → 12400d |
| 331 | track PLAA events | 2018-09-05 → 2018-09-10 (+5d) | 2018-09-05 → 2018-09-10 (+5d) |  | 12500d → 12400d |
| 332 | track sensor events | 2018-09-05 → 2018-09-10 (+5d) | 2018-09-05 → 2018-09-10 (+5d) |  | 12500d → 12400d |
| 333 | field-based maintenance | 2018-09-05 → 2018-09-10 (+5d) | 2018-09-05 → 2018-09-10 (+5d) |  | 12500d → 12400d |
| 334 | **central server (software)** | 2018-09-05 → 2018-02-09 (-208d) | 2018-09-05 → 2018-02-09 (-208d) |  | none → 12400d |
| 335 | maintain data gathering system | 2018-09-05 → 2018-09-10 (+5d) | 2018-09-05 → 2018-09-10 (+5d) |  | 12500d → 12400d |
| 336 | maintain data storage and management system | 2018-09-05 → 2018-09-10 (+5d) | 2018-09-05 → 2018-09-10 (+5d) |  | 12500d → 12400d |
| 337 | maintain data analysis system | 2018-09-05 → 2018-09-10 (+5d) | 2018-09-05 → 2018-09-10 (+5d) |  | 12500d → 12400d |

| ID | Task | Start | Finish | Duration | Total float |
| --- | --- | --- | --- | --- | --- |
| 338 | maintain info dissemination system | 2018-09-05 → 2018-09-10 (+5d) | 2018-09-05 → 2018-09-10 (+5d) |  | 12500d → 12400d |
| 339 | train staff for debugging | 2018-09-05 → 2018-09-10 (+5d) | 2018-09-05 → 2018-09-10 (+5d) |  | 12550d → 12450d |
| 340 | produce code and documentation standards | 2018-09-05 → 2018-09-10 (+5d) | 2018-09-05 → 2018-09-10 (+5d) |  | 12500d → 12400d |
| 341 | **updated database** | 2018-09-05 → 2018-02-09 (-208d) | 2018-09-05 → 2018-02-09 (-208d) |  | none → 12400d |
| 342 | maintain tables | 2018-09-05 → 2018-09-10 (+5d) | 2018-09-05 → 2018-09-10 (+5d) |  | 12500d → 12400d |
| 343 | **parsed SMS** | 2018-09-05 → 2018-02-09 (-208d) | 2018-09-05 → 2018-02-09 (-208d) |  | none → 12400d |
| 344 | maintain SMS parsing | 2018-09-05 → 2018-09-10 (+5d) | 2018-09-05 → 2018-09-10 (+5d) |  | 12500d → 12400d |
| 345 | **capable personnel for monitoring and early warning** |  | 2018-09-05 → 2018-09-10 (+5d) | 126d? → 125d? |  |
| 346 | **develop training materials** | 2018-08-08 → 2018-02-09 (-180d) | 2018-09-04 → 2018-03-01 (-187d) | 19d? → 14d? | none → 11000d |
| 347 | hazard monitoring | 2018-08-08 → 2018-08-20 (+12d) | 2018-09-04 → 2018-09-07 (+3d) | 20d → 15d |  |
| 348 | analysis and validation | 2018-08-08 → 2018-08-20 (+12d) | 2018-09-04 → 2018-09-07 (+3d) | 20d → 15d |  |
| 349 | sensor maintenance | 2018-09-04 → 2018-09-07 (+3d) | 2018-09-04 → 2018-09-07 (+3d) |  |  |
| 350 | communications protocol | 2018-08-08 → 2018-08-20 (+12d) | 2018-09-04 → 2018-09-07 (+3d) | 20d → 15d |  |
| 351 | **conduct EWS protocol trainings (internal)** | 2018-09-05 → 2018-09-10 (+5d) | 2018-09-05 → 2018-09-10 (+5d) |  |  |
| 352 | hazard monitoring | 2018-09-05 → 2018-09-10 (+5d) | 2018-09-05 → 2018-09-10 (+5d) |  |  |
| 353 | analysis and validation | 2018-09-05 → 2018-09-10 (+5d) | 2018-09-05 → 2018-09-10 (+5d) |  |  |
| 354 | sensor maintenance | 2018-09-05 → 2018-09-10 (+5d) | 2018-09-05 → 2018-09-10 (+5d) |  |  |
| 355 | communications protocol | 2018-09-05 → 2018-09-10 (+5d) | 2018-09-05 → 2018-09-10 (+5d) |  |  |
| 356 | **conduct EWS protocol trainings (external)** |  | 2018-09-05 → 2018-02-20 (-197d) | 126d? → 7d? | none → 11800d |
| 357 | combo training 1 (hazard monitoring, analysis, comm protocol) |  | 2018-02-21 → 2018-02-20 (-1d) | 8d → 7d | 11900d → 11800d |
| 358 | combo training 2 (hazard monitoring, analysis, comm protocol) |  | 2018-02-21 → 2018-02-20 (-1d) | 8d → 7d | 11900d → 11800d |
| 359 | combo training 3 (hazard monitoring, analysis, comm protocol) |  | 2018-02-21 → 2018-02-20 (-1d) | 8d → 7d | 11900d → 11800d |
| 360 | combo training n (hazard monitoring, analysis, comm protocol) |  | 2018-02-21 → 2018-02-20 (-1d) | 8d → 7d | 11900d → 11800d |
| 361 | sensor maintenance | 2018-09-05 → 2018-09-10 (+5d) | 2018-09-05 → 2018-09-10 (+5d) |  | 12500d → 12400d |
| 362 | **Strategic communications** | 2018-08-14 → 2018-02-09 (-186d) | 2018-09-05 → 2018-09-10 (+5d) | 13d? → 125d? |  |
| 363 | research stakeholder info needs | 2018-08-14 → 2018-08-23 (+9d) | 2018-08-14 → 2018-08-23 (+9d) |  | 11100d → 11600d |
| 364 | research policy process | 2018-09-05 → 2018-09-10 (+5d) | 2018-09-05 → 2018-09-10 (+5d) |  | 12500d → 12400d |
| 365 | develop strategic comm plan | 2018-08-15 → 2018-08-24 (+9d) | 2018-08-15 → 2018-08-24 (+9d) |  |  |
| 366 | **develop communication materials** | 2018-08-16 → 2018-08-27 (+11d) | 2018-09-05 → 2018-09-10 (+5d) | 14d? → 8d? |  |
| 367 | **website** | 2018-08-16 → 2018-08-27 (+11d) | 2018-09-05 → 2018-09-10 (+5d) | 14d? → 8d? |  |
| 368 | develop website content | 2018-08-16 → 2018-08-27 (+11d) | 2018-08-16 → 2018-08-27 (+11d) |  |  |
| 369 | design website | 2018-08-17 → 2018-08-28 (+11d) | 2018-08-17 → 2018-08-28 (+11d) |  |  |
| 370 | develop content management system (core) | 2018-08-20 → 2018-08-29 (+9d) | 2018-09-05 → 2018-09-10 (+5d) | 13d → 9d |  |
| 371 | develop non-website communications | 2018-09-05 → 2018-09-10 (+5d) | 2018-09-05 → 2018-09-10 (+5d) |  | 12500d → 12400d |
| 372 | **MEAL system** |  | 2018-09-05 → 2018-09-10 (+5d) | 126d? → 125d? |  |
| 373 | sourcing of MEAL expert |  | 2018-02-20 → 2018-02-19 (-1d) | 8d → 7d | 2700d → 4100d |
| 374 | develop MEAL framework | 2018-04-12 → 2018-04-30 (+18d) | 2018-04-13 → 2018-05-01 (+18d) |  | 2700d → 4100d |
| 375 | develop MEAL plan | 2018-04-16 → 2018-05-02 (+16d) | 2018-04-19 → 2018-05-07 (+18d) |  |  |
| 376 | conduct training needs analysis | 2018-04-20 → 2018-05-08 (+18d) | 2018-04-20 → 2018-05-08 (+18d) |  | 8300d → 7300d |
| 377 | develop training plan | 2018-04-23 → 2018-05-09 (+16d) | 2018-04-24 → 2018-05-10 (+16d) |  | 8100d → 7300d |
| 378 | **monitoring mechanisms** |  | 2018-09-05 → 2018-09-10 (+5d) | 126d → 125d |  |
| 379 | **standard documentation and storage** | 2018-08-28 → 2018-05-08 (-112d) | 2018-09-05 → 2018-09-10 (+5d) | 4d → 76d |  |
| 380 | design documentation templates and organization/structure | 2018-08-28 → 2018-08-31 (+3d) | 2018-09-03 → 2018-09-06 (+3d) |  | 8000d → 6900d |
| 381 | design repository system | 2018-09-04 → 2018-09-07 (+3d) | 2018-09-05 → 2018-09-10 (+5d) |  |  |
| 382 | **PLAA** | 2018-09-03 → 2018-05-08 (-118d) | 2018-09-05 → 2018-09-10 (+5d) | 3d → 76d |  |
| 383 | review current PLAA vis-a-vis MEAL plan | 2018-09-03 → 2018-09-06 (+3d) | 2018-09-04 → 2018-09-07 (+3d) |  | 8200d → 7300d |
| 384 | revise PLAA guidelines | 2018-09-05 → 2018-09-10 (+5d) | 2018-09-05 → 2018-09-10 (+5d) |  |  |
| 385 | **EWS-QA** |  | 2018-09-05 → 2018-09-10 (+5d) | 126d → 125d |  |
| 386 | review current EWS-QA vis-a-vis MEAL plan | 2018-09-03 → 2018-09-06 (+3d) | 2018-09-04 → 2018-09-07 (+3d) |  | 8200d → 7300d |
| 387 | revise EWS-QA guidelines | 2018-09-05 → 2018-09-10 (+5d) | 2018-09-05 → 2018-09-10 (+5d) |  |  |
| 389 | **outcome-impact** | 2018-09-03 → 2018-05-08 (-118d) | 2018-09-05 → 2018-09-10 (+5d) | 3d → 76d |  |
| 390 | review outcome-impact vis-a-vis MEAL plan | 2018-09-03 → 2018-09-06 (+3d) | 2018-09-04 → 2018-09-07 (+3d) |  | 8200d → 7300d |
| 391 | revise outcome-impact | 2018-09-05 → 2018-09-10 (+5d) | 2018-09-05 → 2018-09-10 (+5d) |  |  |
| 392 | **administrative process** | 2018-09-03 → 2018-05-08 (-118d) | 2018-09-05 → 2018-09-10 (+5d) | 3d → 76d |  |
| 393 | review admin process trackers vis-a-vis MEAL plan | 2018-09-03 → 2018-09-06 (+3d) | 2018-09-04 → 2018-09-07 (+3d) |  | 8200d → 7300d |
| 394 | revise admin process trackers | 2018-09-05 → 2018-09-10 (+5d) | 2018-09-05 → 2018-09-10 (+5d) |  |  |
| 395 | **project output** | 2018-09-03 → 2018-05-08 (-118d) | 2018-09-05 → 2018-09-10 (+5d) | 3d → 76d |  |
| 396 | develop team output tracker | 2018-09-03 → 2018-09-06 (+3d) | 2018-09-03 → 2018-09-06 (+3d) |  | 8300d → 7300d |
| 397 | develop individual output tracker | 2018-09-04 → 2018-09-07 (+3d) | 2018-09-04 → 2018-09-07 (+3d) |  |  |
| 398 | develop individual capacity tracker | 2018-09-05 → 2018-09-10 (+5d) | 2018-09-05 → 2018-09-10 (+5d) |  |  |
| 399 | **stakeholder concerns** | 2018-09-05 → 2018-05-08 (-120d) | 2018-09-05 → 2018-05-08 (-120d) |  | none → 7550d |
| 400 | develop stakeholder concerns tracker | 2018-09-05 → 2018-09-10 (+5d) | 2018-09-05 → 2018-09-10 (+5d) |  | 8550d → 7550d |
| 401 | **MEAL implem** | 2018-04-20 → 2018-05-08 (+18d) | 2018-09-05 → 2018-09-10 (+5d) | 86d? → 76d? |  |
| 402 | **EWS-QA** | 2018-04-20 → 2018-05-08 (+18d) | 2018-04-20 → 2018-05-08 (+18d) |  | 8500d → 7500d |
| 403 | **bimonthly** | 2018-04-20 → 2018-05-08 (+18d) | 2018-04-20 → 2018-05-08 (+18d) |  | 8500d → 7500d |
| 404 | gather, analyze, evaluate data | 2018-04-20 → 2018-05-08 (+18d) | 2018-04-20 → 2018-05-08 (+18d) |  | 8500d → 7500d |
| 405 | prepare for presentation (feedback sessions) | 2018-04-20 → 2018-05-08 (+18d) | 2018-04-20 → 2018-05-08 (+18d) |  | 8500d → 7500d |
| 406 | **quarterly** | 2018-04-20 → 2018-05-08 (+18d) | 2018-04-20 → 2018-05-08 (+18d) |  | 8500d → 7500d |
| 407 | gather, analyze, evaluate data | 2018-04-20 → 2018-05-08 (+18d) | 2018-04-20 → 2018-05-08 (+18d) |  | 8500d → 7500d |
| 408 | prepare for presentation (feedback sessions) | 2018-04-20 → 2018-05-08 (+18d) | 2018-04-20 → 2018-05-08 (+18d) |  | 8500d → 7500d |

| ID | Task | Start | Finish | Duration | Total float |
| --- | --- | --- | --- | --- | --- |
| 409 | **annual** | 2018-04-20 → 2018-05-08 (+18d) | 2018-04-20 → 2018-05-08 (+18d) |  | 8500d → 7500d |
| 410 | gather, analyze, evaluate data | 2018-04-20 → 2018-05-08 (+18d) | 2018-04-20 → 2018-05-08 (+18d) |  | 8500d → 7500d |
| 411 | prepare for presentation (feedback sessions) | 2018-04-20 → 2018-05-08 (+18d) | 2018-04-20 → 2018-05-08 (+18d) |  | 8500d → 7500d |
| 412 | **PLAA** | 2018-04-20 → 2018-05-08 (+18d) | 2018-09-05 → 2018-09-10 (+5d) | 86d? → 76d? |  |
| 413 | **site 1** | 2018-04-20 → 2018-05-08 (+18d) | 2018-05-14 → 2018-05-24 (+10d) | 14d → 13d |  |
| 414 | conduct sensor fieldwork - write report | 2018-04-20 → 2018-05-08 (+18d) | 2018-04-30 → 2018-05-15 (+15d) | 7d → 6d | 500d → 400d |
| 415 | conduct landslide fieldwork - write report | 2018-04-20 → 2018-05-08 (+18d) | 2018-05-09 → 2018-05-21 (+12d) | 13d → 10d |  |
| 416 | conduct community fieldwork - write report | 2018-04-20 → 2018-05-08 (+18d) | 2018-05-09 → 2018-05-21 (+12d) | 13d → 10d |  |
| 417 | review | 2018-05-10 → 2018-05-22 (+12d) | 2018-05-14 → 2018-05-24 (+10d) |  |  |
| 418 | **site 2** | 2018-05-15 → 2018-05-25 (+10d) | 2018-06-04 → 2018-06-14 (+10d) | 15d → 12d |  |
| 419 | conduct sensor fieldwork - write report | 2018-05-15 → 2018-05-25 (+10d) | 2018-05-21 → 2018-05-31 (+10d) |  | 700d → 500d |
| 420 | conduct landslide fieldwork - write report | 2018-05-15 → 2018-05-25 (+10d) | 2018-05-30 → 2018-06-11 (+12d) | 12d → 9d |  |
| 421 | conduct community fieldwork - write report | 2018-05-15 → 2018-05-25 (+10d) | 2018-05-30 → 2018-06-11 (+12d) | 12d → 9d |  |
| 422 | review | 2018-05-31 → 2018-06-12 (+12d) | 2018-06-04 → 2018-06-14 (+10d) |  |  |
| 423 | **site 3** | 2018-06-05 → 2018-06-15 (+10d) | 2018-06-26 → 2018-07-05 (+9d) | 16d → 13d |  |
| 424 | conduct sensor fieldwork - write report | 2018-06-05 → 2018-06-15 (+10d) | 2018-06-13 → 2018-06-22 (+9d) | 7d → 6d | 600d → 400d |
| 425 | conduct landslide fieldwork - write report | 2018-06-05 → 2018-06-15 (+10d) | 2018-06-21 → 2018-07-02 (+11d) | 13d → 10d |  |
| 426 | conduct community fieldwork - write report | 2018-06-05 → 2018-06-15 (+10d) | 2018-06-21 → 2018-07-02 (+11d) | 13d → 10d |  |
| 427 | review | 2018-06-22 → 2018-07-03 (+11d) | 2018-06-26 → 2018-07-05 (+9d) |  |  |
| 428 | **site 4** | 2018-06-27 → 2018-07-06 (+9d) | 2018-07-17 → 2018-07-23 (+6d) |  |  |
| 429 | conduct sensor fieldwork - write report | 2018-06-27 → 2018-07-06 (+9d) | 2018-07-06 → 2018-07-12 (+6d) |  |  |
| 430 | conduct landslide fieldwork - write report | 2018-06-27 → 2018-07-06 (+9d) | 2018-07-12 → 2018-07-18 (+6d) |  |  |
| 431 | conduct community fieldwork - write report | 2018-06-27 → 2018-07-06 (+9d) | 2018-07-12 → 2018-07-18 (+6d) |  |  |
| 432 | review | 2018-07-13 → 2018-07-19 (+6d) | 2018-07-17 → 2018-07-23 (+6d) |  |  |
| 433 | **site 5** | 2018-07-18 → 2018-07-24 (+6d) | 2018-08-10 → 2018-08-16 (+6d) |  |  |
| 434 | conduct sensor fieldwork - write report | 2018-07-18 → 2018-07-24 (+6d) | 2018-07-27 → 2018-08-02 (+6d) |  | 600d → 400d |
| 435 | conduct landslide fieldwork - write report | 2018-07-18 → 2018-07-24 (+6d) | 2018-08-07 → 2018-08-13 (+6d) | 15d → 12d |  |
| 436 | conduct community fieldwork - write report | 2018-07-18 → 2018-07-24 (+6d) | 2018-08-07 → 2018-08-13 (+6d) | 15d → 12d |  |
| 437 | review | 2018-08-08 → 2018-08-14 (+6d) | 2018-08-10 → 2018-08-16 (+6d) |  |  |
| 438 | **site 6** | 2018-08-13 → 2018-08-17 (+4d) | 2018-09-05 → 2018-09-10 (+5d) | 15d → 12d |  |
| 439 | conduct sensor fieldwork - write report | 2018-08-13 → 2018-08-17 (+4d) | 2018-08-22 → 2018-08-27 (+5d) | 8d → 5d | 600d → 400d |
| 440 | conduct landslide fieldwork - write report | 2018-08-13 → 2018-08-17 (+4d) | 2018-08-31 → 2018-09-05 (+5d) | 14d → 10d |  |
| 441 | conduct community fieldwork - write report | 2018-08-13 → 2018-08-17 (+4d) | 2018-08-31 → 2018-09-05 (+5d) | 14d → 10d |  |
| 442 | review | 2018-09-03 → 2018-09-06 (+3d) | 2018-09-05 → 2018-09-10 (+5d) |  |  |
| 443 | synthesis (across sites) | 2018-04-20 → 2018-05-08 (+18d) | 2018-04-20 → 2018-05-08 (+18d) |  | 8500d → 7500d |
| 444 | **outcome-impact** | 2018-04-20 → 2018-05-08 (+18d) | 2018-04-20 → 2018-05-08 (+18d) |  | 8500d → 7500d |
| 445 | **activity series 1** | 2018-04-20 → 2018-05-08 (+18d) | 2018-04-20 → 2018-05-08 (+18d) |  | 8500d → 7500d |
| 446 | gather data | 2018-04-20 → 2018-05-08 (+18d) | 2018-04-20 → 2018-05-08 (+18d) |  | 8500d → 7500d |
| 447 | analyze, evaluate data | 2018-04-20 → 2018-05-08 (+18d) | 2018-04-20 → 2018-05-08 (+18d) |  | 8500d → 7500d |
| 448 | provide recommendations | 2018-04-20 → 2018-05-08 (+18d) | 2018-04-20 → 2018-05-08 (+18d) |  | 8500d → 7500d |
| 449 | **project output** | 2018-04-20 → 2018-05-08 (+18d) | 2018-04-20 → 2018-05-08 (+18d) |  | 8500d → 7500d |
| 450 | **activity series 1** | 2018-04-20 → 2018-05-08 (+18d) | 2018-04-20 → 2018-05-08 (+18d) |  | 8500d → 7500d |
| 451 | gather data | 2018-04-20 → 2018-05-08 (+18d) | 2018-04-20 → 2018-05-08 (+18d) |  | 8500d → 7500d |
| 452 | analyze, evaluate data | 2018-04-20 → 2018-05-08 (+18d) | 2018-04-20 → 2018-05-08 (+18d) |  | 8500d → 7500d |
| 453 | provide recommendations | 2018-04-20 → 2018-05-08 (+18d) | 2018-04-20 → 2018-05-08 (+18d) |  | 8500d → 7500d |
| 454 | **stakeholder concerns** | 2018-04-20 → 2018-05-08 (+18d) | 2018-04-20 → 2018-05-08 (+18d) |  | 8500d → 7500d |
| 455 | **activity series 1** | 2018-04-20 → 2018-05-08 (+18d) | 2018-04-20 → 2018-05-08 (+18d) |  | 8500d → 7500d |
| 456 | gather data | 2018-04-20 → 2018-05-08 (+18d) | 2018-04-20 → 2018-05-08 (+18d) |  | 8500d → 7500d |
| 457 | analyze, evaluate data | 2018-04-20 → 2018-05-08 (+18d) | 2018-04-20 → 2018-05-08 (+18d) |  | 8500d → 7500d |
| 458 | provide recommendations | 2018-04-20 → 2018-05-08 (+18d) | 2018-04-20 → 2018-05-08 (+18d) |  | 8500d → 7500d |
| 459 | **admin process** | 2018-04-20 → 2018-05-08 (+18d) | 2018-04-20 → 2018-05-08 (+18d) |  | 8500d → 7500d |
| 460 | **activity series 1** | 2018-04-20 → 2018-05-08 (+18d) | 2018-04-20 → 2018-05-08 (+18d) |  | 8500d → 7500d |
| 461 | gather data | 2018-04-20 → 2018-05-08 (+18d) | 2018-04-20 → 2018-05-08 (+18d) |  | 8500d → 7500d |
| 462 | analyze, evaluate data | 2018-04-20 → 2018-05-08 (+18d) | 2018-04-20 → 2018-05-08 (+18d) |  | 8500d → 7500d |
| 463 | provide recommendations | 2018-04-20 → 2018-05-08 (+18d) | 2018-04-20 → 2018-05-08 (+18d) |  | 8500d → 7500d |
